# SAR Passengers Security Checking - HHR, EWR, NSR (14 stations)

How a schedule from Primavera P6 changed from version to version. A marks actual dates.

## Version 1 (data date 2026-10-06, saved 2026-10-06, file SAR_Security_Program_Baseline.xer)

Note of the change: Add P6 XER baseline, BOQ cost mapping workbook, schedule narrative and import read-me

| ID | WBS | Task | Duration | Start | Finish | Predecessors | Total float |
| --- | --- | --- | --- | --- | --- | --- | --- |
|  | PM | **Project Management and Mobilization** |  | 2026-11-01 | 2029-10-31 |  |  |
|  | MOB | **Mobilization and baseline programme** |  | 2026-11-01 | 2027-02-18 |  |  |
| PRJ-A1010 |  | Performance security, insurance and key personnel approval | 10d | 2026-11-01 | 2026-11-12 | PRJ-M0000 | 42d |
| PRJ-A1020 |  | Initial baseline programme (Primavera) covering mobilization and survey | 7d | 2026-11-01 | 2026-11-09 | PRJ-M0000 | 30d |
| PRJ-A1040 |  | Mobilization: site establishment, offices, personnel and tools | 25d | 2026-11-08 | 2026-12-10 | PRJ-M0000 FS+5d | 22d |
| PRJ-A1050 |  | Mobilization submittals: QC programme and ITP, HSE, security, procurement and shipping plan | 20d | 2026-11-08 | 2026-12-03 | PRJ-M0000 FS+5d | 27d |
| PRJ-A1030 |  | SAR review and approval of initial baseline | 15d | 2026-11-10 | 2026-11-30 | PRJ-A1020 | 30d |
| PRJ-A2010 |  | Detailed baseline programme (within 21 days after survey) | 15d | 2027-01-10 | 2027-01-28 | NRY-E1010, ERY-E1010 | 22d |
| PRJ-A2020 |  | SAR review and approval of detailed baseline | 15d | 2027-01-31 | 2027-02-18 | PRJ-A2010 | 22d |
|  | MST | **Contract milestones** |  | 2026-11-01 | 2029-10-31 |  |  |
| PRJ-M0000 |  | Notice to Proceed - project start (1 Nov 2026, editable) | 0d | 2026-11-01 | 2026-11-01 |  | 0d |
| PRJ-M1100 |  | MS1 Mobilization complete (payment milestone 20%) | 0d | 2026-12-10 | 2026-12-10 | PRJ-A1010, PRJ-A1030, PRJ-A1040, PRJ-A1050 | 22d |
| PRJ-M2100 |  | Detailed baseline programme approved | 0d | 2027-02-18 | 2027-02-18 | PRJ-A2020 | 22d |
| PRJ-MX99 |  | Contract completion - end of 36-month term | 0d | 2029-10-31 | 2029-10-31 | PRJ-C1010, PRJ-M0000 FS+750d | 0d |
|  | CLO | **Closeout** |  | 2029-09-17 | 2029-10-01 |  |  |
| PRJ-C1010 |  | Contract closeout pack and handover documentation | 10d | 2029-09-17 | 2029-10-01 | NRY-T3100, ERY-T3100, HJD-T3100, EDM-T3100, NQS-T3100, EHF-T3100, NMJ-T3100, HMK-T3100, HKA-T3100, HMD-T3100, EAB-T3100, NHL-T3100, NJF-T3100, NQR-T3100 | 22d |
|  | ENG | **Engineering** |  | 2026-12-13 | 2029-09-02 |  |  |
|  | RYD | **Riyadh priority stations (NSR + EWR)** |  | 2026-12-13 | 2027-11-29 |  |  |
|  | NRY | **Riyadh (Thumamah) (NSR)** |  | 2026-12-13 | 2027-11-23 |  |  |
| NRY-E1200 |  | MS2 Engineering submittal complete (10%) - Riyadh (Thumamah) | 0d | 2027-02-04 | 2027-02-04 | NRY-E1090, NRY-E1110 | 479d |
| NRY-E1210 |  | MS3 Engineering approved by SAR (10%) - Riyadh (Thumamah) | 0d | 2027-02-28 | 2027-02-28 | NRY-E1020, NRY-E1040, NRY-E1060, NRY-E1080, NRY-E1100, NRY-E1120, NRY-E1200 | 464d |
|  | SRV | **Site survey and as-found verification** |  | 2026-12-13 | 2026-12-31 |  |  |
|  | SUB | **Submittal** |  | 2026-12-13 | 2026-12-24 |  |  |
| NRY-E1010 |  | Survey: submittal of site survey and as-found report - Riyadh (Thumamah) | 10d | 2026-12-13 | 2026-12-24 | PRJ-M1100 | 32d |
|  | APR | **Approval** |  | 2026-12-27 | 2026-12-31 |  |  |
| NRY-E1020 |  | Survey: SAR approval of survey report - Riyadh (Thumamah) | 5d | 2026-12-27 | 2026-12-31 | NRY-E1010 | 504d |
|  | CNC | **Concept design** |  | 2026-12-27 | 2027-01-21 |  |  |
|  | SUB | **Submittal** |  | 2026-12-27 | 2026-12-31 |  |  |
| NRY-E1030 |  | Concept design: submittal - Riyadh (Thumamah) | 5d | 2026-12-27 | 2026-12-31 | NRY-E1010 | 464d |
|  | APR | **Approval** |  | 2027-01-03 | 2027-01-21 |  |  |
| NRY-E1040 |  | Concept design: SAR review and approval - Riyadh (Thumamah) | 15d | 2027-01-03 | 2027-01-21 | NRY-E1030 | 489d |
|  | PRE | **Preliminary (schematic) design** |  | 2027-01-03 | 2027-02-02 |  |  |
|  | SUB | **Submittal** |  | 2027-01-03 | 2027-01-12 |  |  |
| NRY-E1050 |  | Preliminary design: submittal - Riyadh (Thumamah) | 8d | 2027-01-03 | 2027-01-12 | NRY-E1030 | 464d |
|  | APR | **Approval** |  | 2027-01-13 | 2027-02-02 |  |  |
| NRY-E1060 |  | Preliminary design: SAR review and approval - Riyadh (Thumamah) | 15d | 2027-01-13 | 2027-02-02 | NRY-E1050 | 481d |
|  | DET | **Detailed design** |  | 2027-01-13 | 2027-02-18 |  |  |
|  | SUB | **Submittal** |  | 2027-01-13 | 2027-01-28 |  |  |
| NRY-E1070 |  | Detailed design: submittal (drawings, BOQ, data sheets) - Riyadh (Thumamah) | 12d | 2027-01-13 | 2027-01-28 | NRY-E1050 | 464d |
|  | APR | **Approval** |  | 2027-01-31 | 2027-02-18 |  |  |
| NRY-E1080 |  | Detailed design: SAR review and approval - Riyadh (Thumamah) | 15d | 2027-01-31 | 2027-02-18 | NRY-E1070 | 469d |
|  | IFC | **IFC and shop drawings** |  | 2027-01-31 | 2027-02-28 |  |  |
|  | SUB | **Submittal** |  | 2027-01-31 | 2027-02-04 |  |  |
| NRY-E1090 |  | IFC and shop drawings: submittal - Riyadh (Thumamah) | 5d | 2027-01-31 | 2027-02-04 | NRY-E1070 | 464d |
|  | APR | **Approval** |  | 2027-02-07 | 2027-02-28 |  |  |
| NRY-E1100 |  | IFC and shop drawings: SAR approval and release - Riyadh (Thumamah) | 15d | 2027-02-07 | 2027-02-28 | NRY-E1090 | 464d |
|  | HCS | **HCIS documentation (Stage 3 and 4)** |  | 2027-01-20 | 2027-02-28 |  |  |
|  | SUB | **Submittal** |  | 2027-01-20 | 2027-02-04 |  |  |
| NRY-E1110 |  | HCIS Stage 3 and 4 documents: preparation - Riyadh (Thumamah) | 12d | 2027-01-20 | 2027-02-04 | NRY-E1050 FS+5d, NRY-E1090 FF | 464d |
|  | APR | **Approval** |  | 2027-02-07 | 2027-02-28 |  |  |
| NRY-E1120 |  | HCIS Stage 3 and 4 documents: SAR final review and HCIS submission - Riyadh (Thumamah) | 15d | 2027-02-07 | 2027-02-28 | NRY-E1110 | 464d |
|  | ASB | **As-built and O&M documentation** |  | 2027-09-21 | 2027-11-23 |  |  |
|  | SUB | **Submittal** |  | 2027-09-21 | 2027-11-02 |  |  |
| NRY-E1130 |  | As-built and O&M documentation: submittal - Riyadh (Thumamah) | 30d | 2027-09-21 | 2027-11-02 | NRY-C2100 | 464d |
|  | APR | **Approval** |  | 2027-11-03 | 2027-11-23 |  |  |
| NRY-E1140 |  | As-built and O&M documentation: SAR review and approval - Riyadh (Thumamah) | 15d | 2027-11-03 | 2027-11-23 | NRY-E1130 | 464d |
|  | ERY | **Riyadh (Malaz) (EWR)** |  | 2026-12-27 | 2027-11-29 |  |  |
| ERY-E1200 |  | MS2 Engineering submittal complete (10%) - Riyadh (Malaz) | 0d | 2027-02-18 | 2027-02-18 | ERY-E1090, ERY-E1110 | 475d |
| ERY-E1210 |  | MS3 Engineering approved by SAR (10%) - Riyadh (Malaz) | 0d | 2027-03-21 | 2027-03-21 | ERY-E1020, ERY-E1040, ERY-E1060, ERY-E1080, ERY-E1100, ERY-E1120, ERY-E1200 | 460d |
|  | SRV | **Site survey and as-found verification** |  | 2026-12-27 | 2027-01-14 |  |  |
|  | SUB | **Submittal** |  | 2026-12-27 | 2027-01-07 |  |  |
| ERY-E1010 |  | Survey: submittal of site survey and as-found report - Riyadh (Malaz) | 10d | 2026-12-27 | 2027-01-07 | PRJ-M1100 FS+10d | 22d |
|  | APR | **Approval** |  | 2027-01-10 | 2027-01-14 |  |  |
| ERY-E1020 |  | Survey: SAR approval of survey report - Riyadh (Malaz) | 5d | 2027-01-10 | 2027-01-14 | ERY-E1010 | 500d |
|  | CNC | **Concept design** |  | 2027-01-10 | 2027-02-04 |  |  |
|  | SUB | **Submittal** |  | 2027-01-10 | 2027-01-14 |  |  |
| ERY-E1030 |  | Concept design: submittal - Riyadh (Malaz) | 5d | 2027-01-10 | 2027-01-14 | ERY-E1010 | 460d |
|  | APR | **Approval** |  | 2027-01-17 | 2027-02-04 |  |  |
| ERY-E1040 |  | Concept design: SAR review and approval - Riyadh (Malaz) | 15d | 2027-01-17 | 2027-02-04 | ERY-E1030 | 485d |
|  | PRE | **Preliminary (schematic) design** |  | 2027-01-17 | 2027-02-16 |  |  |

| ID | WBS | Task | Duration | Start | Finish | Predecessors | Total float |
| --- | --- | --- | --- | --- | --- | --- | --- |
|  | SUB | **Submittal** |  | 2027-01-17 | 2027-01-26 |  |  |
| ERY-E1050 |  | Preliminary design: submittal - Riyadh (Malaz) | 8d | 2027-01-17 | 2027-01-26 | ERY-E1030 | 460d |
|  | APR | **Approval** |  | 2027-01-27 | 2027-02-16 |  |  |
| ERY-E1060 |  | Preliminary design: SAR review and approval - Riyadh (Malaz) | 15d | 2027-01-27 | 2027-02-16 | ERY-E1050 | 477d |
|  | DET | **Detailed design** |  | 2027-01-27 | 2027-03-14 |  |  |
|  | SUB | **Submittal** |  | 2027-01-27 | 2027-02-11 |  |  |
| ERY-E1070 |  | Detailed design: submittal (drawings, BOQ, data sheets) - Riyadh (Malaz) | 12d | 2027-01-27 | 2027-02-11 | ERY-E1050 | 460d |
|  | APR | **Approval** |  | 2027-02-14 | 2027-03-14 |  |  |
| ERY-E1080 |  | Detailed design: SAR review and approval - Riyadh (Malaz) | 15d | 2027-02-14 | 2027-03-14 | ERY-E1070 | 465d |
|  | IFC | **IFC and shop drawings** |  | 2027-02-14 | 2027-03-21 |  |  |
|  | SUB | **Submittal** |  | 2027-02-14 | 2027-02-18 |  |  |
| ERY-E1090 |  | IFC and shop drawings: submittal - Riyadh (Malaz) | 5d | 2027-02-14 | 2027-02-18 | ERY-E1070 | 460d |
|  | APR | **Approval** |  | 2027-02-21 | 2027-03-21 |  |  |
| ERY-E1100 |  | IFC and shop drawings: SAR approval and release - Riyadh (Malaz) | 15d | 2027-02-21 | 2027-03-21 | ERY-E1090 | 460d |
|  | HCS | **HCIS documentation (Stage 3 and 4)** |  | 2027-02-03 | 2027-03-21 |  |  |
|  | SUB | **Submittal** |  | 2027-02-03 | 2027-02-18 |  |  |
| ERY-E1110 |  | HCIS Stage 3 and 4 documents: preparation - Riyadh (Malaz) | 12d | 2027-02-03 | 2027-02-18 | ERY-E1050 FS+5d, ERY-E1090 FF | 460d |
|  | APR | **Approval** |  | 2027-02-21 | 2027-03-21 |  |  |
| ERY-E1120 |  | HCIS Stage 3 and 4 documents: SAR final review and HCIS submission - Riyadh (Malaz) | 15d | 2027-02-21 | 2027-03-21 | ERY-E1110 | 460d |
|  | ASB | **As-built and O&M documentation** |  | 2027-09-28 | 2027-11-29 |  |  |
|  | SUB | **Submittal** |  | 2027-09-28 | 2027-11-08 |  |  |
| ERY-E1130 |  | As-built and O&M documentation: submittal - Riyadh (Malaz) | 30d | 2027-09-28 | 2027-11-08 | ERY-C2100 | 460d |
|  | APR | **Approval** |  | 2027-11-09 | 2027-11-29 |  |  |
| ERY-E1140 |  | As-built and O&M documentation: SAR review and approval - Riyadh (Malaz) | 15d | 2027-11-09 | 2027-11-29 | ERY-E1130 | 460d |
|  | NSR | **NSR - North South Railway** |  | 2027-08-19 | 2029-09-02 |  |  |
|  | NQS | **Al Qassim (NSR)** |  | 2027-08-19 | 2028-08-13 |  |  |
| NQS-E1200 |  | MS2 Engineering submittal complete (10%) - Al Qassim | 0d | 2027-10-14 | 2027-10-14 | NQS-E1090, NQS-E1110 | 301d |
| NQS-E1210 |  | MS3 Engineering approved by SAR (10%) - Al Qassim | 0d | 2027-11-04 | 2027-11-04 | NQS-E1020, NQS-E1040, NQS-E1060, NQS-E1080, NQS-E1100, NQS-E1120, NQS-E1200 | 286d |
|  | SRV | **Site survey and as-found verification** |  | 2027-08-19 | 2027-09-08 |  |  |
|  | SUB | **Submittal** |  | 2027-08-19 | 2027-09-01 |  |  |
| NQS-E1010 |  | Survey: submittal of site survey and as-found report - Al Qassim | 10d | 2027-08-19 | 2027-09-01 | PRJ-M2100 FS+118d | 286d |
|  | APR | **Approval** |  | 2027-09-02 | 2027-09-08 |  |  |
| NQS-E1020 |  | Survey: SAR approval of survey report - Al Qassim | 5d | 2027-09-02 | 2027-09-08 | NQS-E1010 | 326d |
|  | CNC | **Concept design** |  | 2027-09-02 | 2027-09-30 |  |  |
|  | SUB | **Submittal** |  | 2027-09-02 | 2027-09-08 |  |  |
| NQS-E1030 |  | Concept design: submittal - Al Qassim | 5d | 2027-09-02 | 2027-09-08 | NQS-E1010 | 286d |
|  | APR | **Approval** |  | 2027-09-09 | 2027-09-30 |  |  |
| NQS-E1040 |  | Concept design: SAR review and approval - Al Qassim | 15d | 2027-09-09 | 2027-09-30 | NQS-E1030 | 311d |
|  | PRE | **Preliminary (schematic) design** |  | 2027-09-09 | 2027-10-12 |  |  |
|  | SUB | **Submittal** |  | 2027-09-09 | 2027-09-20 |  |  |
| NQS-E1050 |  | Preliminary design: submittal - Al Qassim | 8d | 2027-09-09 | 2027-09-20 | NQS-E1030 | 286d |
|  | APR | **Approval** |  | 2027-09-21 | 2027-10-12 |  |  |
| NQS-E1060 |  | Preliminary design: SAR review and approval - Al Qassim | 15d | 2027-09-21 | 2027-10-12 | NQS-E1050 | 303d |
|  | DET | **Detailed design** |  | 2027-09-21 | 2027-10-28 |  |  |
|  | SUB | **Submittal** |  | 2027-09-21 | 2027-10-07 |  |  |
| NQS-E1070 |  | Detailed design: submittal (drawings, BOQ, data sheets) - Al Qassim | 12d | 2027-09-21 | 2027-10-07 | NQS-E1050 | 286d |
|  | APR | **Approval** |  | 2027-10-10 | 2027-10-28 |  |  |
| NQS-E1080 |  | Detailed design: SAR review and approval - Al Qassim | 15d | 2027-10-10 | 2027-10-28 | NQS-E1070 | 291d |
|  | IFC | **IFC and shop drawings** |  | 2027-10-10 | 2027-11-04 |  |  |
|  | SUB | **Submittal** |  | 2027-10-10 | 2027-10-14 |  |  |
| NQS-E1090 |  | IFC and shop drawings: submittal - Al Qassim | 5d | 2027-10-10 | 2027-10-14 | NQS-E1070 | 286d |
|  | APR | **Approval** |  | 2027-10-17 | 2027-11-04 |  |  |
| NQS-E1100 |  | IFC and shop drawings: SAR approval and release - Al Qassim | 15d | 2027-10-17 | 2027-11-04 | NQS-E1090 | 286d |
|  | HCS | **HCIS documentation (Stage 3 and 4)** |  | 2027-09-29 | 2027-11-04 |  |  |
|  | SUB | **Submittal** |  | 2027-09-29 | 2027-10-14 |  |  |
| NQS-E1110 |  | HCIS Stage 3 and 4 documents: preparation - Al Qassim | 12d | 2027-09-29 | 2027-10-14 | NQS-E1050 FS+5d, NQS-E1090 FF | 286d |
|  | APR | **Approval** |  | 2027-10-17 | 2027-11-04 |  |  |
| NQS-E1120 |  | HCIS Stage 3 and 4 documents: SAR final review and HCIS submission - Al Qassim | 15d | 2027-10-17 | 2027-11-04 | NQS-E1110 | 286d |
|  | ASB | **As-built and O&M documentation** |  | 2028-06-12 | 2028-08-13 |  |  |
|  | SUB | **Submittal** |  | 2028-06-12 | 2028-07-23 |  |  |
| NQS-E1130 |  | As-built and O&M documentation: submittal - Al Qassim | 30d | 2028-06-12 | 2028-07-23 | NQS-C2100 | 286d |
|  | APR | **Approval** |  | 2028-07-24 | 2028-08-13 |  |  |
| NQS-E1140 |  | As-built and O&M documentation: SAR review and approval - Al Qassim | 15d | 2028-07-24 | 2028-08-13 | NQS-E1130 | 286d |
|  | NMJ | **Al Majma'ah (NSR)** |  | 2027-10-10 | 2028-10-01 |  |  |
| NMJ-E1200 |  | MS2 Engineering submittal complete (10%) - Al Majma'ah | 0d | 2027-12-02 | 2027-12-02 | NMJ-E1090, NMJ-E1110 | 266d |
| NMJ-E1210 |  | MS3 Engineering approved by SAR (10%) - Al Majma'ah | 0d | 2027-12-23 | 2027-12-23 | NMJ-E1020, NMJ-E1040, NMJ-E1060, NMJ-E1080, NMJ-E1100, NMJ-E1120, NMJ-E1200 | 251d |
|  | SRV | **Site survey and as-found verification** |  | 2027-10-10 | 2027-10-28 |  |  |
|  | SUB | **Submittal** |  | 2027-10-10 | 2027-10-21 |  |  |
| NMJ-E1010 |  | Survey: submittal of site survey and as-found report - Al Majma'ah | 10d | 2027-10-10 | 2027-10-21 | PRJ-M2100 FS+153d | 251d |
|  | APR | **Approval** |  | 2027-10-24 | 2027-10-28 |  |  |

| ID | WBS | Task | Duration | Start | Finish | Predecessors | Total float |
| --- | --- | --- | --- | --- | --- | --- | --- |
| NMJ-E1020 |  | Survey: SAR approval of survey report - Al Majma'ah | 5d | 2027-10-24 | 2027-10-28 | NMJ-E1010 | 291d |
|  | CNC | **Concept design** |  | 2027-10-24 | 2027-11-18 |  |  |
|  | SUB | **Submittal** |  | 2027-10-24 | 2027-10-28 |  |  |
| NMJ-E1030 |  | Concept design: submittal - Al Majma'ah | 5d | 2027-10-24 | 2027-10-28 | NMJ-E1010 | 251d |
|  | APR | **Approval** |  | 2027-10-31 | 2027-11-18 |  |  |
| NMJ-E1040 |  | Concept design: SAR review and approval - Al Majma'ah | 15d | 2027-10-31 | 2027-11-18 | NMJ-E1030 | 276d |
|  | PRE | **Preliminary (schematic) design** |  | 2027-10-31 | 2027-11-30 |  |  |
|  | SUB | **Submittal** |  | 2027-10-31 | 2027-11-09 |  |  |
| NMJ-E1050 |  | Preliminary design: submittal - Al Majma'ah | 8d | 2027-10-31 | 2027-11-09 | NMJ-E1030 | 251d |
|  | APR | **Approval** |  | 2027-11-10 | 2027-11-30 |  |  |
| NMJ-E1060 |  | Preliminary design: SAR review and approval - Al Majma'ah | 15d | 2027-11-10 | 2027-11-30 | NMJ-E1050 | 268d |
|  | DET | **Detailed design** |  | 2027-11-10 | 2027-12-16 |  |  |
|  | SUB | **Submittal** |  | 2027-11-10 | 2027-11-25 |  |  |
| NMJ-E1070 |  | Detailed design: submittal (drawings, BOQ, data sheets) - Al Majma'ah | 12d | 2027-11-10 | 2027-11-25 | NMJ-E1050 | 251d |
|  | APR | **Approval** |  | 2027-11-28 | 2027-12-16 |  |  |
| NMJ-E1080 |  | Detailed design: SAR review and approval - Al Majma'ah | 15d | 2027-11-28 | 2027-12-16 | NMJ-E1070 | 256d |
|  | IFC | **IFC and shop drawings** |  | 2027-11-28 | 2027-12-23 |  |  |
|  | SUB | **Submittal** |  | 2027-11-28 | 2027-12-02 |  |  |
| NMJ-E1090 |  | IFC and shop drawings: submittal - Al Majma'ah | 5d | 2027-11-28 | 2027-12-02 | NMJ-E1070 | 251d |
|  | APR | **Approval** |  | 2027-12-05 | 2027-12-23 |  |  |
| NMJ-E1100 |  | IFC and shop drawings: SAR approval and release - Al Majma'ah | 15d | 2027-12-05 | 2027-12-23 | NMJ-E1090 | 251d |
|  | HCS | **HCIS documentation (Stage 3 and 4)** |  | 2027-11-17 | 2027-12-23 |  |  |
|  | SUB | **Submittal** |  | 2027-11-17 | 2027-12-02 |  |  |
| NMJ-E1110 |  | HCIS Stage 3 and 4 documents: preparation - Al Majma'ah | 12d | 2027-11-17 | 2027-12-02 | NMJ-E1050 FS+5d, NMJ-E1090 FF | 251d |
|  | APR | **Approval** |  | 2027-12-05 | 2027-12-23 |  |  |
| NMJ-E1120 |  | HCIS Stage 3 and 4 documents: SAR final review and HCIS submission - Al Majma'ah | 15d | 2027-12-05 | 2027-12-23 | NMJ-E1110 | 251d |
|  | ASB | **As-built and O&M documentation** |  | 2028-07-31 | 2028-10-01 |  |  |
|  | SUB | **Submittal** |  | 2028-07-31 | 2028-09-10 |  |  |
| NMJ-E1130 |  | As-built and O&M documentation: submittal - Al Majma'ah | 30d | 2028-07-31 | 2028-09-10 | NMJ-C2100 | 251d |
|  | APR | **Approval** |  | 2028-09-11 | 2028-10-01 |  |  |
| NMJ-E1140 |  | As-built and O&M documentation: SAR review and approval - Al Majma'ah | 15d | 2028-09-11 | 2028-10-01 | NMJ-E1130 | 251d |
|  | NHL | **Hail (NSR)** |  | 2028-05-08 | 2029-05-01 |  |  |
| NHL-E1200 |  | MS2 Engineering submittal complete (10%) - Hail | 0d | 2028-07-02 | 2028-07-02 | NHL-E1090, NHL-E1110 | 125d |
| NHL-E1210 |  | MS3 Engineering approved by SAR (10%) - Hail | 0d | 2028-07-23 | 2028-07-23 | NHL-E1020, NHL-E1040, NHL-E1060, NHL-E1080, NHL-E1100, NHL-E1120, NHL-E1200 | 110d |
|  | SRV | **Site survey and as-found verification** |  | 2028-05-08 | 2028-05-28 |  |  |
|  | SUB | **Submittal** |  | 2028-05-08 | 2028-05-21 |  |  |
| NHL-E1010 |  | Survey: submittal of site survey and as-found report - Hail | 10d | 2028-05-08 | 2028-05-21 | PRJ-M2100 FS+294d | 110d |
|  | APR | **Approval** |  | 2028-05-22 | 2028-05-28 |  |  |
| NHL-E1020 |  | Survey: SAR approval of survey report - Hail | 5d | 2028-05-22 | 2028-05-28 | NHL-E1010 | 150d |
|  | CNC | **Concept design** |  | 2028-05-22 | 2028-06-18 |  |  |
|  | SUB | **Submittal** |  | 2028-05-22 | 2028-05-28 |  |  |
| NHL-E1030 |  | Concept design: submittal - Hail | 5d | 2028-05-22 | 2028-05-28 | NHL-E1010 | 110d |
|  | APR | **Approval** |  | 2028-05-29 | 2028-06-18 |  |  |
| NHL-E1040 |  | Concept design: SAR review and approval - Hail | 15d | 2028-05-29 | 2028-06-18 | NHL-E1030 | 135d |
|  | PRE | **Preliminary (schematic) design** |  | 2028-05-29 | 2028-06-28 |  |  |
|  | SUB | **Submittal** |  | 2028-05-29 | 2028-06-07 |  |  |
| NHL-E1050 |  | Preliminary design: submittal - Hail | 8d | 2028-05-29 | 2028-06-07 | NHL-E1030 | 110d |
|  | APR | **Approval** |  | 2028-06-08 | 2028-06-28 |  |  |
| NHL-E1060 |  | Preliminary design: SAR review and approval - Hail | 15d | 2028-06-08 | 2028-06-28 | NHL-E1050 | 127d |
|  | DET | **Detailed design** |  | 2028-06-08 | 2028-07-16 |  |  |
|  | SUB | **Submittal** |  | 2028-06-08 | 2028-06-25 |  |  |
| NHL-E1070 |  | Detailed design: submittal (drawings, BOQ, data sheets) - Hail | 12d | 2028-06-08 | 2028-06-25 | NHL-E1050 | 110d |
|  | APR | **Approval** |  | 2028-06-26 | 2028-07-16 |  |  |
| NHL-E1080 |  | Detailed design: SAR review and approval - Hail | 15d | 2028-06-26 | 2028-07-16 | NHL-E1070 | 115d |
|  | IFC | **IFC and shop drawings** |  | 2028-06-26 | 2028-07-23 |  |  |
|  | SUB | **Submittal** |  | 2028-06-26 | 2028-07-02 |  |  |
| NHL-E1090 |  | IFC and shop drawings: submittal - Hail | 5d | 2028-06-26 | 2028-07-02 | NHL-E1070 | 110d |
|  | APR | **Approval** |  | 2028-07-03 | 2028-07-23 |  |  |
| NHL-E1100 |  | IFC and shop drawings: SAR approval and release - Hail | 15d | 2028-07-03 | 2028-07-23 | NHL-E1090 | 110d |
|  | HCS | **HCIS documentation (Stage 3 and 4)** |  | 2028-06-15 | 2028-07-23 |  |  |
|  | SUB | **Submittal** |  | 2028-06-15 | 2028-07-02 |  |  |
| NHL-E1110 |  | HCIS Stage 3 and 4 documents: preparation - Hail | 12d | 2028-06-15 | 2028-07-02 | NHL-E1050 FS+5d, NHL-E1090 FF | 110d |
|  | APR | **Approval** |  | 2028-07-03 | 2028-07-23 |  |  |
| NHL-E1120 |  | HCIS Stage 3 and 4 documents: SAR final review and HCIS submission - Hail | 15d | 2028-07-03 | 2028-07-23 | NHL-E1110 | 110d |
|  | ASB | **As-built and O&M documentation** |  | 2029-02-20 | 2029-05-01 |  |  |
|  | SUB | **Submittal** |  | 2029-02-20 | 2029-04-03 |  |  |
| NHL-E1130 |  | As-built and O&M documentation: submittal - Hail | 30d | 2029-02-20 | 2029-04-03 | NHL-C2100 | 110d |
|  | APR | **Approval** |  | 2029-04-04 | 2029-05-01 |  |  |
| NHL-E1140 |  | As-built and O&M documentation: SAR review and approval - Hail | 15d | 2029-04-04 | 2029-05-01 | NHL-E1130 | 110d |
|  | NJF | **Al Jouf (NSR)** |  | 2028-07-20 | 2029-07-15 |  |  |

| ID | WBS | Task | Duration | Start | Finish | Predecessors | Total float |
| --- | --- | --- | --- | --- | --- | --- | --- |
| NJF-E1200 |  | MS2 Engineering submittal complete (10%) - Al Jouf | 0d | 2028-09-13 | 2028-09-13 | NJF-E1090, NJF-E1110 | 72d |
| NJF-E1210 |  | MS3 Engineering approved by SAR (10%) - Al Jouf | 0d | 2028-10-04 | 2028-10-04 | NJF-E1020, NJF-E1040, NJF-E1060, NJF-E1080, NJF-E1100, NJF-E1120, NJF-E1200 | 57d |
|  | SRV | **Site survey and as-found verification** |  | 2028-07-20 | 2028-08-09 |  |  |
|  | SUB | **Submittal** |  | 2028-07-20 | 2028-08-02 |  |  |
| NJF-E1010 |  | Survey: submittal of site survey and as-found report - Al Jouf | 10d | 2028-07-20 | 2028-08-02 | PRJ-M2100 FS+347d | 57d |
|  | APR | **Approval** |  | 2028-08-03 | 2028-08-09 |  |  |
| NJF-E1020 |  | Survey: SAR approval of survey report - Al Jouf | 5d | 2028-08-03 | 2028-08-09 | NJF-E1010 | 97d |
|  | CNC | **Concept design** |  | 2028-08-03 | 2028-08-30 |  |  |
|  | SUB | **Submittal** |  | 2028-08-03 | 2028-08-09 |  |  |
| NJF-E1030 |  | Concept design: submittal - Al Jouf | 5d | 2028-08-03 | 2028-08-09 | NJF-E1010 | 57d |
|  | APR | **Approval** |  | 2028-08-10 | 2028-08-30 |  |  |
| NJF-E1040 |  | Concept design: SAR review and approval - Al Jouf | 15d | 2028-08-10 | 2028-08-30 | NJF-E1030 | 82d |
|  | PRE | **Preliminary (schematic) design** |  | 2028-08-10 | 2028-09-11 |  |  |
|  | SUB | **Submittal** |  | 2028-08-10 | 2028-08-21 |  |  |
| NJF-E1050 |  | Preliminary design: submittal - Al Jouf | 8d | 2028-08-10 | 2028-08-21 | NJF-E1030 | 57d |
|  | APR | **Approval** |  | 2028-08-22 | 2028-09-11 |  |  |
| NJF-E1060 |  | Preliminary design: SAR review and approval - Al Jouf | 15d | 2028-08-22 | 2028-09-11 | NJF-E1050 | 74d |
|  | DET | **Detailed design** |  | 2028-08-22 | 2028-09-27 |  |  |
|  | SUB | **Submittal** |  | 2028-08-22 | 2028-09-06 |  |  |
| NJF-E1070 |  | Detailed design: submittal (drawings, BOQ, data sheets) - Al Jouf | 12d | 2028-08-22 | 2028-09-06 | NJF-E1050 | 57d |
|  | APR | **Approval** |  | 2028-09-07 | 2028-09-27 |  |  |
| NJF-E1080 |  | Detailed design: SAR review and approval - Al Jouf | 15d | 2028-09-07 | 2028-09-27 | NJF-E1070 | 62d |
|  | IFC | **IFC and shop drawings** |  | 2028-09-07 | 2028-10-04 |  |  |
|  | SUB | **Submittal** |  | 2028-09-07 | 2028-09-13 |  |  |
| NJF-E1090 |  | IFC and shop drawings: submittal - Al Jouf | 5d | 2028-09-07 | 2028-09-13 | NJF-E1070 | 57d |
|  | APR | **Approval** |  | 2028-09-14 | 2028-10-04 |  |  |
| NJF-E1100 |  | IFC and shop drawings: SAR approval and release - Al Jouf | 15d | 2028-09-14 | 2028-10-04 | NJF-E1090 | 57d |
|  | HCS | **HCIS documentation (Stage 3 and 4)** |  | 2028-08-29 | 2028-10-04 |  |  |
|  | SUB | **Submittal** |  | 2028-08-29 | 2028-09-13 |  |  |
| NJF-E1110 |  | HCIS Stage 3 and 4 documents: preparation - Al Jouf | 12d | 2028-08-29 | 2028-09-13 | NJF-E1050 FS+5d, NJF-E1090 FF | 57d |
|  | APR | **Approval** |  | 2028-09-14 | 2028-10-04 |  |  |
| NJF-E1120 |  | HCIS Stage 3 and 4 documents: SAR final review and HCIS submission - Al Jouf | 15d | 2028-09-14 | 2028-10-04 | NJF-E1110 | 57d |
|  | ASB | **As-built and O&M documentation** |  | 2029-05-14 | 2029-07-15 |  |  |
|  | SUB | **Submittal** |  | 2029-05-14 | 2029-06-24 |  |  |
| NJF-E1130 |  | As-built and O&M documentation: submittal - Al Jouf | 30d | 2029-05-14 | 2029-06-24 | NJF-C2100 | 57d |
|  | APR | **Approval** |  | 2029-06-25 | 2029-07-15 |  |  |
| NJF-E1140 |  | As-built and O&M documentation: SAR review and approval - Al Jouf | 15d | 2029-06-25 | 2029-07-15 | NJF-E1130 | 57d |
|  | NQR | **Al Qurayyat (NSR)** |  | 2028-09-07 | 2029-09-02 |  |  |
| NQR-E1200 |  | MS2 Engineering submittal complete (10%) - Al Qurayyat | 0d | 2028-11-01 | 2028-11-01 | NQR-E1090, NQR-E1110 | 37d |
| NQR-E1210 |  | MS3 Engineering approved by SAR (10%) - Al Qurayyat | 0d | 2028-11-22 | 2028-11-22 | NQR-E1020, NQR-E1040, NQR-E1060, NQR-E1080, NQR-E1100, NQR-E1120, NQR-E1200 | 22d |
|  | SRV | **Site survey and as-found verification** |  | 2028-09-07 | 2028-09-27 |  |  |
|  | SUB | **Submittal** |  | 2028-09-07 | 2028-09-20 |  |  |
| NQR-E1010 |  | Survey: submittal of site survey and as-found report - Al Qurayyat | 10d | 2028-09-07 | 2028-09-20 | PRJ-M2100 FS+382d | 22d |
|  | APR | **Approval** |  | 2028-09-21 | 2028-09-27 |  |  |
| NQR-E1020 |  | Survey: SAR approval of survey report - Al Qurayyat | 5d | 2028-09-21 | 2028-09-27 | NQR-E1010 | 62d |
|  | CNC | **Concept design** |  | 2028-09-21 | 2028-10-18 |  |  |
|  | SUB | **Submittal** |  | 2028-09-21 | 2028-09-27 |  |  |
| NQR-E1030 |  | Concept design: submittal - Al Qurayyat | 5d | 2028-09-21 | 2028-09-27 | NQR-E1010 | 22d |
|  | APR | **Approval** |  | 2028-09-28 | 2028-10-18 |  |  |
| NQR-E1040 |  | Concept design: SAR review and approval - Al Qurayyat | 15d | 2028-09-28 | 2028-10-18 | NQR-E1030 | 47d |
|  | PRE | **Preliminary (schematic) design** |  | 2028-09-28 | 2028-10-30 |  |  |
|  | SUB | **Submittal** |  | 2028-09-28 | 2028-10-09 |  |  |
| NQR-E1050 |  | Preliminary design: submittal - Al Qurayyat | 8d | 2028-09-28 | 2028-10-09 | NQR-E1030 | 22d |
|  | APR | **Approval** |  | 2028-10-10 | 2028-10-30 |  |  |
| NQR-E1060 |  | Preliminary design: SAR review and approval - Al Qurayyat | 15d | 2028-10-10 | 2028-10-30 | NQR-E1050 | 39d |
|  | DET | **Detailed design** |  | 2028-10-10 | 2028-11-15 |  |  |
|  | SUB | **Submittal** |  | 2028-10-10 | 2028-10-25 |  |  |
| NQR-E1070 |  | Detailed design: submittal (drawings, BOQ, data sheets) - Al Qurayyat | 12d | 2028-10-10 | 2028-10-25 | NQR-E1050 | 22d |
|  | APR | **Approval** |  | 2028-10-26 | 2028-11-15 |  |  |
| NQR-E1080 |  | Detailed design: SAR review and approval - Al Qurayyat | 15d | 2028-10-26 | 2028-11-15 | NQR-E1070 | 27d |
|  | IFC | **IFC and shop drawings** |  | 2028-10-26 | 2028-11-22 |  |  |
|  | SUB | **Submittal** |  | 2028-10-26 | 2028-11-01 |  |  |
| NQR-E1090 |  | IFC and shop drawings: submittal - Al Qurayyat | 5d | 2028-10-26 | 2028-11-01 | NQR-E1070 | 22d |
|  | APR | **Approval** |  | 2028-11-02 | 2028-11-22 |  |  |
| NQR-E1100 |  | IFC and shop drawings: SAR approval and release - Al Qurayyat | 15d | 2028-11-02 | 2028-11-22 | NQR-E1090 | 22d |
|  | HCS | **HCIS documentation (Stage 3 and 4)** |  | 2028-10-17 | 2028-11-22 |  |  |
|  | SUB | **Submittal** |  | 2028-10-17 | 2028-11-01 |  |  |
| NQR-E1110 |  | HCIS Stage 3 and 4 documents: preparation - Al Qurayyat | 12d | 2028-10-17 | 2028-11-01 | NQR-E1050 FS+5d, NQR-E1090 FF | 22d |
|  | APR | **Approval** |  | 2028-11-02 | 2028-11-22 |  |  |
| NQR-E1120 |  | HCIS Stage 3 and 4 documents: SAR final review and HCIS submission - Al Qurayyat | 15d | 2028-11-02 | 2028-11-22 | NQR-E1110 | 22d |

| ID | WBS | Task | Duration | Start | Finish | Predecessors | Total float |
| --- | --- | --- | --- | --- | --- | --- | --- |
|  | ASB | **As-built and O&M documentation** |  | 2029-07-02 | 2029-09-02 |  |  |
|  | SUB | **Submittal** |  | 2029-07-02 | 2029-08-12 |  |  |
| NQR-E1130 |  | As-built and O&M documentation: submittal - Al Qurayyat | 30d | 2029-07-02 | 2029-08-12 | NQR-C2100 | 22d |
|  | APR | **Approval** |  | 2029-08-13 | 2029-09-02 |  |  |
| NQR-E1140 |  | As-built and O&M documentation: SAR review and approval - Al Qurayyat | 15d | 2029-08-13 | 2029-09-02 | NQR-E1130 | 22d |
|  | EWR | **EWR - East West Railway** |  | 2027-06-24 | 2029-03-15 |  |  |
|  | EDM | **Dammam (EWR)** |  | 2027-06-24 | 2028-06-08 |  |  |
| EDM-E1200 |  | MS2 Engineering submittal complete (10%) - Dammam | 0d | 2027-08-18 | 2027-08-18 | EDM-E1090, EDM-E1110 | 347d |
| EDM-E1210 |  | MS3 Engineering approved by SAR (10%) - Dammam | 0d | 2027-09-08 | 2027-09-08 | EDM-E1020, EDM-E1040, EDM-E1060, EDM-E1080, EDM-E1100, EDM-E1120, EDM-E1200 | 332d |
|  | SRV | **Site survey and as-found verification** |  | 2027-06-24 | 2027-07-14 |  |  |
|  | SUB | **Submittal** |  | 2027-06-24 | 2027-07-07 |  |  |
| EDM-E1010 |  | Survey: submittal of site survey and as-found report - Dammam | 10d | 2027-06-24 | 2027-07-07 | PRJ-M2100 FS+78d | 332d |
|  | APR | **Approval** |  | 2027-07-08 | 2027-07-14 |  |  |
| EDM-E1020 |  | Survey: SAR approval of survey report - Dammam | 5d | 2027-07-08 | 2027-07-14 | EDM-E1010 | 372d |
|  | CNC | **Concept design** |  | 2027-07-08 | 2027-08-04 |  |  |
|  | SUB | **Submittal** |  | 2027-07-08 | 2027-07-14 |  |  |
| EDM-E1030 |  | Concept design: submittal - Dammam | 5d | 2027-07-08 | 2027-07-14 | EDM-E1010 | 332d |
|  | APR | **Approval** |  | 2027-07-15 | 2027-08-04 |  |  |
| EDM-E1040 |  | Concept design: SAR review and approval - Dammam | 15d | 2027-07-15 | 2027-08-04 | EDM-E1030 | 357d |
|  | PRE | **Preliminary (schematic) design** |  | 2027-07-15 | 2027-08-16 |  |  |
|  | SUB | **Submittal** |  | 2027-07-15 | 2027-07-26 |  |  |
| EDM-E1050 |  | Preliminary design: submittal - Dammam | 8d | 2027-07-15 | 2027-07-26 | EDM-E1030 | 332d |
|  | APR | **Approval** |  | 2027-07-27 | 2027-08-16 |  |  |
| EDM-E1060 |  | Preliminary design: SAR review and approval - Dammam | 15d | 2027-07-27 | 2027-08-16 | EDM-E1050 | 349d |
|  | DET | **Detailed design** |  | 2027-07-27 | 2027-09-01 |  |  |
|  | SUB | **Submittal** |  | 2027-07-27 | 2027-08-11 |  |  |
| EDM-E1070 |  | Detailed design: submittal (drawings, BOQ, data sheets) - Dammam | 12d | 2027-07-27 | 2027-08-11 | EDM-E1050 | 332d |
|  | APR | **Approval** |  | 2027-08-12 | 2027-09-01 |  |  |
| EDM-E1080 |  | Detailed design: SAR review and approval - Dammam | 15d | 2027-08-12 | 2027-09-01 | EDM-E1070 | 337d |
|  | IFC | **IFC and shop drawings** |  | 2027-08-12 | 2027-09-08 |  |  |
|  | SUB | **Submittal** |  | 2027-08-12 | 2027-08-18 |  |  |
| EDM-E1090 |  | IFC and shop drawings: submittal - Dammam | 5d | 2027-08-12 | 2027-08-18 | EDM-E1070 | 332d |
|  | APR | **Approval** |  | 2027-08-19 | 2027-09-08 |  |  |
| EDM-E1100 |  | IFC and shop drawings: SAR approval and release - Dammam | 15d | 2027-08-19 | 2027-09-08 | EDM-E1090 | 332d |
|  | HCS | **HCIS documentation (Stage 3 and 4)** |  | 2027-08-03 | 2027-09-08 |  |  |
|  | SUB | **Submittal** |  | 2027-08-03 | 2027-08-18 |  |  |
| EDM-E1110 |  | HCIS Stage 3 and 4 documents: preparation - Dammam | 12d | 2027-08-03 | 2027-08-18 | EDM-E1050 FS+5d, EDM-E1090 FF | 332d |
|  | APR | **Approval** |  | 2027-08-19 | 2027-09-08 |  |  |
| EDM-E1120 |  | HCIS Stage 3 and 4 documents: SAR final review and HCIS submission - Dammam | 15d | 2027-08-19 | 2027-09-08 | EDM-E1110 | 332d |
|  | ASB | **As-built and O&M documentation** |  | 2028-04-02 | 2028-06-08 |  |  |
|  | SUB | **Submittal** |  | 2028-04-02 | 2028-05-18 |  |  |
| EDM-E1130 |  | As-built and O&M documentation: submittal - Dammam | 30d | 2028-04-02 | 2028-05-18 | EDM-C2100 | 332d |
|  | APR | **Approval** |  | 2028-05-21 | 2028-06-08 |  |  |
| EDM-E1140 |  | As-built and O&M documentation: SAR review and approval - Dammam | 15d | 2028-05-21 | 2028-06-08 | EDM-E1130 | 332d |
|  | EHF | **Hufuf (EWR)** |  | 2027-08-19 | 2028-08-03 |  |  |
| EHF-E1200 |  | MS2 Engineering submittal complete (10%) - Hufuf | 0d | 2027-10-14 | 2027-10-14 | EHF-E1090, EHF-E1110 | 307d |
| EHF-E1210 |  | MS3 Engineering approved by SAR (10%) - Hufuf | 0d | 2027-11-04 | 2027-11-04 | EHF-E1020, EHF-E1040, EHF-E1060, EHF-E1080, EHF-E1100, EHF-E1120, EHF-E1200 | 292d |
|  | SRV | **Site survey and as-found verification** |  | 2027-08-19 | 2027-09-08 |  |  |
|  | SUB | **Submittal** |  | 2027-08-19 | 2027-09-01 |  |  |
| EHF-E1010 |  | Survey: submittal of site survey and as-found report - Hufuf | 10d | 2027-08-19 | 2027-09-01 | PRJ-M2100 FS+118d | 292d |
|  | APR | **Approval** |  | 2027-09-02 | 2027-09-08 |  |  |
| EHF-E1020 |  | Survey: SAR approval of survey report - Hufuf | 5d | 2027-09-02 | 2027-09-08 | EHF-E1010 | 332d |
|  | CNC | **Concept design** |  | 2027-09-02 | 2027-09-30 |  |  |
|  | SUB | **Submittal** |  | 2027-09-02 | 2027-09-08 |  |  |
| EHF-E1030 |  | Concept design: submittal - Hufuf | 5d | 2027-09-02 | 2027-09-08 | EHF-E1010 | 292d |
|  | APR | **Approval** |  | 2027-09-09 | 2027-09-30 |  |  |
| EHF-E1040 |  | Concept design: SAR review and approval - Hufuf | 15d | 2027-09-09 | 2027-09-30 | EHF-E1030 | 317d |
|  | PRE | **Preliminary (schematic) design** |  | 2027-09-09 | 2027-10-12 |  |  |
|  | SUB | **Submittal** |  | 2027-09-09 | 2027-09-20 |  |  |
| EHF-E1050 |  | Preliminary design: submittal - Hufuf | 8d | 2027-09-09 | 2027-09-20 | EHF-E1030 | 292d |
|  | APR | **Approval** |  | 2027-09-21 | 2027-10-12 |  |  |
| EHF-E1060 |  | Preliminary design: SAR review and approval - Hufuf | 15d | 2027-09-21 | 2027-10-12 | EHF-E1050 | 309d |
|  | DET | **Detailed design** |  | 2027-09-21 | 2027-10-28 |  |  |
|  | SUB | **Submittal** |  | 2027-09-21 | 2027-10-07 |  |  |
| EHF-E1070 |  | Detailed design: submittal (drawings, BOQ, data sheets) - Hufuf | 12d | 2027-09-21 | 2027-10-07 | EHF-E1050 | 292d |
|  | APR | **Approval** |  | 2027-10-10 | 2027-10-28 |  |  |
| EHF-E1080 |  | Detailed design: SAR review and approval - Hufuf | 15d | 2027-10-10 | 2027-10-28 | EHF-E1070 | 297d |
|  | IFC | **IFC and shop drawings** |  | 2027-10-10 | 2027-11-04 |  |  |
|  | SUB | **Submittal** |  | 2027-10-10 | 2027-10-14 |  |  |
| EHF-E1090 |  | IFC and shop drawings: submittal - Hufuf | 5d | 2027-10-10 | 2027-10-14 | EHF-E1070 | 292d |

| ID | WBS | Task | Duration | Start | Finish | Predecessors | Total float |
| --- | --- | --- | --- | --- | --- | --- | --- |
|  | APR | **Approval** |  | 2027-10-17 | 2027-11-04 |  |  |
| EHF-E1100 |  | IFC and shop drawings: SAR approval and release - Hufuf | 15d | 2027-10-17 | 2027-11-04 | EHF-E1090 | 292d |
|  | HCS | **HCIS documentation (Stage 3 and 4)** |  | 2027-09-29 | 2027-11-04 |  |  |
|  | SUB | **Submittal** |  | 2027-09-29 | 2027-10-14 |  |  |
| EHF-E1110 |  | HCIS Stage 3 and 4 documents: preparation - Hufuf | 12d | 2027-09-29 | 2027-10-14 | EHF-E1050 FS+5d, EHF-E1090 FF | 292d |
|  | APR | **Approval** |  | 2027-10-17 | 2027-11-04 |  |  |
| EHF-E1120 |  | HCIS Stage 3 and 4 documents: SAR final review and HCIS submission - Hufuf | 15d | 2027-10-17 | 2027-11-04 | EHF-E1110 | 292d |
|  | ASB | **As-built and O&M documentation** |  | 2028-06-04 | 2028-08-03 |  |  |
|  | SUB | **Submittal** |  | 2028-06-04 | 2028-07-13 |  |  |
| EHF-E1130 |  | As-built and O&M documentation: submittal - Hufuf | 30d | 2028-06-04 | 2028-07-13 | EHF-C2100 | 292d |
|  | APR | **Approval** |  | 2028-07-16 | 2028-08-03 |  |  |
| EHF-E1140 |  | As-built and O&M documentation: SAR review and approval - Hufuf | 15d | 2028-07-16 | 2028-08-03 | EHF-E1130 | 292d |
|  | EAB | **Abqaiq (EWR)** |  | 2028-04-05 | 2029-03-15 |  |  |
| EAB-E1200 |  | MS2 Engineering submittal complete (10%) - Abqaiq | 0d | 2028-06-06 | 2028-06-06 | EAB-E1090, EAB-E1110 | 153d |
| EAB-E1210 |  | MS3 Engineering approved by SAR (10%) - Abqaiq | 0d | 2028-06-27 | 2028-06-27 | EAB-E1020, EAB-E1040, EAB-E1060, EAB-E1080, EAB-E1100, EAB-E1120, EAB-E1200 | 138d |
|  | SRV | **Site survey and as-found verification** |  | 2028-04-05 | 2028-04-25 |  |  |
|  | SUB | **Submittal** |  | 2028-04-05 | 2028-04-18 |  |  |
| EAB-E1010 |  | Survey: submittal of site survey and as-found report - Abqaiq | 10d | 2028-04-05 | 2028-04-18 | PRJ-M2100 FS+276d | 138d |
|  | APR | **Approval** |  | 2028-04-19 | 2028-04-25 |  |  |
| EAB-E1020 |  | Survey: SAR approval of survey report - Abqaiq | 5d | 2028-04-19 | 2028-04-25 | EAB-E1010 | 178d |
|  | CNC | **Concept design** |  | 2028-04-19 | 2028-05-23 |  |  |
|  | SUB | **Submittal** |  | 2028-04-19 | 2028-04-25 |  |  |
| EAB-E1030 |  | Concept design: submittal - Abqaiq | 5d | 2028-04-19 | 2028-04-25 | EAB-E1010 | 138d |
|  | APR | **Approval** |  | 2028-04-26 | 2028-05-23 |  |  |
| EAB-E1040 |  | Concept design: SAR review and approval - Abqaiq | 15d | 2028-04-26 | 2028-05-23 | EAB-E1030 | 163d |
|  | PRE | **Preliminary (schematic) design** |  | 2028-04-26 | 2028-06-04 |  |  |
|  | SUB | **Submittal** |  | 2028-04-26 | 2028-05-14 |  |  |
| EAB-E1050 |  | Preliminary design: submittal - Abqaiq | 8d | 2028-04-26 | 2028-05-14 | EAB-E1030 | 138d |
|  | APR | **Approval** |  | 2028-05-15 | 2028-06-04 |  |  |
| EAB-E1060 |  | Preliminary design: SAR review and approval - Abqaiq | 15d | 2028-05-15 | 2028-06-04 | EAB-E1050 | 155d |
|  | DET | **Detailed design** |  | 2028-05-15 | 2028-06-20 |  |  |
|  | SUB | **Submittal** |  | 2028-05-15 | 2028-05-30 |  |  |
| EAB-E1070 |  | Detailed design: submittal (drawings, BOQ, data sheets) - Abqaiq | 12d | 2028-05-15 | 2028-05-30 | EAB-E1050 | 138d |
|  | APR | **Approval** |  | 2028-05-31 | 2028-06-20 |  |  |
| EAB-E1080 |  | Detailed design: SAR review and approval - Abqaiq | 15d | 2028-05-31 | 2028-06-20 | EAB-E1070 | 143d |
|  | IFC | **IFC and shop drawings** |  | 2028-05-31 | 2028-06-27 |  |  |
|  | SUB | **Submittal** |  | 2028-05-31 | 2028-06-06 |  |  |
| EAB-E1090 |  | IFC and shop drawings: submittal - Abqaiq | 5d | 2028-05-31 | 2028-06-06 | EAB-E1070 | 138d |
|  | APR | **Approval** |  | 2028-06-07 | 2028-06-27 |  |  |
| EAB-E1100 |  | IFC and shop drawings: SAR approval and release - Abqaiq | 15d | 2028-06-07 | 2028-06-27 | EAB-E1090 | 138d |
|  | HCS | **HCIS documentation (Stage 3 and 4)** |  | 2028-05-22 | 2028-06-27 |  |  |
|  | SUB | **Submittal** |  | 2028-05-22 | 2028-06-06 |  |  |
| EAB-E1110 |  | HCIS Stage 3 and 4 documents: preparation - Abqaiq | 12d | 2028-05-22 | 2028-06-06 | EAB-E1050 FS+5d, EAB-E1090 FF | 138d |
|  | APR | **Approval** |  | 2028-06-07 | 2028-06-27 |  |  |
| EAB-E1120 |  | HCIS Stage 3 and 4 documents: SAR final review and HCIS submission - Abqaiq | 15d | 2028-06-07 | 2028-06-27 | EAB-E1110 | 138d |
|  | ASB | **As-built and O&M documentation** |  | 2029-01-04 | 2029-03-15 |  |  |
|  | SUB | **Submittal** |  | 2029-01-04 | 2029-02-21 |  |  |
| EAB-E1130 |  | As-built and O&M documentation: submittal - Abqaiq | 30d | 2029-01-04 | 2029-02-21 | EAB-C2100 | 138d |
|  | APR | **Approval** |  | 2029-02-25 | 2029-03-15 |  |  |
| EAB-E1140 |  | As-built and O&M documentation: SAR review and approval - Abqaiq | 15d | 2029-02-25 | 2029-03-15 | EAB-E1130 | 138d |
|  | HHR | **HHR - Haramain High Speed Rail** |  | 2027-03-04 | 2029-07-11 |  |  |
|  | HJD | **Jeddah (HHR)** |  | 2027-03-04 | 2028-08-31 |  |  |
| HJD-E1200 |  | MS2 Engineering submittal complete (10%) - Jeddah | 0d | 2027-06-23 | 2027-06-23 | HJD-E1090, HJD-E1110 | 282d |
| HJD-E1210 |  | MS3 Engineering approved by SAR (10%) - Jeddah | 0d | 2027-07-14 | 2027-07-14 | HJD-E1020, HJD-E1040, HJD-E1060, HJD-E1080, HJD-E1100, HJD-E1120, HJD-E1200 | 267d |
|  | SRV | **Site survey and as-found verification** |  | 2027-03-04 | 2027-04-14 |  |  |
|  | SUB | **Submittal** |  | 2027-03-04 | 2027-04-07 |  |  |
| HJD-E1010 |  | Survey: submittal of site survey and as-found report - Jeddah | 20d | 2027-03-04 | 2027-04-07 | PRJ-M2100 FS+8d | 267d |
|  | APR | **Approval** |  | 2027-04-08 | 2027-04-14 |  |  |
| HJD-E1020 |  | Survey: SAR approval of survey report - Jeddah | 5d | 2027-04-08 | 2027-04-14 | HJD-E1010 | 327d |
|  | CNC | **Concept design** |  | 2027-04-08 | 2027-05-10 |  |  |
|  | SUB | **Submittal** |  | 2027-04-08 | 2027-04-19 |  |  |
| HJD-E1030 |  | Concept design: submittal - Jeddah | 8d | 2027-04-08 | 2027-04-19 | HJD-E1010 | 267d |
|  | APR | **Approval** |  | 2027-04-20 | 2027-05-10 |  |  |
| HJD-E1040 |  | Concept design: SAR review and approval - Jeddah | 15d | 2027-04-20 | 2027-05-10 | HJD-E1030 | 309d |
|  | PRE | **Preliminary (schematic) design** |  | 2027-04-20 | 2027-06-03 |  |  |
|  | SUB | **Submittal** |  | 2027-04-20 | 2027-05-06 |  |  |
| HJD-E1050 |  | Preliminary design: submittal - Jeddah | 13d | 2027-04-20 | 2027-05-06 | HJD-E1030 | 267d |
|  | APR | **Approval** |  | 2027-05-09 | 2027-06-03 |  |  |
| HJD-E1060 |  | Preliminary design: SAR review and approval - Jeddah | 15d | 2027-05-09 | 2027-06-03 | HJD-E1050 | 296d |
|  | DET | **Detailed design** |  | 2027-05-09 | 2027-07-01 |  |  |

| ID | WBS | Task | Duration | Start | Finish | Predecessors | Total float |
| --- | --- | --- | --- | --- | --- | --- | --- |
|  | SUB | **Submittal** |  | 2027-05-09 | 2027-06-10 |  |  |
| HJD-E1070 |  | Detailed design: submittal (drawings, BOQ, data sheets) - Jeddah | 20d | 2027-05-09 | 2027-06-10 | HJD-E1050 | 267d |
|  | APR | **Approval** |  | 2027-06-13 | 2027-07-01 |  |  |
| HJD-E1080 |  | Detailed design: SAR review and approval - Jeddah | 15d | 2027-06-13 | 2027-07-01 | HJD-E1070 | 276d |
|  | IFC | **IFC and shop drawings** |  | 2027-06-13 | 2027-07-14 |  |  |
|  | SUB | **Submittal** |  | 2027-06-13 | 2027-06-23 |  |  |
| HJD-E1090 |  | IFC and shop drawings: submittal - Jeddah | 9d | 2027-06-13 | 2027-06-23 | HJD-E1070 | 267d |
|  | APR | **Approval** |  | 2027-06-24 | 2027-07-14 |  |  |
| HJD-E1100 |  | IFC and shop drawings: SAR approval and release - Jeddah | 15d | 2027-06-24 | 2027-07-14 | HJD-E1090 | 267d |
|  | HCS | **HCIS documentation (Stage 3 and 4)** |  | 2027-05-26 | 2027-07-14 |  |  |
|  | SUB | **Submittal** |  | 2027-05-26 | 2027-06-23 |  |  |
| HJD-E1110 |  | HCIS Stage 3 and 4 documents: preparation - Jeddah | 21d | 2027-05-26 | 2027-06-23 | HJD-E1050 FS+8d, HJD-E1090 FF | 267d |
|  | APR | **Approval** |  | 2027-06-24 | 2027-07-14 |  |  |
| HJD-E1120 |  | HCIS Stage 3 and 4 documents: SAR final review and HCIS submission - Jeddah | 15d | 2027-06-24 | 2027-07-14 | HJD-E1110 | 267d |
|  | ASB | **As-built and O&M documentation** |  | 2028-06-18 | 2028-08-31 |  |  |
|  | SUB | **Submittal** |  | 2028-06-18 | 2028-08-10 |  |  |
| HJD-E1130 |  | As-built and O&M documentation: submittal - Jeddah | 40d | 2028-06-18 | 2028-08-10 | HJD-C2100 | 267d |
|  | APR | **Approval** |  | 2028-08-13 | 2028-08-31 |  |  |
| HJD-E1140 |  | As-built and O&M documentation: SAR review and approval - Jeddah | 15d | 2028-08-13 | 2028-08-31 | HJD-E1130 | 267d |
|  | HMK | **Makkah (HHR)** |  | 2027-10-10 | 2029-04-30 |  |  |
| HMK-E1200 |  | MS2 Engineering submittal complete (10%) - Makkah | 0d | 2028-01-13 | 2028-01-13 | HMK-E1090, HMK-E1110 | 121d |
| HMK-E1210 |  | MS3 Engineering approved by SAR (10%) - Makkah | 0d | 2028-02-03 | 2028-02-03 | HMK-E1020, HMK-E1040, HMK-E1060, HMK-E1080, HMK-E1100, HMK-E1120, HMK-E1200 | 106d |
|  | SRV | **Site survey and as-found verification** |  | 2027-10-10 | 2027-11-11 |  |  |
|  | SUB | **Submittal** |  | 2027-10-10 | 2027-11-04 |  |  |
| HMK-E1010 |  | Survey: submittal of site survey and as-found report - Makkah | 20d | 2027-10-10 | 2027-11-04 | PRJ-M2100 FS+153d | 106d |
|  | APR | **Approval** |  | 2027-11-07 | 2027-11-11 |  |  |
| HMK-E1020 |  | Survey: SAR approval of survey report - Makkah | 5d | 2027-11-07 | 2027-11-11 | HMK-E1010 | 166d |
|  | CNC | **Concept design** |  | 2027-11-07 | 2027-12-07 |  |  |
|  | SUB | **Submittal** |  | 2027-11-07 | 2027-11-16 |  |  |
| HMK-E1030 |  | Concept design: submittal - Makkah | 8d | 2027-11-07 | 2027-11-16 | HMK-E1010 | 106d |
|  | APR | **Approval** |  | 2027-11-17 | 2027-12-07 |  |  |
| HMK-E1040 |  | Concept design: SAR review and approval - Makkah | 15d | 2027-11-17 | 2027-12-07 | HMK-E1030 | 148d |
|  | PRE | **Preliminary (schematic) design** |  | 2027-11-17 | 2027-12-26 |  |  |
|  | SUB | **Submittal** |  | 2027-11-17 | 2027-12-05 |  |  |
| HMK-E1050 |  | Preliminary design: submittal - Makkah | 13d | 2027-11-17 | 2027-12-05 | HMK-E1030 | 106d |
|  | APR | **Approval** |  | 2027-12-06 | 2027-12-26 |  |  |
| HMK-E1060 |  | Preliminary design: SAR review and approval - Makkah | 15d | 2027-12-06 | 2027-12-26 | HMK-E1050 | 135d |
|  | DET | **Detailed design** |  | 2027-12-06 | 2028-01-23 |  |  |
|  | SUB | **Submittal** |  | 2027-12-06 | 2028-01-02 |  |  |
| HMK-E1070 |  | Detailed design: submittal (drawings, BOQ, data sheets) - Makkah | 20d | 2027-12-06 | 2028-01-02 | HMK-E1050 | 106d |
|  | APR | **Approval** |  | 2028-01-03 | 2028-01-23 |  |  |
| HMK-E1080 |  | Detailed design: SAR review and approval - Makkah | 15d | 2028-01-03 | 2028-01-23 | HMK-E1070 | 115d |
|  | IFC | **IFC and shop drawings** |  | 2028-01-03 | 2028-02-03 |  |  |
|  | SUB | **Submittal** |  | 2028-01-03 | 2028-01-13 |  |  |
| HMK-E1090 |  | IFC and shop drawings: submittal - Makkah | 9d | 2028-01-03 | 2028-01-13 | HMK-E1070 | 106d |
|  | APR | **Approval** |  | 2028-01-16 | 2028-02-03 |  |  |
| HMK-E1100 |  | IFC and shop drawings: SAR approval and release - Makkah | 15d | 2028-01-16 | 2028-02-03 | HMK-E1090 | 106d |
|  | HCS | **HCIS documentation (Stage 3 and 4)** |  | 2027-12-16 | 2028-02-03 |  |  |
|  | SUB | **Submittal** |  | 2027-12-16 | 2028-01-13 |  |  |
| HMK-E1110 |  | HCIS Stage 3 and 4 documents: preparation - Makkah | 21d | 2027-12-16 | 2028-01-13 | HMK-E1050 FS+8d, HMK-E1090 FF | 106d |
|  | APR | **Approval** |  | 2028-01-16 | 2028-02-03 |  |  |
| HMK-E1120 |  | HCIS Stage 3 and 4 documents: SAR final review and HCIS submission - Makkah | 15d | 2028-01-16 | 2028-02-03 | HMK-E1110 | 106d |
|  | ASB | **As-built and O&M documentation** |  | 2029-01-29 | 2029-04-30 |  |  |
|  | SUB | **Submittal** |  | 2029-01-29 | 2029-04-02 |  |  |
| HMK-E1130 |  | As-built and O&M documentation: submittal - Makkah | 40d | 2029-01-29 | 2029-04-02 | HMK-C2100 | 106d |
|  | APR | **Approval** |  | 2029-04-03 | 2029-04-30 |  |  |
| HMK-E1140 |  | As-built and O&M documentation: SAR review and approval - Makkah | 15d | 2029-04-03 | 2029-04-30 | HMK-E1130 | 106d |
|  | HKA | **KAEC (HHR)** |  | 2028-02-09 | 2029-07-05 |  |  |
| HKA-E1200 |  | MS2 Engineering submittal complete (10%) - KAEC | 0d | 2028-05-30 | 2028-05-30 | HKA-E1090, HKA-E1110 | 73d |
| HKA-E1210 |  | MS3 Engineering approved by SAR (10%) - KAEC | 0d | 2028-06-20 | 2028-06-20 | HKA-E1020, HKA-E1040, HKA-E1060, HKA-E1080, HKA-E1100, HKA-E1120, HKA-E1200 | 58d |
|  | SRV | **Site survey and as-found verification** |  | 2028-02-09 | 2028-03-21 |  |  |
|  | SUB | **Submittal** |  | 2028-02-09 | 2028-03-14 |  |  |
| HKA-E1010 |  | Survey: submittal of site survey and as-found report - KAEC | 20d | 2028-02-09 | 2028-03-14 | PRJ-M2100 FS+241d | 58d |
|  | APR | **Approval** |  | 2028-03-15 | 2028-03-21 |  |  |
| HKA-E1020 |  | Survey: SAR approval of survey report - KAEC | 5d | 2028-03-15 | 2028-03-21 | HKA-E1010 | 118d |
|  | CNC | **Concept design** |  | 2028-03-15 | 2028-04-16 |  |  |
|  | SUB | **Submittal** |  | 2028-03-15 | 2028-03-26 |  |  |
| HKA-E1030 |  | Concept design: submittal - KAEC | 8d | 2028-03-15 | 2028-03-26 | HKA-E1010 | 58d |
|  | APR | **Approval** |  | 2028-03-27 | 2028-04-16 |  |  |
| HKA-E1040 |  | Concept design: SAR review and approval - KAEC | 15d | 2028-03-27 | 2028-04-16 | HKA-E1030 | 100d |

| ID | WBS | Task | Duration | Start | Finish | Predecessors | Total float |
| --- | --- | --- | --- | --- | --- | --- | --- |
|  | PRE | **Preliminary (schematic) design** |  | 2028-03-27 | 2028-05-10 |  |  |
|  | SUB | **Submittal** |  | 2028-03-27 | 2028-04-12 |  |  |
| HKA-E1050 |  | Preliminary design: submittal - KAEC | 13d | 2028-03-27 | 2028-04-12 | HKA-E1030 | 58d |
|  | APR | **Approval** |  | 2028-04-13 | 2028-05-10 |  |  |
| HKA-E1060 |  | Preliminary design: SAR review and approval - KAEC | 15d | 2028-04-13 | 2028-05-10 | HKA-E1050 | 87d |
|  | DET | **Detailed design** |  | 2028-04-13 | 2028-06-07 |  |  |
|  | SUB | **Submittal** |  | 2028-04-13 | 2028-05-17 |  |  |
| HKA-E1070 |  | Detailed design: submittal (drawings, BOQ, data sheets) - KAEC | 20d | 2028-04-13 | 2028-05-17 | HKA-E1050 | 58d |
|  | APR | **Approval** |  | 2028-05-18 | 2028-06-07 |  |  |
| HKA-E1080 |  | Detailed design: SAR review and approval - KAEC | 15d | 2028-05-18 | 2028-06-07 | HKA-E1070 | 67d |
|  | IFC | **IFC and shop drawings** |  | 2028-05-18 | 2028-06-20 |  |  |
|  | SUB | **Submittal** |  | 2028-05-18 | 2028-05-30 |  |  |
| HKA-E1090 |  | IFC and shop drawings: submittal - KAEC | 9d | 2028-05-18 | 2028-05-30 | HKA-E1070 | 58d |
|  | APR | **Approval** |  | 2028-05-31 | 2028-06-20 |  |  |
| HKA-E1100 |  | IFC and shop drawings: SAR approval and release - KAEC | 15d | 2028-05-31 | 2028-06-20 | HKA-E1090 | 58d |
|  | HCS | **HCIS documentation (Stage 3 and 4)** |  | 2028-04-25 | 2028-06-20 |  |  |
|  | SUB | **Submittal** |  | 2028-04-25 | 2028-05-30 |  |  |
| HKA-E1110 |  | HCIS Stage 3 and 4 documents: preparation - KAEC | 21d | 2028-04-25 | 2028-05-30 | HKA-E1050 FS+8d, HKA-E1090 FF | 58d |
|  | APR | **Approval** |  | 2028-05-31 | 2028-06-20 |  |  |
| HKA-E1120 |  | HCIS Stage 3 and 4 documents: SAR final review and HCIS submission - KAEC | 15d | 2028-05-31 | 2028-06-20 | HKA-E1110 | 58d |
|  | ASB | **As-built and O&M documentation** |  | 2029-04-15 | 2029-07-05 |  |  |
|  | SUB | **Submittal** |  | 2029-04-15 | 2029-06-14 |  |  |
| HKA-E1130 |  | As-built and O&M documentation: submittal - KAEC | 40d | 2029-04-15 | 2029-06-14 | HKA-C2100 | 58d |
|  | APR | **Approval** |  | 2029-06-17 | 2029-07-05 |  |  |
| HKA-E1140 |  | As-built and O&M documentation: SAR review and approval - KAEC | 15d | 2029-06-17 | 2029-07-05 | HKA-E1130 | 58d |
|  | HMD | **Madinah (HHR)** |  | 2028-02-09 | 2029-07-11 |  |  |
| HMD-E1200 |  | MS2 Engineering submittal complete (10%) - Madinah | 0d | 2028-05-30 | 2028-05-30 | HMD-E1090, HMD-E1110 | 69d |
| HMD-E1210 |  | MS3 Engineering approved by SAR (10%) - Madinah | 0d | 2028-06-20 | 2028-06-20 | HMD-E1020, HMD-E1040, HMD-E1060, HMD-E1080, HMD-E1100, HMD-E1120, HMD-E1200 | 54d |
|  | SRV | **Site survey and as-found verification** |  | 2028-02-09 | 2028-03-21 |  |  |
|  | SUB | **Submittal** |  | 2028-02-09 | 2028-03-14 |  |  |
| HMD-E1010 |  | Survey: submittal of site survey and as-found report - Madinah | 20d | 2028-02-09 | 2028-03-14 | PRJ-M2100 FS+241d | 54d |
|  | APR | **Approval** |  | 2028-03-15 | 2028-03-21 |  |  |
| HMD-E1020 |  | Survey: SAR approval of survey report - Madinah | 5d | 2028-03-15 | 2028-03-21 | HMD-E1010 | 114d |
|  | CNC | **Concept design** |  | 2028-03-15 | 2028-04-16 |  |  |
|  | SUB | **Submittal** |  | 2028-03-15 | 2028-03-26 |  |  |
| HMD-E1030 |  | Concept design: submittal - Madinah | 8d | 2028-03-15 | 2028-03-26 | HMD-E1010 | 54d |
|  | APR | **Approval** |  | 2028-03-27 | 2028-04-16 |  |  |
| HMD-E1040 |  | Concept design: SAR review and approval - Madinah | 15d | 2028-03-27 | 2028-04-16 | HMD-E1030 | 96d |
|  | PRE | **Preliminary (schematic) design** |  | 2028-03-27 | 2028-05-10 |  |  |
|  | SUB | **Submittal** |  | 2028-03-27 | 2028-04-12 |  |  |
| HMD-E1050 |  | Preliminary design: submittal - Madinah | 13d | 2028-03-27 | 2028-04-12 | HMD-E1030 | 54d |
|  | APR | **Approval** |  | 2028-04-13 | 2028-05-10 |  |  |
| HMD-E1060 |  | Preliminary design: SAR review and approval - Madinah | 15d | 2028-04-13 | 2028-05-10 | HMD-E1050 | 83d |
|  | DET | **Detailed design** |  | 2028-04-13 | 2028-06-07 |  |  |
|  | SUB | **Submittal** |  | 2028-04-13 | 2028-05-17 |  |  |
| HMD-E1070 |  | Detailed design: submittal (drawings, BOQ, data sheets) - Madinah | 20d | 2028-04-13 | 2028-05-17 | HMD-E1050 | 54d |
|  | APR | **Approval** |  | 2028-05-18 | 2028-06-07 |  |  |
| HMD-E1080 |  | Detailed design: SAR review and approval - Madinah | 15d | 2028-05-18 | 2028-06-07 | HMD-E1070 | 63d |
|  | IFC | **IFC and shop drawings** |  | 2028-05-18 | 2028-06-20 |  |  |
|  | SUB | **Submittal** |  | 2028-05-18 | 2028-05-30 |  |  |
| HMD-E1090 |  | IFC and shop drawings: submittal - Madinah | 9d | 2028-05-18 | 2028-05-30 | HMD-E1070 | 54d |
|  | APR | **Approval** |  | 2028-05-31 | 2028-06-20 |  |  |
| HMD-E1100 |  | IFC and shop drawings: SAR approval and release - Madinah | 15d | 2028-05-31 | 2028-06-20 | HMD-E1090 | 54d |
|  | HCS | **HCIS documentation (Stage 3 and 4)** |  | 2028-04-25 | 2028-06-20 |  |  |
|  | SUB | **Submittal** |  | 2028-04-25 | 2028-05-30 |  |  |
| HMD-E1110 |  | HCIS Stage 3 and 4 documents: preparation - Madinah | 21d | 2028-04-25 | 2028-05-30 | HMD-E1050 FS+8d, HMD-E1090 FF | 54d |
|  | APR | **Approval** |  | 2028-05-31 | 2028-06-20 |  |  |
| HMD-E1120 |  | HCIS Stage 3 and 4 documents: SAR final review and HCIS submission - Madinah | 15d | 2028-05-31 | 2028-06-20 | HMD-E1110 | 54d |
|  | ASB | **As-built and O&M documentation** |  | 2029-04-19 | 2029-07-11 |  |  |
|  | SUB | **Submittal** |  | 2029-04-19 | 2029-06-20 |  |  |
| HMD-E1130 |  | As-built and O&M documentation: submittal - Madinah | 40d | 2029-04-19 | 2029-06-20 | HMD-C2100 | 54d |
|  | APR | **Approval** |  | 2029-06-21 | 2029-07-11 |  |  |
| HMD-E1140 |  | As-built and O&M documentation: SAR review and approval - Madinah | 15d | 2029-06-21 | 2029-07-11 | HMD-E1130 | 54d |
|  | PRO | **Procurement** |  | 2027-03-01 | 2029-05-10 |  |  |
|  | RYD | **Riyadh priority stations (NSR + EWR)** |  | 2027-03-01 | 2027-08-15 |  |  |
|  | NRY | **Riyadh (Thumamah) (NSR)** |  | 2027-03-01 | 2027-08-01 |  |  |
| NRY-P1100 |  | MS4 Material delivered (20%) - Riyadh (Thumamah) | 0d | 2027-08-01 | 2027-08-01 | NRY-P1070 | 464d |
|  | CCT | **CCTV system** |  | 2027-03-01 | 2027-06-06 |  |  |
| NRY-P1010 |  | Manufacture CCTV cameras and analytics - Riyadh (Thumamah) | 60d | 2027-03-01 | 2027-06-06 | NRY-E1210 | 464d |
|  | VMS | **Video management and video wall** |  | 2027-03-01 | 2027-06-06 |  |  |

| ID | WBS | Task | Duration | Start | Finish | Predecessors | Total float |
| --- | --- | --- | --- | --- | --- | --- | --- |
| NRY-P1020 |  | Manufacture video management servers, storage and video wall - Riyadh (Thumamah) | 60d | 2027-03-01 | 2027-06-06 | NRY-E1210 | 464d |
|  | ACC | **Access control and intercom** |  | 2027-03-01 | 2027-06-06 |  |  |
| NRY-P1030 |  | Manufacture access control and intercom equipment - Riyadh (Thumamah) | 60d | 2027-03-01 | 2027-06-06 | NRY-E1210 | 464d |
|  | UPN | **UPS, network and cabinets** |  | 2027-03-01 | 2027-06-06 |  |  |
| NRY-P1040 |  | Manufacture UPS, network switches and field cabinets - Riyadh (Thumamah) | 60d | 2027-03-01 | 2027-06-06 | NRY-E1210 | 464d |
|  | LOG | **FAT and logistics** |  | 2027-06-07 | 2027-08-01 |  |  |
| NRY-P1050 |  | Factory acceptance test at vendor premises - Riyadh (Thumamah) | 10d | 2027-06-07 | 2027-06-20 | NRY-P1010, NRY-P1020, NRY-P1030, NRY-P1040 | 464d |
| NRY-P1060 |  | Shipping and customs clearance - Riyadh (Thumamah) | 25d | 2027-06-21 | 2027-07-25 | NRY-P1050 | 464d |
| NRY-P1070 |  | Delivery to station and receiving inspection - Riyadh (Thumamah) | 5d | 2027-07-26 | 2027-08-01 | NRY-P1060 | 464d |
|  | ERY | **Riyadh (Malaz) (EWR)** |  | 2027-03-22 | 2027-08-15 |  |  |
| ERY-P1100 |  | MS4 Material delivered (20%) - Riyadh (Malaz) | 0d | 2027-08-15 | 2027-08-15 | ERY-P1070 | 460d |
|  | CCT | **CCTV system** |  | 2027-03-22 | 2027-06-20 |  |  |
| ERY-P1010 |  | Manufacture CCTV cameras and analytics - Riyadh (Malaz) | 60d | 2027-03-22 | 2027-06-20 | ERY-E1210 | 460d |
|  | VMS | **Video management and video wall** |  | 2027-03-22 | 2027-06-20 |  |  |
| ERY-P1020 |  | Manufacture video management servers, storage and video wall - Riyadh (Malaz) | 60d | 2027-03-22 | 2027-06-20 | ERY-E1210 | 460d |
|  | ACC | **Access control and intercom** |  | 2027-03-22 | 2027-06-20 |  |  |
| ERY-P1030 |  | Manufacture access control and intercom equipment - Riyadh (Malaz) | 60d | 2027-03-22 | 2027-06-20 | ERY-E1210 | 460d |
|  | UPN | **UPS, network and cabinets** |  | 2027-03-22 | 2027-06-20 |  |  |
| ERY-P1040 |  | Manufacture UPS, network switches and field cabinets - Riyadh (Malaz) | 60d | 2027-03-22 | 2027-06-20 | ERY-E1210 | 460d |
|  | LOG | **FAT and logistics** |  | 2027-06-21 | 2027-08-15 |  |  |
| ERY-P1050 |  | Factory acceptance test at vendor premises - Riyadh (Malaz) | 10d | 2027-06-21 | 2027-07-04 | ERY-P1010, ERY-P1020, ERY-P1030, ERY-P1040 | 460d |
| ERY-P1060 |  | Shipping and customs clearance - Riyadh (Malaz) | 25d | 2027-07-05 | 2027-08-08 | ERY-P1050 | 460d |
| ERY-P1070 |  | Delivery to station and receiving inspection - Riyadh (Malaz) | 5d | 2027-08-09 | 2027-08-15 | ERY-P1060 | 460d |
|  | NSR | **NSR - North South Railway** |  | 2027-11-07 | 2029-05-10 |  |  |
|  | NQS | **Al Qassim (NSR)** |  | 2027-11-07 | 2028-04-13 |  |  |
| NQS-P1100 |  | MS4 Material delivered (20%) - Al Qassim | 0d | 2028-04-13 | 2028-04-13 | NQS-P1070 | 286d |
|  | CCT | **CCTV system** |  | 2027-11-07 | 2028-02-10 |  |  |
| NQS-P1010 |  | Manufacture CCTV cameras and analytics - Al Qassim | 70d | 2027-11-07 | 2028-02-10 | NQS-E1210 | 286d |
|  | VMS | **Video management and video wall** |  | 2027-11-07 | 2028-02-10 |  |  |
| NQS-P1020 |  | Manufacture video management servers, storage and video wall - Al Qassim | 70d | 2027-11-07 | 2028-02-10 | NQS-E1210 | 286d |
|  | ACC | **Access control and intercom** |  | 2027-11-07 | 2028-02-10 |  |  |
| NQS-P1030 |  | Manufacture access control and intercom equipment - Al Qassim | 70d | 2027-11-07 | 2028-02-10 | NQS-E1210 | 286d |
|  | UPN | **UPS, network and cabinets** |  | 2027-11-07 | 2028-02-10 |  |  |
| NQS-P1040 |  | Manufacture UPS, network switches and field cabinets - Al Qassim | 70d | 2027-11-07 | 2028-02-10 | NQS-E1210 | 286d |
|  | LOG | **FAT and logistics** |  | 2028-02-13 | 2028-04-13 |  |  |
| NQS-P1050 |  | Factory acceptance test at vendor premises - Al Qassim | 10d | 2028-02-13 | 2028-03-02 | NQS-P1010, NQS-P1020, NQS-P1030, NQS-P1040 | 286d |
| NQS-P1060 |  | Shipping and customs clearance - Al Qassim | 25d | 2028-03-05 | 2028-04-06 | NQS-P1050 | 286d |
| NQS-P1070 |  | Delivery to station and receiving inspection - Al Qassim | 5d | 2028-04-09 | 2028-04-13 | NQS-P1060 | 286d |
|  | NMJ | **Al Majma'ah (NSR)** |  | 2027-12-26 | 2028-06-08 |  |  |
| NMJ-P1100 |  | MS4 Material delivered (20%) - Al Majma'ah | 0d | 2028-06-08 | 2028-06-08 | NMJ-P1070 | 251d |
|  | CCT | **CCTV system** |  | 2027-12-26 | 2028-04-06 |  |  |
| NMJ-P1010 |  | Manufacture CCTV cameras and analytics - Al Majma'ah | 70d | 2027-12-26 | 2028-04-06 | NMJ-E1210 | 251d |
|  | VMS | **Video management and video wall** |  | 2027-12-26 | 2028-04-06 |  |  |
| NMJ-P1020 |  | Manufacture video management servers, storage and video wall - Al Majma'ah | 70d | 2027-12-26 | 2028-04-06 | NMJ-E1210 | 251d |
|  | ACC | **Access control and intercom** |  | 2027-12-26 | 2028-04-06 |  |  |
| NMJ-P1030 |  | Manufacture access control and intercom equipment - Al Majma'ah | 70d | 2027-12-26 | 2028-04-06 | NMJ-E1210 | 251d |
|  | UPN | **UPS, network and cabinets** |  | 2027-12-26 | 2028-04-06 |  |  |
| NMJ-P1040 |  | Manufacture UPS, network switches and field cabinets - Al Majma'ah | 70d | 2027-12-26 | 2028-04-06 | NMJ-E1210 | 251d |
|  | LOG | **FAT and logistics** |  | 2028-04-09 | 2028-06-08 |  |  |
| NMJ-P1050 |  | Factory acceptance test at vendor premises - Al Majma'ah | 10d | 2028-04-09 | 2028-04-20 | NMJ-P1010, NMJ-P1020, NMJ-P1030, NMJ-P1040 | 251d |
| NMJ-P1060 |  | Shipping and customs clearance - Al Majma'ah | 25d | 2028-04-23 | 2028-06-01 | NMJ-P1050 | 251d |
| NMJ-P1070 |  | Delivery to station and receiving inspection - Al Majma'ah | 5d | 2028-06-04 | 2028-06-08 | NMJ-P1060 | 251d |
|  | NHL | **Hail (NSR)** |  | 2028-07-24 | 2028-12-24 |  |  |
| NHL-P1100 |  | MS4 Material delivered (20%) - Hail | 0d | 2028-12-24 | 2028-12-24 | NHL-P1070 | 110d |
|  | CCT | **CCTV system** |  | 2028-07-24 | 2028-10-29 |  |  |
| NHL-P1010 |  | Manufacture CCTV cameras and analytics - Hail | 70d | 2028-07-24 | 2028-10-29 | NHL-E1210 | 110d |
|  | VMS | **Video management and video wall** |  | 2028-07-24 | 2028-10-29 |  |  |
| NHL-P1020 |  | Manufacture video management servers, storage and video wall - Hail | 70d | 2028-07-24 | 2028-10-29 | NHL-E1210 | 110d |
|  | ACC | **Access control and intercom** |  | 2028-07-24 | 2028-10-29 |  |  |
| NHL-P1030 |  | Manufacture access control and intercom equipment - Hail | 70d | 2028-07-24 | 2028-10-29 | NHL-E1210 | 110d |
|  | UPN | **UPS, network and cabinets** |  | 2028-07-24 | 2028-10-29 |  |  |
| NHL-P1040 |  | Manufacture UPS, network switches and field cabinets - Hail | 70d | 2028-07-24 | 2028-10-29 | NHL-E1210 | 110d |
|  | LOG | **FAT and logistics** |  | 2028-10-30 | 2028-12-24 |  |  |
| NHL-P1050 |  | Factory acceptance test at vendor premises - Hail | 10d | 2028-10-30 | 2028-11-12 | NHL-P1010, NHL-P1020, NHL-P1030, NHL-P1040 | 110d |
| NHL-P1060 |  | Shipping and customs clearance - Hail | 25d | 2028-11-13 | 2028-12-17 | NHL-P1050 | 110d |
| NHL-P1070 |  | Delivery to station and receiving inspection - Hail | 5d | 2028-12-18 | 2028-12-24 | NHL-P1060 | 110d |
|  | NJF | **Al Jouf (NSR)** |  | 2028-10-05 | 2029-03-15 |  |  |
| NJF-P1100 |  | MS4 Material delivered (20%) - Al Jouf | 0d | 2029-03-15 | 2029-03-15 | NJF-P1070 | 57d |
|  | CCT | **CCTV system** |  | 2028-10-05 | 2029-01-10 |  |  |
| NJF-P1010 |  | Manufacture CCTV cameras and analytics - Al Jouf | 70d | 2028-10-05 | 2029-01-10 | NJF-E1210 | 57d |

| ID | WBS | Task | Duration | Start | Finish | Predecessors | Total float |
| --- | --- | --- | --- | --- | --- | --- | --- |
|  | VMS | **Video management and video wall** |  | 2028-10-05 | 2029-01-10 |  |  |
| NJF-P1020 |  | Manufacture video management servers, storage and video wall - Al Jouf | 70d | 2028-10-05 | 2029-01-10 | NJF-E1210 | 57d |
|  | ACC | **Access control and intercom** |  | 2028-10-05 | 2029-01-10 |  |  |
| NJF-P1030 |  | Manufacture access control and intercom equipment - Al Jouf | 70d | 2028-10-05 | 2029-01-10 | NJF-E1210 | 57d |
|  | UPN | **UPS, network and cabinets** |  | 2028-10-05 | 2029-01-10 |  |  |
| NJF-P1040 |  | Manufacture UPS, network switches and field cabinets - Al Jouf | 70d | 2028-10-05 | 2029-01-10 | NJF-E1210 | 57d |
|  | LOG | **FAT and logistics** |  | 2029-01-11 | 2029-03-15 |  |  |
| NJF-P1050 |  | Factory acceptance test at vendor premises - Al Jouf | 10d | 2029-01-11 | 2029-01-24 | NJF-P1010, NJF-P1020, NJF-P1030, NJF-P1040 | 57d |
| NJF-P1060 |  | Shipping and customs clearance - Al Jouf | 25d | 2029-01-25 | 2029-03-08 | NJF-P1050 | 57d |
| NJF-P1070 |  | Delivery to station and receiving inspection - Al Jouf | 5d | 2029-03-11 | 2029-03-15 | NJF-P1060 | 57d |
|  | NQR | **Al Qurayyat (NSR)** |  | 2028-11-23 | 2029-05-10 |  |  |
| NQR-P1100 |  | MS4 Material delivered (20%) - Al Qurayyat | 0d | 2029-05-10 | 2029-05-10 | NQR-P1070 | 22d |
|  | CCT | **CCTV system** |  | 2028-11-23 | 2029-03-08 |  |  |
| NQR-P1010 |  | Manufacture CCTV cameras and analytics - Al Qurayyat | 70d | 2028-11-23 | 2029-03-08 | NQR-E1210 | 22d |
|  | VMS | **Video management and video wall** |  | 2028-11-23 | 2029-03-08 |  |  |
| NQR-P1020 |  | Manufacture video management servers, storage and video wall - Al Qurayyat | 70d | 2028-11-23 | 2029-03-08 | NQR-E1210 | 22d |
|  | ACC | **Access control and intercom** |  | 2028-11-23 | 2029-03-08 |  |  |
| NQR-P1030 |  | Manufacture access control and intercom equipment - Al Qurayyat | 70d | 2028-11-23 | 2029-03-08 | NQR-E1210 | 22d |
|  | UPN | **UPS, network and cabinets** |  | 2028-11-23 | 2029-03-08 |  |  |
| NQR-P1040 |  | Manufacture UPS, network switches and field cabinets - Al Qurayyat | 70d | 2028-11-23 | 2029-03-08 | NQR-E1210 | 22d |
|  | LOG | **FAT and logistics** |  | 2029-03-11 | 2029-05-10 |  |  |
| NQR-P1050 |  | Factory acceptance test at vendor premises - Al Qurayyat | 10d | 2029-03-11 | 2029-03-22 | NQR-P1010, NQR-P1020, NQR-P1030, NQR-P1040 | 22d |
| NQR-P1060 |  | Shipping and customs clearance - Al Qurayyat | 25d | 2029-03-25 | 2029-05-03 | NQR-P1050 | 22d |
| NQR-P1070 |  | Delivery to station and receiving inspection - Al Qurayyat | 5d | 2029-05-06 | 2029-05-10 | NQR-P1060 | 22d |
|  | EWR | **EWR - East West Railway** |  | 2027-09-09 | 2028-11-28 |  |  |
|  | EDM | **Dammam (EWR)** |  | 2027-09-09 | 2028-02-10 |  |  |
| EDM-P1100 |  | MS4 Material delivered (20%) - Dammam | 0d | 2028-02-10 | 2028-02-10 | EDM-P1070 | 332d |
|  | CCT | **CCTV system** |  | 2027-09-09 | 2027-12-16 |  |  |
| EDM-P1010 |  | Manufacture CCTV cameras and analytics - Dammam | 70d | 2027-09-09 | 2027-12-16 | EDM-E1210 | 332d |
|  | VMS | **Video management and video wall** |  | 2027-09-09 | 2027-12-16 |  |  |
| EDM-P1020 |  | Manufacture video management servers, storage and video wall - Dammam | 70d | 2027-09-09 | 2027-12-16 | EDM-E1210 | 332d |
|  | ACC | **Access control and intercom** |  | 2027-09-09 | 2027-12-16 |  |  |
| EDM-P1030 |  | Manufacture access control and intercom equipment - Dammam | 70d | 2027-09-09 | 2027-12-16 | EDM-E1210 | 332d |
|  | UPN | **UPS, network and cabinets** |  | 2027-09-09 | 2027-12-16 |  |  |
| EDM-P1040 |  | Manufacture UPS, network switches and field cabinets - Dammam | 70d | 2027-09-09 | 2027-12-16 | EDM-E1210 | 332d |
|  | LOG | **FAT and logistics** |  | 2027-12-19 | 2028-02-10 |  |  |
| EDM-P1050 |  | Factory acceptance test at vendor premises - Dammam | 10d | 2027-12-19 | 2027-12-30 | EDM-P1010, EDM-P1020, EDM-P1030, EDM-P1040 | 332d |
| EDM-P1060 |  | Shipping and customs clearance - Dammam | 25d | 2028-01-02 | 2028-02-03 | EDM-P1050 | 332d |
| EDM-P1070 |  | Delivery to station and receiving inspection - Dammam | 5d | 2028-02-06 | 2028-02-10 | EDM-P1060 | 332d |
|  | EHF | **Hufuf (EWR)** |  | 2027-11-07 | 2028-04-13 |  |  |
| EHF-P1100 |  | MS4 Material delivered (20%) - Hufuf | 0d | 2028-04-13 | 2028-04-13 | EHF-P1070 | 292d |
|  | CCT | **CCTV system** |  | 2027-11-07 | 2028-02-10 |  |  |
| EHF-P1010 |  | Manufacture CCTV cameras and analytics - Hufuf | 70d | 2027-11-07 | 2028-02-10 | EHF-E1210 | 292d |
|  | VMS | **Video management and video wall** |  | 2027-11-07 | 2028-02-10 |  |  |
| EHF-P1020 |  | Manufacture video management servers, storage and video wall - Hufuf | 70d | 2027-11-07 | 2028-02-10 | EHF-E1210 | 292d |
|  | ACC | **Access control and intercom** |  | 2027-11-07 | 2028-02-10 |  |  |
| EHF-P1030 |  | Manufacture access control and intercom equipment - Hufuf | 70d | 2027-11-07 | 2028-02-10 | EHF-E1210 | 292d |
|  | UPN | **UPS, network and cabinets** |  | 2027-11-07 | 2028-02-10 |  |  |
| EHF-P1040 |  | Manufacture UPS, network switches and field cabinets - Hufuf | 70d | 2027-11-07 | 2028-02-10 | EHF-E1210 | 292d |
|  | LOG | **FAT and logistics** |  | 2028-02-13 | 2028-04-13 |  |  |
| EHF-P1050 |  | Factory acceptance test at vendor premises - Hufuf | 10d | 2028-02-13 | 2028-03-02 | EHF-P1010, EHF-P1020, EHF-P1030, EHF-P1040 | 292d |
| EHF-P1060 |  | Shipping and customs clearance - Hufuf | 25d | 2028-03-05 | 2028-04-06 | EHF-P1050 | 292d |
| EHF-P1070 |  | Delivery to station and receiving inspection - Hufuf | 5d | 2028-04-09 | 2028-04-13 | EHF-P1060 | 292d |
|  | EAB | **Abqaiq (EWR)** |  | 2028-06-28 | 2028-11-28 |  |  |
| EAB-P1100 |  | MS4 Material delivered (20%) - Abqaiq | 0d | 2028-11-28 | 2028-11-28 | EAB-P1070 | 138d |
|  | CCT | **CCTV system** |  | 2028-06-28 | 2028-10-03 |  |  |
| EAB-P1010 |  | Manufacture CCTV cameras and analytics - Abqaiq | 70d | 2028-06-28 | 2028-10-03 | EAB-E1210 | 138d |
|  | VMS | **Video management and video wall** |  | 2028-06-28 | 2028-10-03 |  |  |
| EAB-P1020 |  | Manufacture video management servers, storage and video wall - Abqaiq | 70d | 2028-06-28 | 2028-10-03 | EAB-E1210 | 138d |
|  | ACC | **Access control and intercom** |  | 2028-06-28 | 2028-10-03 |  |  |
| EAB-P1030 |  | Manufacture access control and intercom equipment - Abqaiq | 70d | 2028-06-28 | 2028-10-03 | EAB-E1210 | 138d |
|  | UPN | **UPS, network and cabinets** |  | 2028-06-28 | 2028-10-03 |  |  |
| EAB-P1040 |  | Manufacture UPS, network switches and field cabinets - Abqaiq | 70d | 2028-06-28 | 2028-10-03 | EAB-E1210 | 138d |
|  | LOG | **FAT and logistics** |  | 2028-10-04 | 2028-11-28 |  |  |
| EAB-P1050 |  | Factory acceptance test at vendor premises - Abqaiq | 10d | 2028-10-04 | 2028-10-17 | EAB-P1010, EAB-P1020, EAB-P1030, EAB-P1040 | 138d |
| EAB-P1060 |  | Shipping and customs clearance - Abqaiq | 25d | 2028-10-18 | 2028-11-21 | EAB-P1050 | 138d |
| EAB-P1070 |  | Delivery to station and receiving inspection - Abqaiq | 5d | 2028-11-22 | 2028-11-28 | EAB-P1060 | 138d |
|  | HHR | **HHR - Haramain High Speed Rail** |  | 2027-07-15 | 2029-01-02 |  |  |
|  | HJD | **Jeddah (HHR)** |  | 2027-07-15 | 2028-01-27 |  |  |
| HJD-P1100 |  | MS4 Material delivered (20%) - Jeddah | 0d | 2028-01-27 | 2028-01-27 | HJD-P1070 | 267d |

| ID | WBS | Task | Duration | Start | Finish | Predecessors | Total float |
| --- | --- | --- | --- | --- | --- | --- | --- |
|  | CCT | **CCTV system** |  | 2027-07-15 | 2027-11-18 |  |  |
| HJD-P1010 |  | Manufacture CCTV cameras and analytics - Jeddah | 90d | 2027-07-15 | 2027-11-18 | HJD-E1210 | 267d |
|  | VMS | **Video management and video wall** |  | 2027-07-15 | 2027-11-18 |  |  |
| HJD-P1020 |  | Manufacture video management servers, storage and video wall - Jeddah | 90d | 2027-07-15 | 2027-11-18 | HJD-E1210 | 267d |
|  | ACC | **Access control and intercom** |  | 2027-07-15 | 2027-11-18 |  |  |
| HJD-P1030 |  | Manufacture access control and intercom equipment - Jeddah | 90d | 2027-07-15 | 2027-11-18 | HJD-E1210 | 267d |
|  | UPN | **UPS, network and cabinets** |  | 2027-07-15 | 2027-11-18 |  |  |
| HJD-P1040 |  | Manufacture UPS, network switches and field cabinets - Jeddah | 90d | 2027-07-15 | 2027-11-18 | HJD-E1210 | 267d |
|  | LOG | **FAT and logistics** |  | 2027-11-21 | 2028-01-27 |  |  |
| HJD-P1050 |  | Factory acceptance test at vendor premises - Jeddah | 10d | 2027-11-21 | 2027-12-02 | HJD-P1010, HJD-P1020, HJD-P1030, HJD-P1040 | 267d |
| HJD-P1060 |  | Shipping and customs clearance - Jeddah | 35d | 2027-12-05 | 2028-01-20 | HJD-P1050 | 267d |
| HJD-P1070 |  | Delivery to station and receiving inspection - Jeddah | 5d | 2028-01-23 | 2028-01-27 | HJD-P1060 | 267d |
|  | HMK | **Makkah (HHR)** |  | 2028-02-06 | 2028-08-31 |  |  |
| HMK-P1100 |  | MS4 Material delivered (20%) - Makkah | 0d | 2028-08-31 | 2028-08-31 | HMK-P1070 | 106d |
|  | CCT | **CCTV system** |  | 2028-02-06 | 2028-06-22 |  |  |
| HMK-P1010 |  | Manufacture CCTV cameras and analytics - Makkah | 90d | 2028-02-06 | 2028-06-22 | HMK-E1210 | 106d |
|  | VMS | **Video management and video wall** |  | 2028-02-06 | 2028-06-22 |  |  |
| HMK-P1020 |  | Manufacture video management servers, storage and video wall - Makkah | 90d | 2028-02-06 | 2028-06-22 | HMK-E1210 | 106d |
|  | ACC | **Access control and intercom** |  | 2028-02-06 | 2028-06-22 |  |  |
| HMK-P1030 |  | Manufacture access control and intercom equipment - Makkah | 90d | 2028-02-06 | 2028-06-22 | HMK-E1210 | 106d |
|  | UPN | **UPS, network and cabinets** |  | 2028-02-06 | 2028-06-22 |  |  |
| HMK-P1040 |  | Manufacture UPS, network switches and field cabinets - Makkah | 90d | 2028-02-06 | 2028-06-22 | HMK-E1210 | 106d |
|  | LOG | **FAT and logistics** |  | 2028-06-25 | 2028-08-31 |  |  |
| HMK-P1050 |  | Factory acceptance test at vendor premises - Makkah | 10d | 2028-06-25 | 2028-07-06 | HMK-P1010, HMK-P1020, HMK-P1030, HMK-P1040 | 106d |
| HMK-P1060 |  | Shipping and customs clearance - Makkah | 35d | 2028-07-09 | 2028-08-24 | HMK-P1050 | 106d |
| HMK-P1070 |  | Delivery to station and receiving inspection - Makkah | 5d | 2028-08-27 | 2028-08-31 | HMK-P1060 | 106d |
|  | HKA | **KAEC (HHR)** |  | 2028-06-21 | 2029-01-02 |  |  |
| HKA-P1100 |  | MS4 Material delivered (20%) - KAEC | 0d | 2029-01-02 | 2029-01-02 | HKA-P1070 | 58d |
|  | CCT | **CCTV system** |  | 2028-06-21 | 2028-10-24 |  |  |
| HKA-P1010 |  | Manufacture CCTV cameras and analytics - KAEC | 90d | 2028-06-21 | 2028-10-24 | HKA-E1210 | 58d |
|  | VMS | **Video management and video wall** |  | 2028-06-21 | 2028-10-24 |  |  |
| HKA-P1020 |  | Manufacture video management servers, storage and video wall - KAEC | 90d | 2028-06-21 | 2028-10-24 | HKA-E1210 | 58d |
|  | ACC | **Access control and intercom** |  | 2028-06-21 | 2028-10-24 |  |  |
| HKA-P1030 |  | Manufacture access control and intercom equipment - KAEC | 90d | 2028-06-21 | 2028-10-24 | HKA-E1210 | 58d |
|  | UPN | **UPS, network and cabinets** |  | 2028-06-21 | 2028-10-24 |  |  |
| HKA-P1040 |  | Manufacture UPS, network switches and field cabinets - KAEC | 90d | 2028-06-21 | 2028-10-24 | HKA-E1210 | 58d |
|  | LOG | **FAT and logistics** |  | 2028-10-25 | 2029-01-02 |  |  |
| HKA-P1050 |  | Factory acceptance test at vendor premises - KAEC | 10d | 2028-10-25 | 2028-11-07 | HKA-P1010, HKA-P1020, HKA-P1030, HKA-P1040 | 58d |
| HKA-P1060 |  | Shipping and customs clearance - KAEC | 35d | 2028-11-08 | 2028-12-26 | HKA-P1050 | 58d |
| HKA-P1070 |  | Delivery to station and receiving inspection - KAEC | 5d | 2028-12-27 | 2029-01-02 | HKA-P1060 | 58d |
|  | HMD | **Madinah (HHR)** |  | 2028-06-21 | 2029-01-02 |  |  |
| HMD-P1100 |  | MS4 Material delivered (20%) - Madinah | 0d | 2029-01-02 | 2029-01-02 | HMD-P1070 | 54d |
|  | CCT | **CCTV system** |  | 2028-06-21 | 2028-10-24 |  |  |
| HMD-P1010 |  | Manufacture CCTV cameras and analytics - Madinah | 90d | 2028-06-21 | 2028-10-24 | HMD-E1210 | 54d |
|  | VMS | **Video management and video wall** |  | 2028-06-21 | 2028-10-24 |  |  |
| HMD-P1020 |  | Manufacture video management servers, storage and video wall - Madinah | 90d | 2028-06-21 | 2028-10-24 | HMD-E1210 | 54d |
|  | ACC | **Access control and intercom** |  | 2028-06-21 | 2028-10-24 |  |  |
| HMD-P1030 |  | Manufacture access control and intercom equipment - Madinah | 90d | 2028-06-21 | 2028-10-24 | HMD-E1210 | 54d |
|  | UPN | **UPS, network and cabinets** |  | 2028-06-21 | 2028-10-24 |  |  |
| HMD-P1040 |  | Manufacture UPS, network switches and field cabinets - Madinah | 90d | 2028-06-21 | 2028-10-24 | HMD-E1210 | 54d |
|  | LOG | **FAT and logistics** |  | 2028-10-25 | 2029-01-02 |  |  |
| HMD-P1050 |  | Factory acceptance test at vendor premises - Madinah | 10d | 2028-10-25 | 2028-11-07 | HMD-P1010, HMD-P1020, HMD-P1030, HMD-P1040 | 54d |
| HMD-P1060 |  | Shipping and customs clearance - Madinah | 35d | 2028-11-08 | 2028-12-26 | HMD-P1050 | 54d |
| HMD-P1070 |  | Delivery to station and receiving inspection - Madinah | 5d | 2028-12-27 | 2029-01-02 | HMD-P1060 | 54d |
|  | CON | **Construction** |  | 2027-03-01 | 2029-07-01 |  |  |
|  | RYD | **Riyadh priority stations (NSR + EWR)** |  | 2027-03-01 | 2027-09-27 |  |  |
|  | NRY | **Riyadh (Thumamah) (NSR)** |  | 2027-03-01 | 2027-09-20 |  |  |
| NRY-C2100 |  | MS5 Installation complete (20%) - Riyadh (Thumamah) | 0d | 2027-09-20 | 2027-09-20 | NRY-C2020, NRY-C2030, NRY-C2040, NRY-C2050, NRY-C1020 | 464d |
|  | CIV | **Civil works** |  | 2027-03-01 | 2027-07-11 |  |  |
| NRY-C1010 |  | Civil: platform trenches and duct banks - Riyadh (Thumamah) | 59d | 2027-03-01 | 2027-06-03 | NRY-E1210 | 501d |
| NRY-C1020 |  | Civil: camera and ALPR pole foundations and poles - Riyadh (Thumamah) | 47d | 2027-04-29 | 2027-07-11 | NRY-C1010 SS+38d | 501d |
|  | INS | **Installation** |  | 2027-08-02 | 2027-09-20 |  |  |
| NRY-C2010 |  | Install UPS, network switches and field cabinets - Riyadh (Thumamah) | 11d | 2027-08-02 | 2027-08-16 | NRY-P1100 | 464d |
| NRY-C2020 |  | Cabling and termination (power, fibre, data) - Riyadh (Thumamah) | 18d | 2027-08-08 | 2027-08-31 | NRY-C2010 SS+4d, NRY-C1010 SS+43d | 464d |
| NRY-C2040 |  | Install video management, video wall and control-room equipment - Riyadh (Thumamah) | 12d | 2027-08-17 | 2027-09-01 | NRY-C2010 | 477d |
| NRY-C2050 |  | Install access control and intercom - Riyadh (Thumamah) | 11d | 2027-08-23 | 2027-09-06 | NRY-C2010 FS+4d | 474d |
| NRY-C2030 |  | Install and aim CCTV cameras - Riyadh (Thumamah) | 14d | 2027-09-01 | 2027-09-20 | NRY-C2020, NRY-C1020 | 464d |
|  | ERY | **Riyadh (Malaz) (EWR)** |  | 2027-03-22 | 2027-09-27 |  |  |
| ERY-C2100 |  | MS5 Installation complete (20%) - Riyadh (Malaz) | 0d | 2027-09-27 | 2027-09-27 | ERY-C2020, ERY-C2030, ERY-C2040, ERY-C2050, ERY-C1020 | 460d |
|  | CIV | **Civil works** |  | 2027-03-22 | 2027-07-18 |  |  |

| ID | WBS | Task | Duration | Start | Finish | Predecessors | Total float |
| --- | --- | --- | --- | --- | --- | --- | --- |
| ERY-C1010 |  | Civil: platform trenches and duct banks - Riyadh (Malaz) | 56d | 2027-03-22 | 2027-06-14 | ERY-E1210 | 498d |
| ERY-C1020 |  | Civil: camera and ALPR pole foundations and poles - Riyadh (Malaz) | 44d | 2027-05-11 | 2027-07-18 | ERY-C1010 SS+36d | 498d |
|  | INS | **Installation** |  | 2027-08-16 | 2027-09-27 |  |  |
| ERY-C2010 |  | Install UPS, network switches and field cabinets - Riyadh (Malaz) | 9d | 2027-08-16 | 2027-08-26 | ERY-P1100 | 460d |
| ERY-C2020 |  | Cabling and termination (power, fibre, data) - Riyadh (Malaz) | 15d | 2027-08-19 | 2027-09-08 | ERY-C2010 SS+3d, ERY-C1010 SS+40d | 460d |
| ERY-C2040 |  | Install video management, video wall and control-room equipment - Riyadh (Malaz) | 11d | 2027-08-29 | 2027-09-12 | ERY-C2010 | 470d |
| ERY-C2050 |  | Install access control and intercom - Riyadh (Malaz) | 9d | 2027-09-01 | 2027-09-13 | ERY-C2010 FS+3d | 469d |
| ERY-C2030 |  | Install and aim CCTV cameras - Riyadh (Malaz) | 12d | 2027-09-09 | 2027-09-27 | ERY-C2020, ERY-C1020 | 460d |
|  | NSR | **NSR - North South Railway** |  | 2027-11-07 | 2029-07-01 |  |  |
|  | NQS | **Al Qassim (NSR)** |  | 2027-11-07 | 2028-06-11 |  |  |
| NQS-C2100 |  | MS5 Installation complete (20%) - Al Qassim | 0d | 2028-06-11 | 2028-06-11 | NQS-C2020, NQS-C2030, NQS-C2040, NQS-C2050, NQS-C1020 | 286d |
|  | CIV | **Civil works** |  | 2027-11-07 | 2028-03-09 |  |  |
| NQS-C1010 |  | Civil: platform trenches and duct banks - Al Qassim | 59d | 2027-11-07 | 2028-01-26 | NQS-E1210 | 333d |
| NQS-C1020 |  | Civil: camera and ALPR pole foundations and poles - Al Qassim | 47d | 2027-12-29 | 2028-03-09 | NQS-C1010 SS+38d | 333d |
|  | INS | **Installation** |  | 2028-04-16 | 2028-06-11 |  |  |
| NQS-C2010 |  | Install UPS, network switches and field cabinets - Al Qassim | 11d | 2028-04-16 | 2028-05-07 | NQS-P1100 | 286d |
| NQS-C2020 |  | Cabling and termination (power, fibre, data) - Al Qassim | 18d | 2028-04-20 | 2028-05-22 | NQS-C2010 SS+4d, NQS-C1010 SS+43d | 286d |
| NQS-C2040 |  | Install video management, video wall and control-room equipment - Al Qassim | 12d | 2028-05-08 | 2028-05-23 | NQS-C2010 | 299d |
| NQS-C2050 |  | Install access control and intercom - Al Qassim | 11d | 2028-05-14 | 2028-05-28 | NQS-C2010 FS+4d | 296d |
| NQS-C2030 |  | Install and aim CCTV cameras - Al Qassim | 14d | 2028-05-23 | 2028-06-11 | NQS-C2020, NQS-C1020 | 286d |
|  | NMJ | **Al Majma'ah (NSR)** |  | 2027-12-26 | 2028-07-30 |  |  |
| NMJ-C2100 |  | MS5 Installation complete (20%) - Al Majma'ah | 0d | 2028-07-30 | 2028-07-30 | NMJ-C2020, NMJ-C2030, NMJ-C2040, NMJ-C2050, NMJ-C1020 | 251d |
|  | CIV | **Civil works** |  | 2027-12-26 | 2028-04-27 |  |  |
| NMJ-C1010 |  | Civil: platform trenches and duct banks - Al Majma'ah | 59d | 2027-12-26 | 2028-03-22 | NMJ-E1210 | 298d |
| NMJ-C1020 |  | Civil: camera and ALPR pole foundations and poles - Al Majma'ah | 47d | 2028-02-16 | 2028-04-27 | NMJ-C1010 SS+38d | 298d |
|  | INS | **Installation** |  | 2028-06-11 | 2028-07-30 |  |  |
| NMJ-C2010 |  | Install UPS, network switches and field cabinets - Al Majma'ah | 11d | 2028-06-11 | 2028-06-25 | NMJ-P1100 | 251d |
| NMJ-C2020 |  | Cabling and termination (power, fibre, data) - Al Majma'ah | 18d | 2028-06-15 | 2028-07-10 | NMJ-C2010 SS+4d, NMJ-C1010 SS+43d | 251d |
| NMJ-C2040 |  | Install video management, video wall and control-room equipment - Al Majma'ah | 12d | 2028-06-26 | 2028-07-11 | NMJ-C2010 | 264d |
| NMJ-C2050 |  | Install access control and intercom - Al Majma'ah | 11d | 2028-07-02 | 2028-07-16 | NMJ-C2010 FS+4d | 261d |
| NMJ-C2030 |  | Install and aim CCTV cameras - Al Majma'ah | 14d | 2028-07-11 | 2028-07-30 | NMJ-C2020, NMJ-C1020 | 251d |
|  | NHL | **Hail (NSR)** |  | 2028-07-24 | 2029-02-19 |  |  |
| NHL-C2100 |  | MS5 Installation complete (20%) - Hail | 0d | 2029-02-19 | 2029-02-19 | NHL-C2020, NHL-C2030, NHL-C2040, NHL-C2050, NHL-C1020 | 110d |
|  | CIV | **Civil works** |  | 2028-07-24 | 2028-11-19 |  |  |
| NHL-C1010 |  | Civil: platform trenches and duct banks - Hail | 59d | 2028-07-24 | 2028-10-12 | NHL-E1210 | 157d |
| NHL-C1020 |  | Civil: camera and ALPR pole foundations and poles - Hail | 47d | 2028-09-14 | 2028-11-19 | NHL-C1010 SS+38d | 157d |
|  | INS | **Installation** |  | 2028-12-25 | 2029-02-19 |  |  |
| NHL-C2010 |  | Install UPS, network switches and field cabinets - Hail | 11d | 2028-12-25 | 2029-01-08 | NHL-P1100 | 110d |
| NHL-C2020 |  | Cabling and termination (power, fibre, data) - Hail | 18d | 2028-12-31 | 2029-01-23 | NHL-C2010 SS+4d, NHL-C1010 SS+43d | 110d |
| NHL-C2040 |  | Install video management, video wall and control-room equipment - Hail | 12d | 2029-01-09 | 2029-01-24 | NHL-C2010 | 123d |
| NHL-C2050 |  | Install access control and intercom - Hail | 11d | 2029-01-15 | 2029-01-29 | NHL-C2010 FS+4d | 120d |
| NHL-C2030 |  | Install and aim CCTV cameras - Hail | 14d | 2029-01-24 | 2029-02-19 | NHL-C2020, NHL-C1020 | 110d |
|  | NJF | **Al Jouf (NSR)** |  | 2028-10-05 | 2029-05-13 |  |  |
| NJF-C2100 |  | MS5 Installation complete (20%) - Al Jouf | 0d | 2029-05-13 | 2029-05-13 | NJF-C2020, NJF-C2030, NJF-C2040, NJF-C2050, NJF-C1020 | 57d |
|  | CIV | **Civil works** |  | 2028-10-05 | 2029-01-31 |  |  |
| NJF-C1010 |  | Civil: platform trenches and duct banks - Al Jouf | 59d | 2028-10-05 | 2028-12-26 | NJF-E1210 | 104d |
| NJF-C1020 |  | Civil: camera and ALPR pole foundations and poles - Al Jouf | 47d | 2028-11-28 | 2029-01-31 | NJF-C1010 SS+38d | 104d |
|  | INS | **Installation** |  | 2029-03-18 | 2029-05-13 |  |  |
| NJF-C2010 |  | Install UPS, network switches and field cabinets - Al Jouf | 11d | 2029-03-18 | 2029-04-01 | NJF-P1100 | 57d |
| NJF-C2020 |  | Cabling and termination (power, fibre, data) - Al Jouf | 18d | 2029-03-22 | 2029-04-16 | NJF-C2010 SS+4d, NJF-C1010 SS+43d | 57d |
| NJF-C2040 |  | Install video management, video wall and control-room equipment - Al Jouf | 12d | 2029-04-02 | 2029-04-17 | NJF-C2010 | 70d |
| NJF-C2050 |  | Install access control and intercom - Al Jouf | 11d | 2029-04-08 | 2029-04-29 | NJF-C2010 FS+4d | 67d |
| NJF-C2030 |  | Install and aim CCTV cameras - Al Jouf | 14d | 2029-04-17 | 2029-05-13 | NJF-C2020, NJF-C1020 | 57d |
|  | NQR | **Al Qurayyat (NSR)** |  | 2028-11-23 | 2029-07-01 |  |  |
| NQR-C2100 |  | MS5 Installation complete (20%) - Al Qurayyat | 0d | 2029-07-01 | 2029-07-01 | NQR-C2020, NQR-C2030, NQR-C2040, NQR-C2050, NQR-C1020 | 22d |
|  | CIV | **Civil works** |  | 2028-11-23 | 2029-03-29 |  |  |
| NQR-C1010 |  | Civil: platform trenches and duct banks - Al Qurayyat | 59d | 2028-11-23 | 2029-02-20 | NQR-E1210 | 69d |
| NQR-C1020 |  | Civil: camera and ALPR pole foundations and poles - Al Qurayyat | 47d | 2029-01-16 | 2029-03-29 | NQR-C1010 SS+38d | 69d |
|  | INS | **Installation** |  | 2029-05-13 | 2029-07-01 |  |  |
| NQR-C2010 |  | Install UPS, network switches and field cabinets - Al Qurayyat | 11d | 2029-05-13 | 2029-05-27 | NQR-P1100 | 22d |
| NQR-C2020 |  | Cabling and termination (power, fibre, data) - Al Qurayyat | 18d | 2029-05-17 | 2029-06-11 | NQR-C2010 SS+4d, NQR-C1010 SS+43d | 22d |
| NQR-C2040 |  | Install video management, video wall and control-room equipment - Al Qurayyat | 12d | 2029-05-28 | 2029-06-12 | NQR-C2010 | 35d |
| NQR-C2050 |  | Install access control and intercom - Al Qurayyat | 11d | 2029-06-03 | 2029-06-17 | NQR-C2010 FS+4d | 32d |
| NQR-C2030 |  | Install and aim CCTV cameras - Al Qurayyat | 14d | 2029-06-12 | 2029-07-01 | NQR-C2020, NQR-C1020 | 22d |
|  | EWR | **EWR - East West Railway** |  | 2027-09-09 | 2029-01-03 |  |  |
|  | EDM | **Dammam (EWR)** |  | 2027-09-09 | 2028-03-30 |  |  |
| EDM-C2100 |  | MS5 Installation complete (20%) - Dammam | 0d | 2028-03-30 | 2028-03-30 | EDM-C2020, EDM-C2030, EDM-C2040, EDM-C2050, EDM-C1020 | 332d |
|  | CIV | **Civil works** |  | 2027-09-09 | 2027-12-30 |  |  |
| EDM-C1010 |  | Civil: platform trenches and duct banks - Dammam | 56d | 2027-09-09 | 2027-11-28 | EDM-E1210 | 380d |
| EDM-C1020 |  | Civil: camera and ALPR pole foundations and poles - Dammam | 44d | 2027-11-01 | 2027-12-30 | EDM-C1010 SS+36d | 380d |

| ID | WBS | Task | Duration | Start | Finish | Predecessors | Total float |
| --- | --- | --- | --- | --- | --- | --- | --- |
|  | INS | **Installation** |  | 2028-02-13 | 2028-03-30 |  |  |
| EDM-C2010 |  | Install UPS, network switches and field cabinets - Dammam | 9d | 2028-02-13 | 2028-03-01 | EDM-P1100 | 332d |
| EDM-C2020 |  | Cabling and termination (power, fibre, data) - Dammam | 15d | 2028-02-16 | 2028-03-14 | EDM-C2010 SS+3d, EDM-C1010 SS+40d | 332d |
| EDM-C2040 |  | Install video management, video wall and control-room equipment - Dammam | 11d | 2028-03-02 | 2028-03-16 | EDM-C2010 | 342d |
| EDM-C2050 |  | Install access control and intercom - Dammam | 9d | 2028-03-07 | 2028-03-19 | EDM-C2010 FS+3d | 341d |
| EDM-C2030 |  | Install and aim CCTV cameras - Dammam | 12d | 2028-03-15 | 2028-03-30 | EDM-C2020, EDM-C1020 | 332d |
|  | EHF | **Hufuf (EWR)** |  | 2027-11-07 | 2028-06-01 |  |  |
| EHF-C2100 |  | MS5 Installation complete (20%) - Hufuf | 0d | 2028-06-01 | 2028-06-01 | EHF-C2020, EHF-C2030, EHF-C2040, EHF-C2050, EHF-C1020 | 292d |
|  | CIV | **Civil works** |  | 2027-11-07 | 2028-02-17 |  |  |
| EHF-C1010 |  | Civil: platform trenches and duct banks - Hufuf | 53d | 2027-11-07 | 2028-01-18 | EHF-E1210 | 345d |
| EHF-C1020 |  | Civil: camera and ALPR pole foundations and poles - Hufuf | 41d | 2027-12-23 | 2028-02-17 | EHF-C1010 SS+34d | 345d |
|  | INS | **Installation** |  | 2028-04-16 | 2028-06-01 |  |  |
| EHF-C2010 |  | Install UPS, network switches and field cabinets - Hufuf | 9d | 2028-04-16 | 2028-04-26 | EHF-P1100 | 292d |
| EHF-C2020 |  | Cabling and termination (power, fibre, data) - Hufuf | 15d | 2028-04-19 | 2028-05-16 | EHF-C2010 SS+3d, EHF-C1010 SS+38d | 292d |
| EHF-C2040 |  | Install video management, video wall and control-room equipment - Hufuf | 11d | 2028-04-27 | 2028-05-18 | EHF-C2010 | 302d |
| EHF-C2050 |  | Install access control and intercom - Hufuf | 9d | 2028-05-09 | 2028-05-21 | EHF-C2010 FS+3d | 301d |
| EHF-C2030 |  | Install and aim CCTV cameras - Hufuf | 12d | 2028-05-17 | 2028-06-01 | EHF-C2020, EHF-C1020 | 292d |
|  | EAB | **Abqaiq (EWR)** |  | 2028-06-28 | 2029-01-03 |  |  |
| EAB-C2100 |  | MS5 Installation complete (20%) - Abqaiq | 0d | 2029-01-03 | 2029-01-03 | EAB-C2020, EAB-C2030, EAB-C2040, EAB-C2050, EAB-C1020 | 138d |
|  | CIV | **Civil works** |  | 2028-06-28 | 2028-09-12 |  |  |
| EAB-C1010 |  | Civil: platform trenches and duct banks - Abqaiq | 39d | 2028-06-28 | 2028-08-21 | EAB-E1210 | 209d |
| EAB-C1020 |  | Civil: camera and ALPR pole foundations and poles - Abqaiq | 30d | 2028-08-02 | 2028-09-12 | EAB-C1010 SS+25d | 209d |
|  | INS | **Installation** |  | 2028-11-29 | 2029-01-03 |  |  |
| EAB-C2010 |  | Install UPS, network switches and field cabinets - Abqaiq | 8d | 2028-11-29 | 2028-12-10 | EAB-P1100 | 138d |
| EAB-C2020 |  | Cabling and termination (power, fibre, data) - Abqaiq | 13d | 2028-12-04 | 2028-12-20 | EAB-C2010 SS+3d, EAB-C1010 SS+28d | 138d |
| EAB-C2040 |  | Install video management, video wall and control-room equipment - Abqaiq | 9d | 2028-12-11 | 2028-12-21 | EAB-C2010 | 147d |
| EAB-C2050 |  | Install access control and intercom - Abqaiq | 8d | 2028-12-14 | 2028-12-25 | EAB-C2010 FS+3d | 145d |
| EAB-C2030 |  | Install and aim CCTV cameras - Abqaiq | 10d | 2028-12-21 | 2029-01-03 | EAB-C2020, EAB-C1020 | 138d |
|  | HHR | **HHR - Haramain High Speed Rail** |  | 2027-07-15 | 2029-04-18 |  |  |
|  | HJD | **Jeddah (HHR)** |  | 2027-07-15 | 2028-06-15 |  |  |
| HJD-C2100 |  | MS5 Installation complete (20%) - Jeddah | 0d | 2028-06-15 | 2028-06-15 | HJD-C2020, HJD-C2030, HJD-C2040, HJD-C2050, HJD-C1020 | 267d |
|  | CIV | **Civil works** |  | 2027-07-15 | 2027-10-14 |  |  |
| HJD-C1010 |  | Civil: platform trenches and duct banks - Jeddah | 46d | 2027-07-15 | 2027-09-16 | HJD-E1210 | 383d |
| HJD-C1020 |  | Civil: camera and ALPR pole foundations and poles - Jeddah | 36d | 2027-08-25 | 2027-10-14 | HJD-C1010 SS+29d | 396d |
|  | INS | **Installation** |  | 2028-01-30 | 2028-06-15 |  |  |
| HJD-C2010 |  | Install UPS, network switches and field cabinets - Jeddah | 27d | 2028-01-30 | 2028-03-13 | HJD-P1100 | 267d |
| HJD-C2020 |  | Cabling and termination (power, fibre, data) - Jeddah | 45d | 2028-02-10 | 2028-04-19 | HJD-C2010 SS+9d, HJD-C1010 SS+33d | 267d |
| HJD-C2040 |  | Install video management, video wall and control-room equipment - Jeddah | 31d | 2028-03-14 | 2028-04-25 | HJD-C2010 | 299d |
| HJD-C2050 |  | Install access control and intercom - Jeddah | 27d | 2028-03-27 | 2028-05-09 | HJD-C2010 FS+9d | 294d |
| HJD-C2030 |  | Install and aim CCTV cameras - Jeddah | 36d | 2028-04-20 | 2028-06-15 | HJD-C2020, HJD-C1020 | 267d |
|  | HMK | **Makkah (HHR)** |  | 2028-02-06 | 2029-01-28 |  |  |
| HMK-C2100 |  | MS5 Installation complete (20%) - Makkah | 0d | 2029-01-28 | 2029-01-28 | HMK-C2020, HMK-C2030, HMK-C2040, HMK-C2050, HMK-C1020 | 106d |
|  | CIV | **Civil works** |  | 2028-02-06 | 2028-05-28 |  |  |
| HMK-C1010 |  | Civil: platform trenches and duct banks - Makkah | 49d | 2028-02-06 | 2028-04-19 | HMK-E1210 | 222d |
| HMK-C1020 |  | Civil: camera and ALPR pole foundations and poles - Makkah | 39d | 2028-03-28 | 2028-05-28 | HMK-C1010 SS+32d | 239d |
|  | INS | **Installation** |  | 2028-09-03 | 2029-01-28 |  |  |
| HMK-C2010 |  | Install UPS, network switches and field cabinets - Makkah | 32d | 2028-09-03 | 2028-10-16 | HMK-P1100 | 106d |
| HMK-C2020 |  | Cabling and termination (power, fibre, data) - Makkah | 53d | 2028-09-18 | 2028-11-29 | HMK-C2010 SS+11d, HMK-C1010 SS+35d | 106d |
| HMK-C2040 |  | Install video management, video wall and control-room equipment - Makkah | 37d | 2028-10-17 | 2028-12-06 | HMK-C2010 | 143d |
| HMK-C2050 |  | Install access control and intercom - Makkah | 32d | 2028-11-01 | 2028-12-14 | HMK-C2010 FS+11d | 137d |
| HMK-C2030 |  | Install and aim CCTV cameras - Makkah | 42d | 2028-11-30 | 2029-01-28 | HMK-C2020, HMK-C1020 | 106d |
|  | HKA | **KAEC (HHR)** |  | 2028-06-21 | 2029-04-12 |  |  |
| HKA-C2100 |  | MS5 Installation complete (20%) - KAEC | 0d | 2029-04-12 | 2029-04-12 | HKA-C2020, HKA-C2030, HKA-C2040, HKA-C2050, HKA-C1020 | 58d |
|  | CIV | **Civil works** |  | 2028-06-21 | 2028-08-22 |  |  |
| HKA-C1010 |  | Civil: platform trenches and duct banks - KAEC | 31d | 2028-06-21 | 2028-08-02 | HKA-E1210 | 182d |
| HKA-C1020 |  | Civil: camera and ALPR pole foundations and poles - KAEC | 25d | 2028-07-19 | 2028-08-22 | HKA-C1010 SS+20d | 193d |
|  | INS | **Installation** |  | 2029-01-03 | 2029-04-12 |  |  |
| HKA-C2010 |  | Install UPS, network switches and field cabinets - KAEC | 20d | 2029-01-03 | 2029-01-30 | HKA-P1100 | 58d |
| HKA-C2020 |  | Cabling and termination (power, fibre, data) - KAEC | 33d | 2029-01-14 | 2029-03-07 | HKA-C2010 SS+7d, HKA-C1010 SS+23d | 58d |
| HKA-C2040 |  | Install video management, video wall and control-room equipment - KAEC | 23d | 2029-01-31 | 2029-03-12 | HKA-C2010 | 81d |
| HKA-C2050 |  | Install access control and intercom - KAEC | 20d | 2029-02-18 | 2029-03-18 | HKA-C2010 FS+7d | 77d |
| HKA-C2030 |  | Install and aim CCTV cameras - KAEC | 26d | 2029-03-08 | 2029-04-12 | HKA-C2020, HKA-C1020 | 58d |
|  | HMD | **Madinah (HHR)** |  | 2028-06-21 | 2029-04-18 |  |  |
| HMD-C2100 |  | MS5 Installation complete (20%) - Madinah | 0d | 2029-04-18 | 2029-04-18 | HMD-C2020, HMD-C2030, HMD-C2040, HMD-C2050, HMD-C1020 | 54d |
|  | CIV | **Civil works** |  | 2028-06-21 | 2028-08-30 |  |  |
| HMD-C1010 |  | Civil: platform trenches and duct banks - Madinah | 35d | 2028-06-21 | 2028-08-08 | HMD-E1210 | 176d |
| HMD-C1020 |  | Civil: camera and ALPR pole foundations and poles - Madinah | 28d | 2028-07-24 | 2028-08-30 | HMD-C1010 SS+23d | 185d |
|  | INS | **Installation** |  | 2029-01-03 | 2029-04-18 |  |  |
| HMD-C2010 |  | Install UPS, network switches and field cabinets - Madinah | 21d | 2029-01-03 | 2029-01-31 | HMD-P1100 | 54d |
| HMD-C2020 |  | Cabling and termination (power, fibre, data) - Madinah | 35d | 2029-01-14 | 2029-03-11 | HMD-C2010 SS+7d, HMD-C1010 SS+25d | 54d |

| ID | WBS | Task | Duration | Start | Finish | Predecessors | Total float |
| --- | --- | --- | --- | --- | --- | --- | --- |
| HMD-C2040 |  | Install video management, video wall and control-room equipment - Madinah | 25d | 2029-02-01 | 2029-03-15 | HMD-C2010 | 78d |
| HMD-C2050 |  | Install access control and intercom - Madinah | 21d | 2029-02-19 | 2029-03-20 | HMD-C2010 FS+7d | 75d |
| HMD-C2030 |  | Install and aim CCTV cameras - Madinah | 28d | 2029-03-12 | 2029-04-18 | HMD-C2020, HMD-C1020 | 54d |
|  | COM | **Commissioning and Handover** |  | 2027-09-21 | 2029-09-16 |  |  |
|  | RYD | **Riyadh priority stations (NSR + EWR)** |  | 2027-09-21 | 2027-12-13 |  |  |
|  | NRY | **Riyadh (Thumamah) (NSR)** |  | 2027-09-21 | 2027-12-07 |  |  |
| NRY-T1100 |  | MS6 SAT complete (10%) - Riyadh (Thumamah) | 0d | 2027-10-12 | 2027-10-12 | NRY-T1020 | 494d |
| NRY-T3100 |  | MS7 Station accepted - final acceptance and handover (10%) - Riyadh (Thumamah) | 0d | 2027-12-07 | 2027-12-07 | NRY-T3010 | 464d |
|  | TST | **Testing and commissioning** |  | 2027-09-21 | 2027-10-12 |  |  |
| NRY-T1010 |  | Pre-commissioning and loop checks - Riyadh (Thumamah) | 6d | 2027-09-21 | 2027-09-29 | NRY-C2100 | 464d |
| NRY-T1020 |  | Site acceptance test (SAT) and commissioning - Riyadh (Thumamah) | 9d | 2027-09-30 | 2027-10-12 | NRY-T1010 | 464d |
|  | TRN | **Training** |  | 2027-10-13 | 2027-10-26 |  |  |
| NRY-T2010 |  | Operator and maintenance training - Riyadh (Thumamah) | 10d | 2027-10-13 | 2027-10-26 | NRY-T1020 | 484d |
|  | TOA | **Trial operation and acceptance** |  | 2027-10-13 | 2027-12-07 |  |  |
| NRY-T2020 |  | Trial operation (maximum 45 days) - Riyadh (Thumamah) | 30d | 2027-10-13 | 2027-11-23 | NRY-T1020 | 464d |
| NRY-T3010 |  | Taking-over application, SAR review and handover - Riyadh (Thumamah) | 10d | 2027-11-24 | 2027-12-07 | NRY-T1100, NRY-T2010, NRY-T2020, NRY-E1140 | 464d |
|  | ERY | **Riyadh (Malaz) (EWR)** |  | 2027-09-28 | 2027-12-13 |  |  |
| ERY-T1100 |  | MS6 SAT complete (10%) - Riyadh (Malaz) | 0d | 2027-10-18 | 2027-10-18 | ERY-T1020 | 490d |
| ERY-T3100 |  | MS7 Station accepted - final acceptance and handover (10%) - Riyadh (Malaz) | 0d | 2027-12-13 | 2027-12-13 | ERY-T3010 | 460d |
|  | TST | **Testing and commissioning** |  | 2027-09-28 | 2027-10-18 |  |  |
| ERY-T1010 |  | Pre-commissioning and loop checks - Riyadh (Malaz) | 6d | 2027-09-28 | 2027-10-05 | ERY-C2100 | 460d |
| ERY-T1020 |  | Site acceptance test (SAT) and commissioning - Riyadh (Malaz) | 9d | 2027-10-06 | 2027-10-18 | ERY-T1010 | 460d |
|  | TRN | **Training** |  | 2027-10-19 | 2027-11-01 |  |  |
| ERY-T2010 |  | Operator and maintenance training - Riyadh (Malaz) | 10d | 2027-10-19 | 2027-11-01 | ERY-T1020 | 480d |
|  | TOA | **Trial operation and acceptance** |  | 2027-10-19 | 2027-12-13 |  |  |
| ERY-T2020 |  | Trial operation (maximum 45 days) - Riyadh (Malaz) | 30d | 2027-10-19 | 2027-11-29 | ERY-T1020 | 460d |
| ERY-T3010 |  | Taking-over application, SAR review and handover - Riyadh (Malaz) | 10d | 2027-11-30 | 2027-12-13 | ERY-T1100, ERY-T2010, ERY-T2020, ERY-E1140 | 460d |
|  | NSR | **NSR - North South Railway** |  | 2028-06-12 | 2029-09-16 |  |  |
|  | NQS | **Al Qassim (NSR)** |  | 2028-06-12 | 2028-08-27 |  |  |
| NQS-T1100 |  | MS6 SAT complete (10%) - Al Qassim | 0d | 2028-07-02 | 2028-07-02 | NQS-T1020 | 316d |
| NQS-T3100 |  | MS7 Station accepted - final acceptance and handover (10%) - Al Qassim | 0d | 2028-08-27 | 2028-08-27 | NQS-T3010 | 286d |
|  | TST | **Testing and commissioning** |  | 2028-06-12 | 2028-07-02 |  |  |
| NQS-T1010 |  | Pre-commissioning and loop checks - Al Qassim | 6d | 2028-06-12 | 2028-06-19 | NQS-C2100 | 286d |
| NQS-T1020 |  | Site acceptance test (SAT) and commissioning - Al Qassim | 9d | 2028-06-20 | 2028-07-02 | NQS-T1010 | 286d |
|  | TRN | **Training** |  | 2028-07-03 | 2028-07-16 |  |  |
| NQS-T2010 |  | Operator and maintenance training - Al Qassim | 10d | 2028-07-03 | 2028-07-16 | NQS-T1020 | 306d |
|  | TOA | **Trial operation and acceptance** |  | 2028-07-03 | 2028-08-27 |  |  |
| NQS-T2020 |  | Trial operation (maximum 45 days) - Al Qassim | 30d | 2028-07-03 | 2028-08-13 | NQS-T1020 | 286d |
| NQS-T3010 |  | Taking-over application, SAR review and handover - Al Qassim | 10d | 2028-08-14 | 2028-08-27 | NQS-T1100, NQS-T2010, NQS-T2020, NQS-E1140 | 286d |
|  | NMJ | **Al Majma'ah (NSR)** |  | 2028-07-31 | 2028-10-15 |  |  |
| NMJ-T1100 |  | MS6 SAT complete (10%) - Al Majma'ah | 0d | 2028-08-20 | 2028-08-20 | NMJ-T1020 | 281d |
| NMJ-T3100 |  | MS7 Station accepted - final acceptance and handover (10%) - Al Majma'ah | 0d | 2028-10-15 | 2028-10-15 | NMJ-T3010 | 251d |
|  | TST | **Testing and commissioning** |  | 2028-07-31 | 2028-08-20 |  |  |
| NMJ-T1010 |  | Pre-commissioning and loop checks - Al Majma'ah | 6d | 2028-07-31 | 2028-08-07 | NMJ-C2100 | 251d |
| NMJ-T1020 |  | Site acceptance test (SAT) and commissioning - Al Majma'ah | 9d | 2028-08-08 | 2028-08-20 | NMJ-T1010 | 251d |
|  | TRN | **Training** |  | 2028-08-21 | 2028-09-03 |  |  |
| NMJ-T2010 |  | Operator and maintenance training - Al Majma'ah | 10d | 2028-08-21 | 2028-09-03 | NMJ-T1020 | 271d |
|  | TOA | **Trial operation and acceptance** |  | 2028-08-21 | 2028-10-15 |  |  |
| NMJ-T2020 |  | Trial operation (maximum 45 days) - Al Majma'ah | 30d | 2028-08-21 | 2028-10-01 | NMJ-T1020 | 251d |
| NMJ-T3010 |  | Taking-over application, SAR review and handover - Al Majma'ah | 10d | 2028-10-02 | 2028-10-15 | NMJ-T1100, NMJ-T2010, NMJ-T2020, NMJ-E1140 | 251d |
|  | NHL | **Hail (NSR)** |  | 2029-02-20 | 2029-05-15 |  |  |
| NHL-T1100 |  | MS6 SAT complete (10%) - Hail | 0d | 2029-03-13 | 2029-03-13 | NHL-T1020 | 140d |
| NHL-T3100 |  | MS7 Station accepted - final acceptance and handover (10%) - Hail | 0d | 2029-05-15 | 2029-05-15 | NHL-T3010 | 110d |
|  | TST | **Testing and commissioning** |  | 2029-02-20 | 2029-03-13 |  |  |
| NHL-T1010 |  | Pre-commissioning and loop checks - Hail | 6d | 2029-02-20 | 2029-02-28 | NHL-C2100 | 110d |
| NHL-T1020 |  | Site acceptance test (SAT) and commissioning - Hail | 9d | 2029-03-01 | 2029-03-13 | NHL-T1010 | 110d |
|  | TRN | **Training** |  | 2029-03-14 | 2029-03-27 |  |  |
| NHL-T2010 |  | Operator and maintenance training - Hail | 10d | 2029-03-14 | 2029-03-27 | NHL-T1020 | 130d |
|  | TOA | **Trial operation and acceptance** |  | 2029-03-14 | 2029-05-15 |  |  |
| NHL-T2020 |  | Trial operation (maximum 45 days) - Hail | 30d | 2029-03-14 | 2029-05-01 | NHL-T1020 | 110d |
| NHL-T3010 |  | Taking-over application, SAR review and handover - Hail | 10d | 2029-05-02 | 2029-05-15 | NHL-T1100, NHL-T2010, NHL-T2020, NHL-E1140 | 110d |
|  | NJF | **Al Jouf (NSR)** |  | 2029-05-14 | 2029-07-29 |  |  |
| NJF-T1100 |  | MS6 SAT complete (10%) - Al Jouf | 0d | 2029-06-03 | 2029-06-03 | NJF-T1020 | 87d |
| NJF-T3100 |  | MS7 Station accepted - final acceptance and handover (10%) - Al Jouf | 0d | 2029-07-29 | 2029-07-29 | NJF-T3010 | 57d |
|  | TST | **Testing and commissioning** |  | 2029-05-14 | 2029-06-03 |  |  |
| NJF-T1010 |  | Pre-commissioning and loop checks - Al Jouf | 6d | 2029-05-14 | 2029-05-21 | NJF-C2100 | 57d |
| NJF-T1020 |  | Site acceptance test (SAT) and commissioning - Al Jouf | 9d | 2029-05-22 | 2029-06-03 | NJF-T1010 | 57d |
|  | TRN | **Training** |  | 2029-06-04 | 2029-06-17 |  |  |
| NJF-T2010 |  | Operator and maintenance training - Al Jouf | 10d | 2029-06-04 | 2029-06-17 | NJF-T1020 | 77d |
|  | TOA | **Trial operation and acceptance** |  | 2029-06-04 | 2029-07-29 |  |  |

| ID | WBS | Task | Duration | Start | Finish | Predecessors | Total float |
| --- | --- | --- | --- | --- | --- | --- | --- |
| NJF-T2020 |  | Trial operation (maximum 45 days) - Al Jouf | 30d | 2029-06-04 | 2029-07-15 | NJF-T1020 | 57d |
| NJF-T3010 |  | Taking-over application, SAR review and handover - Al Jouf | 10d | 2029-07-16 | 2029-07-29 | NJF-T1100, NJF-T2010, NJF-T2020, NJF-E1140 | 57d |
|  | NQR | **Al Qurayyat (NSR)** |  | 2029-07-02 | 2029-09-16 |  |  |
| NQR-T1100 |  | MS6 SAT complete (10%) - Al Qurayyat | 0d | 2029-07-22 | 2029-07-22 | NQR-T1020 | 52d |
| NQR-T3100 |  | MS7 Station accepted - final acceptance and handover (10%) - Al Qurayyat | 0d | 2029-09-16 | 2029-09-16 | NQR-T3010 | 22d |
|  | TST | **Testing and commissioning** |  | 2029-07-02 | 2029-07-22 |  |  |
| NQR-T1010 |  | Pre-commissioning and loop checks - Al Qurayyat | 6d | 2029-07-02 | 2029-07-09 | NQR-C2100 | 22d |
| NQR-T1020 |  | Site acceptance test (SAT) and commissioning - Al Qurayyat | 9d | 2029-07-10 | 2029-07-22 | NQR-T1010 | 22d |
|  | TRN | **Training** |  | 2029-07-23 | 2029-08-05 |  |  |
| NQR-T2010 |  | Operator and maintenance training - Al Qurayyat | 10d | 2029-07-23 | 2029-08-05 | NQR-T1020 | 42d |
|  | TOA | **Trial operation and acceptance** |  | 2029-07-23 | 2029-09-16 |  |  |
| NQR-T2020 |  | Trial operation (maximum 45 days) - Al Qurayyat | 30d | 2029-07-23 | 2029-09-02 | NQR-T1020 | 22d |
| NQR-T3010 |  | Taking-over application, SAR review and handover - Al Qurayyat | 10d | 2029-09-03 | 2029-09-16 | NQR-T1100, NQR-T2010, NQR-T2020, NQR-E1140 | 22d |
|  | EWR | **EWR - East West Railway** |  | 2028-04-02 | 2029-03-29 |  |  |
|  | EDM | **Dammam (EWR)** |  | 2028-04-02 | 2028-06-22 |  |  |
| EDM-T1100 |  | MS6 SAT complete (10%) - Dammam | 0d | 2028-04-20 | 2028-04-20 | EDM-T1020 | 362d |
| EDM-T3100 |  | MS7 Station accepted - final acceptance and handover (10%) - Dammam | 0d | 2028-06-22 | 2028-06-22 | EDM-T3010 | 332d |
|  | TST | **Testing and commissioning** |  | 2028-04-02 | 2028-04-20 |  |  |
| EDM-T1010 |  | Pre-commissioning and loop checks - Dammam | 6d | 2028-04-02 | 2028-04-09 | EDM-C2100 | 332d |
| EDM-T1020 |  | Site acceptance test (SAT) and commissioning - Dammam | 9d | 2028-04-10 | 2028-04-20 | EDM-T1010 | 332d |
|  | TRN | **Training** |  | 2028-04-23 | 2028-05-11 |  |  |
| EDM-T2010 |  | Operator and maintenance training - Dammam | 10d | 2028-04-23 | 2028-05-11 | EDM-T1020 | 352d |
|  | TOA | **Trial operation and acceptance** |  | 2028-04-23 | 2028-06-22 |  |  |
| EDM-T2020 |  | Trial operation (maximum 45 days) - Dammam | 30d | 2028-04-23 | 2028-06-08 | EDM-T1020 | 332d |
| EDM-T3010 |  | Taking-over application, SAR review and handover - Dammam | 10d | 2028-06-11 | 2028-06-22 | EDM-T1100, EDM-T2010, EDM-T2020, EDM-E1140 | 332d |
|  | EHF | **Hufuf (EWR)** |  | 2028-06-04 | 2028-08-17 |  |  |
| EHF-T1100 |  | MS6 SAT complete (10%) - Hufuf | 0d | 2028-06-22 | 2028-06-22 | EHF-T1020 | 322d |
| EHF-T3100 |  | MS7 Station accepted - final acceptance and handover (10%) - Hufuf | 0d | 2028-08-17 | 2028-08-17 | EHF-T3010 | 292d |
|  | TST | **Testing and commissioning** |  | 2028-06-04 | 2028-06-22 |  |  |
| EHF-T1010 |  | Pre-commissioning and loop checks - Hufuf | 6d | 2028-06-04 | 2028-06-11 | EHF-C2100 | 292d |
| EHF-T1020 |  | Site acceptance test (SAT) and commissioning - Hufuf | 9d | 2028-06-12 | 2028-06-22 | EHF-T1010 | 292d |
|  | TRN | **Training** |  | 2028-06-25 | 2028-07-06 |  |  |
| EHF-T2010 |  | Operator and maintenance training - Hufuf | 10d | 2028-06-25 | 2028-07-06 | EHF-T1020 | 312d |
|  | TOA | **Trial operation and acceptance** |  | 2028-06-25 | 2028-08-17 |  |  |
| EHF-T2020 |  | Trial operation (maximum 45 days) - Hufuf | 30d | 2028-06-25 | 2028-08-03 | EHF-T1020 | 292d |
| EHF-T3010 |  | Taking-over application, SAR review and handover - Hufuf | 10d | 2028-08-06 | 2028-08-17 | EHF-T1100, EHF-T2010, EHF-T2020, EHF-E1140 | 292d |
|  | EAB | **Abqaiq (EWR)** |  | 2029-01-04 | 2029-03-29 |  |  |
| EAB-T1100 |  | MS6 SAT complete (10%) - Abqaiq | 0d | 2029-01-24 | 2029-01-24 | EAB-T1020 | 168d |
| EAB-T3100 |  | MS7 Station accepted - final acceptance and handover (10%) - Abqaiq | 0d | 2029-03-29 | 2029-03-29 | EAB-T3010 | 138d |
|  | TST | **Testing and commissioning** |  | 2029-01-04 | 2029-01-24 |  |  |
| EAB-T1010 |  | Pre-commissioning and loop checks - Abqaiq | 6d | 2029-01-04 | 2029-01-11 | EAB-C2100 | 138d |
| EAB-T1020 |  | Site acceptance test (SAT) and commissioning - Abqaiq | 9d | 2029-01-14 | 2029-01-24 | EAB-T1010 | 138d |
|  | TRN | **Training** |  | 2029-01-25 | 2029-02-07 |  |  |
| EAB-T2010 |  | Operator and maintenance training - Abqaiq | 10d | 2029-01-25 | 2029-02-07 | EAB-T1020 | 158d |
|  | TOA | **Trial operation and acceptance** |  | 2029-01-25 | 2029-03-29 |  |  |
| EAB-T2020 |  | Trial operation (maximum 45 days) - Abqaiq | 30d | 2029-01-25 | 2029-03-15 | EAB-T1020 | 138d |
| EAB-T3010 |  | Taking-over application, SAR review and handover - Abqaiq | 10d | 2029-03-18 | 2029-03-29 | EAB-T1100, EAB-T2010, EAB-T2020, EAB-E1140 | 138d |
|  | HHR | **HHR - Haramain High Speed Rail** |  | 2028-06-18 | 2029-08-01 |  |  |
|  | HJD | **Jeddah (HHR)** |  | 2028-06-18 | 2028-09-21 |  |  |
| HJD-T1100 |  | MS6 SAT complete (10%) - Jeddah | 0d | 2028-07-20 | 2028-07-20 | HJD-T1020 | 297d |
| HJD-T3100 |  | MS7 Station accepted - final acceptance and handover (10%) - Jeddah | 0d | 2028-09-21 | 2028-09-21 | HJD-T3010 | 267d |
|  | TST | **Testing and commissioning** |  | 2028-06-18 | 2028-07-20 |  |  |
| HJD-T1010 |  | Pre-commissioning and loop checks - Jeddah | 10d | 2028-06-18 | 2028-06-29 | HJD-C2100 | 267d |
| HJD-T1020 |  | Site acceptance test (SAT) and commissioning - Jeddah | 15d | 2028-07-02 | 2028-07-20 | HJD-T1010 | 267d |
|  | TRN | **Training** |  | 2028-07-23 | 2028-08-03 |  |  |
| HJD-T2010 |  | Operator and maintenance training - Jeddah | 10d | 2028-07-23 | 2028-08-03 | HJD-T1020 | 287d |
|  | TOA | **Trial operation and acceptance** |  | 2028-07-23 | 2028-09-21 |  |  |
| HJD-T2020 |  | Trial operation (maximum 45 days) - Jeddah | 30d | 2028-07-23 | 2028-08-31 | HJD-T1020 | 267d |
| HJD-T3010 |  | Taking-over application, SAR review and handover - Jeddah | 15d | 2028-09-03 | 2028-09-21 | HJD-T1100, HJD-T2010, HJD-T2020, HJD-E1140 | 267d |
|  | HMK | **Makkah (HHR)** |  | 2029-01-29 | 2029-05-21 |  |  |
| HMK-T1100 |  | MS6 SAT complete (10%) - Makkah | 0d | 2029-03-12 | 2029-03-12 | HMK-T1020 | 136d |
| HMK-T3100 |  | MS7 Station accepted - final acceptance and handover (10%) - Makkah | 0d | 2029-05-21 | 2029-05-21 | HMK-T3010 | 106d |
|  | TST | **Testing and commissioning** |  | 2029-01-29 | 2029-03-12 |  |  |
| HMK-T1010 |  | Pre-commissioning and loop checks - Makkah | 10d | 2029-01-29 | 2029-02-18 | HMK-C2100 | 106d |
| HMK-T1020 |  | Site acceptance test (SAT) and commissioning - Makkah | 15d | 2029-02-19 | 2029-03-12 | HMK-T1010 | 106d |
|  | TRN | **Training** |  | 2029-03-13 | 2029-03-26 |  |  |
| HMK-T2010 |  | Operator and maintenance training - Makkah | 10d | 2029-03-13 | 2029-03-26 | HMK-T1020 | 126d |
|  | TOA | **Trial operation and acceptance** |  | 2029-03-13 | 2029-05-21 |  |  |
| HMK-T2020 |  | Trial operation (maximum 45 days) - Makkah | 30d | 2029-03-13 | 2029-04-30 | HMK-T1020 | 106d |
| HMK-T3010 |  | Taking-over application, SAR review and handover - Makkah | 15d | 2029-05-01 | 2029-05-21 | HMK-T1100, HMK-T2010, HMK-T2020, HMK-E1140 | 106d |

| ID | WBS | Task | Duration | Start | Finish | Predecessors | Total float |
| --- | --- | --- | --- | --- | --- | --- | --- |
|  | HKA | **KAEC (HHR)** |  | 2029-04-15 | 2029-07-26 |  |  |
| HKA-T1100 |  | MS6 SAT complete (10%) - KAEC | 0d | 2029-05-24 | 2029-05-24 | HKA-T1020 | 88d |
| HKA-T3100 |  | MS7 Station accepted - final acceptance and handover (10%) - KAEC | 0d | 2029-07-26 | 2029-07-26 | HKA-T3010 | 58d |
|  | TST | **Testing and commissioning** |  | 2029-04-15 | 2029-05-24 |  |  |
| HKA-T1010 |  | Pre-commissioning and loop checks - KAEC | 10d | 2029-04-15 | 2029-05-03 | HKA-C2100 | 58d |
| HKA-T1020 |  | Site acceptance test (SAT) and commissioning - KAEC | 15d | 2029-05-06 | 2029-05-24 | HKA-T1010 | 58d |
|  | TRN | **Training** |  | 2029-05-27 | 2029-06-07 |  |  |
| HKA-T2010 |  | Operator and maintenance training - KAEC | 10d | 2029-05-27 | 2029-06-07 | HKA-T1020 | 78d |
|  | TOA | **Trial operation and acceptance** |  | 2029-05-27 | 2029-07-26 |  |  |
| HKA-T2020 |  | Trial operation (maximum 45 days) - KAEC | 30d | 2029-05-27 | 2029-07-05 | HKA-T1020 | 58d |
| HKA-T3010 |  | Taking-over application, SAR review and handover - KAEC | 15d | 2029-07-08 | 2029-07-26 | HKA-T1100, HKA-T2010, HKA-T2020, HKA-E1140 | 58d |
|  | HMD | **Madinah (HHR)** |  | 2029-04-19 | 2029-08-01 |  |  |
| HMD-T1100 |  | MS6 SAT complete (10%) - Madinah | 0d | 2029-05-30 | 2029-05-30 | HMD-T1020 | 84d |
| HMD-T3100 |  | MS7 Station accepted - final acceptance and handover (10%) - Madinah | 0d | 2029-08-01 | 2029-08-01 | HMD-T3010 | 54d |
|  | TST | **Testing and commissioning** |  | 2029-04-19 | 2029-05-30 |  |  |
| HMD-T1010 |  | Pre-commissioning and loop checks - Madinah | 10d | 2029-04-19 | 2029-05-09 | HMD-C2100 | 54d |
| HMD-T1020 |  | Site acceptance test (SAT) and commissioning - Madinah | 15d | 2029-05-10 | 2029-05-30 | HMD-T1010 | 54d |
|  | TRN | **Training** |  | 2029-05-31 | 2029-06-13 |  |  |
| HMD-T2010 |  | Operator and maintenance training - Madinah | 10d | 2029-05-31 | 2029-06-13 | HMD-T1020 | 74d |
|  | TOA | **Trial operation and acceptance** |  | 2029-05-31 | 2029-08-01 |  |  |
| HMD-T2020 |  | Trial operation (maximum 45 days) - Madinah | 30d | 2029-05-31 | 2029-07-11 | HMD-T1020 | 54d |
| HMD-T3010 |  | Taking-over application, SAR review and handover - Madinah | 15d | 2029-07-12 | 2029-08-01 | HMD-T1100, HMD-T2010, HMD-T2020, HMD-E1140 | 54d |

## Version 2 (data date 2026-11-01, saved 2026-10-07, file 0580_Schedule_Baseline_Rev1.xer)

Note of the change: Durations driven by BOQ quantities per station (cameras, equipment SAR, civil SAR)

Last finish stays 2029-10-31.

Added:

| ID | Task | Duration | Start | Finish | Predecessors | Resources |
| --- | --- | --- | --- | --- | --- | --- |
| PRJ-A1060 | Site access permits for the surveys of all stations: application and approval (two months) | 45d | 2026-11-01 | 2026-12-31 | PRJ-M0000 | Contract cost (BOQ x payment milestones); Progress weight (fair EPC distribution, SAR value) [62000 SAR] |
| PRJ-M1150 | Mobilization and survey permits complete (end of month 2) | 0d | 2026-12-31 | 2026-12-31 | PRJ-M1100, PRJ-M0000 FS+45d, PRJ-A1060 |  |
| PRJ-M1250 | Design complete - priority stations (end of month 6) | 0d | 2027-04-29 | 2027-04-29 | NRY-E1100, NRY-E1120, HMK-E1100, HMK-E1120, ERY-E1100, ERY-E1120 |  |
| ENA | **Enabling works** |  | 2027-03-01 | 2027-04-11 |  |  |
| NRY-X1010 | Enabling works: site preparation, setting out, temporary works and utilities clearance - Riyadh (Thumamah) | 10d | 2027-03-01 | 2027-03-21 | PRJ-M1150 FS+40d | Contract cost (BOQ x payment milestones) [8432 SAR]; Progress weight (fair EPC distribution, SAR value) [33480 SAR] |
| NRY-X1020 | Enabling works: cable routes, duct-bank and cabinet plinth preparation - Riyadh (Thumamah) | 15d | 2027-03-22 | 2027-04-11 | NRY-X1010 | Contract cost (BOQ x payment milestones) [12648 SAR]; Progress weight (fair EPC distribution, SAR value) [50220 SAR] |
| ENA | **Enabling works** |  | 2027-03-01 | 2027-04-11 |  |  |
| HMK-X1010 | Enabling works: site preparation, setting out, temporary works and utilities clearance - Makkah | 10d | 2027-03-01 | 2027-03-21 | PRJ-M1150 FS+40d | Contract cost (BOQ x payment milestones) [7867 SAR]; Progress weight (fair EPC distribution, SAR value) [93000 SAR] |
| HMK-X1020 | Enabling works: cable routes, duct-bank and cabinet plinth preparation - Makkah | 15d | 2027-03-22 | 2027-04-11 | HMK-X1010 | Contract cost (BOQ x payment milestones) [11800 SAR]; Progress weight (fair EPC distribution, SAR value) [140120 SAR] |
| ENA | **Enabling works** |  | 2027-03-01 | 2027-03-28 |  |  |
| ERY-X1010 | Enabling works: site preparation, setting out, temporary works and utilities clearance - Riyadh (Malaz) | 5d | 2027-03-01 | 2027-03-14 | ERY-E1010 SS+40d | Contract cost (BOQ x payment milestones) [8803 SAR]; Progress weight (fair EPC distribution, SAR value) [29760 SAR] |
| ERY-X1020 | Enabling works: cable routes, duct-bank and cabinet plinth preparation - Riyadh (Malaz) | 10d | 2027-03-15 | 2027-03-28 | ERY-X1010 | Contract cost (BOQ x payment milestones) [13205 SAR]; Progress weight (fair EPC distribution, SAR value) [44640 SAR] |
| ENA | **Enabling works** |  | 2027-06-02 | 2027-06-22 |  |  |
| HJD-X1010 | Enabling works: site preparation, setting out, temporary works and utilities clearance - Jeddah | 5d | 2027-06-02 | 2027-06-08 | HJD-E1010 SS+42d | Contract cost (BOQ x payment milestones) [7180 SAR]; Progress weight (fair EPC distribution, SAR value) [91760 SAR] |
| HJD-X1020 | Enabling works: cable routes, duct-bank and cabinet plinth preparation - Jeddah | 10d | 2027-06-09 | 2027-06-22 | HJD-X1010 | Contract cost (BOQ x payment milestones) [10770 SAR]; Progress weight (fair EPC distribution, SAR value) [137640 SAR] |
| ENA | **Enabling works** |  | 2027-08-16 | 2027-09-05 |  |  |
| EDM-X1010 | Enabling works: site preparation, setting out, temporary works and utilities clearance - Dammam | 5d | 2027-08-16 | 2027-08-22 | EDM-E1010 SS+42d | Contract cost (BOQ x payment milestones) [8803 SAR]; Progress weight (fair EPC distribution, SAR value) [30380 SAR] |
| EDM-X1020 | Enabling works: cable routes, duct-bank and cabinet plinth preparation - Dammam | 10d | 2027-08-23 | 2027-09-05 | EDM-X1010 | Contract cost (BOQ x payment milestones) [13204 SAR]; Progress weight (fair EPC distribution, SAR value) [45880 SAR] |
| ENA | **Enabling works** |  | 2027-10-10 | 2027-10-28 |  |  |
| NQS-X1010 | Enabling works: site preparation, setting out, temporary works and utilities clearance - Al Qassim | 5d | 2027-10-10 | 2027-10-14 | NQS-E1010 SS+42d | Contract cost (BOQ x payment milestones) [8432 SAR]; Progress weight (fair EPC distribution, SAR value) [32860 SAR] |
| NQS-X1020 | Enabling works: cable routes, duct-bank and cabinet plinth preparation - Al Qassim | 10d | 2027-10-17 | 2027-10-28 | NQS-X1010 | Contract cost (BOQ x payment milestones) [12648 SAR]; Progress weight (fair EPC distribution, SAR value) [48980 SAR] |
| ENA | **Enabling works** |  | 2027-10-10 | 2027-10-28 |  |  |
| EHF-X1010 | Enabling works: site preparation, setting out, temporary works and utilities clearance - Hufuf | 5d | 2027-10-10 | 2027-10-14 | EHF-E1010 SS+42d | Contract cost (BOQ x payment milestones) [8277 SAR]; Progress weight (fair EPC distribution, SAR value) [27280 SAR] |
| EHF-X1020 | Enabling works: cable routes, duct-bank and cabinet plinth preparation - Hufuf | 10d | 2027-10-17 | 2027-10-28 | EHF-X1010 | Contract cost (BOQ x payment milestones) [12415 SAR]; Progress weight (fair EPC distribution, SAR value) [40920 SAR] |
| ENA | **Enabling works** |  | 2027-11-25 | 2027-12-15 |  |  |
| NMJ-X1010 | Enabling works: site preparation, setting out, temporary works and utilities clearance - Al Majma'ah | 5d | 2027-11-25 | 2027-12-01 | NMJ-E1010 SS+42d | Contract cost (BOQ x payment milestones) [8432 SAR]; Progress weight (fair EPC distribution, SAR value) [32860 SAR] |
| NMJ-X1020 | Enabling works: cable routes, duct-bank and cabinet plinth preparation - Al Majma'ah | 10d | 2027-12-02 | 2027-12-15 | NMJ-X1010 | Contract cost (BOQ x payment milestones) [12648 SAR]; Progress weight (fair EPC distribution, SAR value) [48980 SAR] |
| ENA | **Enabling works** |  | 2028-03-30 | 2028-04-19 |  |  |
| HKA-X1010 | Enabling works: site preparation, setting out, temporary works and utilities clearance - KAEC | 5d | 2028-03-30 | 2028-04-05 | HKA-E1010 SS+42d | Contract cost (BOQ x payment milestones) [2574 SAR]; Progress weight (fair EPC distribution, SAR value) [53320 SAR] |
| HKA-X1020 | Enabling works: cable routes, duct-bank and cabinet plinth preparation - KAEC | 10d | 2028-04-06 | 2028-04-19 | HKA-X1010 | Contract cost (BOQ x payment milestones) [3861 SAR]; Progress weight (fair EPC distribution, SAR value) [79980 SAR] |
| ENA | **Enabling works** |  | 2028-03-30 | 2028-04-19 |  |  |
| HMD-X1010 | Enabling works: site preparation, setting out, temporary works and utilities clearance - Madinah | 5d | 2028-03-30 | 2028-04-05 | HMD-E1010 SS+42d | Contract cost (BOQ x payment milestones) [4005 SAR]; Progress weight (fair EPC distribution, SAR value) [53320 SAR] |
| HMD-X1020 | Enabling works: cable routes, duct-bank and cabinet plinth preparation - Madinah | 10d | 2028-04-06 | 2028-04-19 | HMD-X1010 | Contract cost (BOQ x payment milestones) [6008 SAR]; Progress weight (fair EPC distribution, SAR value) [79980 SAR] |
| ENA | **Enabling works** |  | 2028-05-24 | 2028-06-13 |  |  |
| EAB-X1010 | Enabling works: site preparation, setting out, temporary works and utilities clearance - Abqaiq | 5d | 2028-05-24 | 2028-05-30 | EAB-E1010 SS+42d | Contract cost (BOQ x payment milestones) [4715 SAR]; Progress weight (fair EPC distribution, SAR value) [19220 SAR] |
| EAB-X1020 | Enabling works: cable routes, duct-bank and cabinet plinth preparation - Abqaiq | 10d | 2028-05-31 | 2028-06-13 | EAB-X1010 | Contract cost (BOQ x payment milestones) [7073 SAR]; Progress weight (fair EPC distribution, SAR value) [29140 SAR] |
| ENA | **Enabling works** |  | 2028-06-18 | 2028-07-06 |  |  |
| NHL-X1010 | Enabling works: site preparation, setting out, temporary works and utilities clearance - Hail | 5d | 2028-06-18 | 2028-06-22 | NHL-E1010 SS+42d | Contract cost (BOQ x payment milestones) [8432 SAR]; Progress weight (fair EPC distribution, SAR value) [32860 SAR] |
| NHL-X1020 | Enabling works: cable routes, duct-bank and cabinet plinth preparation - Hail | 10d | 2028-06-25 | 2028-07-06 | NHL-X1010 | Contract cost (BOQ x payment milestones) [12648 SAR]; Progress weight (fair EPC distribution, SAR value) [48980 SAR] |
| ENA | **Enabling works** |  | 2028-08-28 | 2028-09-17 |  |  |
| NJF-X1010 | Enabling works: site preparation, setting out, temporary works and utilities clearance - Al Jouf | 5d | 2028-08-28 | 2028-09-03 | NJF-E1010 SS+42d | Contract cost (BOQ x payment milestones) [8432 SAR]; Progress weight (fair EPC distribution, SAR value) [32860 SAR] |
| NJF-X1020 | Enabling works: cable routes, duct-bank and cabinet plinth preparation - Al Jouf | 10d | 2028-09-04 | 2028-09-17 | NJF-X1010 | Contract cost (BOQ x payment milestones) [12648 SAR]; Progress weight (fair EPC distribution, SAR value) [48980 SAR] |
| ENA | **Enabling works** |  | 2028-10-15 | 2028-11-02 |  |  |
| NQR-X1010 | Enabling works: site preparation, setting out, temporary works and utilities clearance - Al Qurayyat | 5d | 2028-10-15 | 2028-10-19 | NQR-E1010 SS+42d | Contract cost (BOQ x payment milestones) [8432 SAR]; Progress weight (fair EPC distribution, SAR value) [32860 SAR] |
| NQR-X1020 | Enabling works: cable routes, duct-bank and cabinet plinth preparation - Al Qurayyat | 10d | 2028-10-22 | 2028-11-02 | NQR-X1010 | Contract cost (BOQ x payment milestones) [12648 SAR]; Progress weight (fair EPC distribution, SAR value) [48980 SAR] |
| NRY-T1130 | Mock-up approved - roll-out to other stations - Riyadh (Thumamah) | 0d | 2027-12-05 | 2027-12-05 | NRY-T1030 |  |
| MOK | **Mock-up approval** |  | 2027-11-04 | 2027-12-05 |  |  |
| NRY-T1030 | Mock-up approval: site visit and SAR approval of the executed works (roll-out to other stations) - Riyadh (Thumamah) | 22d | 2027-11-04 | 2027-12-05 | NRY-C2100 | Contract cost (BOQ x payment milestones) [10442 SAR]; Progress weight (fair EPC distribution, SAR value) [16740 SAR] |

Removed: Riyadh priority stations (NSR + EWR); NSR - North South Railway; EWR - East West Railway; HHR - Haramain High Speed Rail; Riyadh priority stations (NSR + EWR); NSR - North South Railway; EWR - East West Railway; HHR - Haramain High Speed Rail; Riyadh priority stations (NSR + EWR); NSR - North South Railway; EWR - East West Railway; HHR - Haramain High Speed Rail; Riyadh priority stations (NSR + EWR); NSR - North South Railway; EWR - East West Railway; HHR - Haramain High Speed Rail

Changed:

| ID | Task | Start | Finish | Duration | Total float | Predecessors | Other |
| --- | --- | --- | --- | --- | --- | --- | --- |
| MOB | **Mobilization and baseline programme** |  | 2027-02-18 → 2027-03-28 (+38d) |  |  |  |  |
| PRJ-A1010 | Performance security, insurance and key personnel approval |  |  |  | 42d → 56d |  | resources Contract cost (BOQ x payment milestones) [1859999 SAR]; Progress weight (fair EPC distribution) [400 h] → Contract cost (BOQ x payment milestones) [1859999 SAR]; Progress weight (fair EPC distribution, SAR value) [248000 SAR] |
| PRJ-A1020 | Initial baseline programme (Primavera) covering mobilization and survey |  |  |  | 30d → 44d |  | resources Contract cost (BOQ x payment milestones) [1240000 SAR]; Progress weight (fair EPC distribution) [200 h] → Contract cost (BOQ x payment milestones) [1239999 SAR]; Progress weight (fair EPC distribution, SAR value) [124000 SAR] |
| PRJ-A1040 | Mobilization: site establishment, offices, personnel and tools |  |  |  | 22d → 36d |  | resources Contract cost (BOQ x payment milestones) [5579999 SAR]; Progress weight (fair EPC distribution) [800 h] → Contract cost (BOQ x payment milestones) [5579999 SAR]; Progress weight (fair EPC distribution, SAR value) [434000 SAR] |
| PRJ-A1050 | Mobilization submittals: QC programme and ITP, HSE, security, procurement and shipping plan |  |  |  | 27d → 41d |  | resources Contract cost (BOQ x payment milestones) [3719999 SAR]; Progress weight (fair EPC distribution) [600 h] → Contract cost (BOQ x payment milestones) [3719999 SAR]; Progress weight (fair EPC distribution, SAR value) [372000 SAR] |
| PRJ-A1030 | SAR review and approval of initial baseline |  |  |  | 30d → 44d |  | resources Contract cost (BOQ x payment milestones); Progress weight (fair EPC distribution) [200 h] → Contract cost (BOQ x payment milestones); Progress weight (fair EPC distribution, SAR value) [124000 SAR] |
| PRJ-A2010 | Detailed baseline programme (within 21 days after survey) | 2027-01-10 → 2027-02-07 (+28d) | 2027-01-28 → 2027-02-28 (+31d) |  | 22d → 21d | NRY-E1010, ERY-E1010 → NRY-E1010, HMK-E1010, ERY-E1010 | resources Contract cost (BOQ x payment milestones); Progress weight (fair EPC distribution) [300 h] → Contract cost (BOQ x payment milestones); Progress weight (fair EPC distribution, SAR value) [186000 SAR] |
| PRJ-A2020 | SAR review and approval of detailed baseline | 2027-01-31 → 2027-03-01 (+29d) | 2027-02-18 → 2027-03-28 (+38d) |  | 22d → 21d |  | resources Contract cost (BOQ x payment milestones); Progress weight (fair EPC distribution) [200 h] → Contract cost (BOQ x payment milestones); Progress weight (fair EPC distribution, SAR value) [124000 SAR] |
| PRJ-M2100 | Detailed baseline programme approved | 2027-02-18 → 2027-03-28 (+38d) | 2027-02-18 → 2027-03-28 (+38d) |  | 22d → 21d |  |  |
| PRJ-MX99 | Contract completion - end of 36-month term |  |  |  |  | PRJ-C1010, PRJ-M0000 FS+750d → PRJ-C1010, PRJ-M1250, PRJ-M0000 FS+750d |  |
| CLO | **Closeout** | 2029-09-17 → 2029-09-18 (+1d) | 2029-10-01 → 2029-10-02 (+1d) |  |  |  |  |
| PRJ-C1010 | Contract closeout pack and handover documentation | 2029-09-17 → 2029-09-18 (+1d) | 2029-10-01 → 2029-10-02 (+1d) |  | 22d → 21d |  | resources Contract cost (BOQ x payment milestones); Progress weight (fair EPC distribution) [1301 h] → Contract cost (BOQ x payment milestones); Progress weight (fair EPC distribution, SAR value) [806620 SAR] |
| ENG | **Engineering** | 2026-12-13 → 2027-01-03 (+21d) | 2029-09-02 → 2029-08-27 (-6d) |  |  |  |  |
| NRY | **Riyadh (Thumamah) (NSR)** | 2026-12-13 → 2027-01-03 (+21d) | 2027-11-23 → 2028-01-03 (+41d) |  |  |  |  |
| NRY-E1200 | MS2 Engineering submittal complete (10%) - Riyadh (Thumamah) | 2027-02-04 → 2027-04-08 (+63d) | 2027-02-04 → 2027-04-08 (+63d) |  | 479d → 445d |  |  |
| NRY-E1210 | MS3 Engineering approved by SAR (10%) - Riyadh (Thumamah) | 2027-02-28 → 2027-04-29 (+60d) | 2027-02-28 → 2027-04-29 (+60d) |  | 464d → 430d |  |  |
| SRV | **Site survey and as-found verification** | 2026-12-13 → 2027-01-03 (+21d) | 2026-12-31 → 2027-02-02 (+33d) |  |  |  |  |
| SUB | **Submittal** | 2026-12-13 → 2027-01-03 (+21d) | 2026-12-24 → 2027-01-12 (+19d) |  |  |  |  |
| NRY-E1010 | Survey: submittal of site survey and as-found report - Riyadh (Thumamah) | 2026-12-13 → 2027-01-03 (+21d) | 2026-12-24 → 2027-01-12 (+19d) | 10d → 8d | 32d → 38d | PRJ-M1100 → PRJ-A1060, PRJ-M1150 | resources Contract cost (BOQ x payment milestones) [17404 SAR]; Progress weight (fair EPC distribution) [34 h] → Contract cost (BOQ x payment milestones) [24017 SAR]; Progress weight (fair EPC distribution, SAR value) [19220 SAR] |
| APR | **Approval** | 2026-12-27 → 2027-01-13 (+17d) | 2026-12-31 → 2027-02-02 (+33d) |  |  |  |  |
| NRY-E1020 | Survey: SAR approval of survey report - Riyadh (Thumamah) | 2026-12-27 → 2027-01-13 (+17d) | 2026-12-31 → 2027-02-02 (+33d) | 5d → 15d | 504d → 486d |  | resources Contract cost (BOQ x payment milestones) [17404 SAR]; Progress weight (fair EPC distribution) [17 h] → Contract cost (BOQ x payment milestones) [17404 SAR]; Progress weight (fair EPC distribution, SAR value) [20460 SAR] |
| CNC | **Concept design** | 2026-12-27 → 2027-01-13 (+17d) | 2027-01-21 → 2027-02-14 (+24d) |  |  |  |  |
| SUB | **Submittal** | 2026-12-27 → 2027-01-13 (+17d) | 2026-12-31 → 2027-01-24 (+24d) |  |  |  |  |
| NRY-E1030 | Concept design: submittal - Riyadh (Thumamah) | 2026-12-27 → 2027-01-13 (+17d) | 2026-12-31 → 2027-01-24 (+24d) | 5d → 8d | 464d → 430d |  | resources Contract cost (BOQ x payment milestones) [34808 SAR]; Progress weight (fair EPC distribution) [16 h] → Contract cost (BOQ x payment milestones) [34112 SAR]; Progress weight (fair EPC distribution, SAR value) [13640 SAR] |
| APR | **Approval** | 2027-01-03 → 2027-01-25 (+22d) | 2027-01-21 → 2027-02-14 (+24d) |  |  |  |  |
| NRY-E1040 | Concept design: SAR review and approval - Riyadh (Thumamah) | 2027-01-03 → 2027-01-25 (+22d) | 2027-01-21 → 2027-02-14 (+24d) |  | 489d → 478d |  | resources Contract cost (BOQ x payment milestones) [34808 SAR]; Progress weight (fair EPC distribution) [49 h] → Contract cost (BOQ x payment milestones) [34808 SAR]; Progress weight (fair EPC distribution, SAR value) [25420 SAR] |
| PRE | **Preliminary (schematic) design** | 2027-01-03 → 2027-01-25 (+22d) | 2027-02-02 → 2027-03-14 (+40d) |  |  |  |  |
| SUB | **Submittal** | 2027-01-03 → 2027-01-25 (+22d) | 2027-01-12 → 2027-02-11 (+30d) |  |  |  |  |
| NRY-E1050 | Preliminary design: submittal - Riyadh (Thumamah) | 2027-01-03 → 2027-01-25 (+22d) | 2027-01-12 → 2027-02-11 (+30d) | 8d → 14d | 464d → 430d |  | resources Contract cost (BOQ x payment milestones) [69616 SAR]; Progress weight (fair EPC distribution) [40 h] → Contract cost (BOQ x payment milestones) [68223 SAR]; Progress weight (fair EPC distribution, SAR value) [34100 SAR] |
| APR | **Approval** | 2027-01-13 → 2027-02-14 (+32d) | 2027-02-02 → 2027-03-14 (+40d) |  |  |  |  |
| NRY-E1060 | Preliminary design: SAR review and approval - Riyadh (Thumamah) | 2027-01-13 → 2027-02-14 (+32d) | 2027-02-02 → 2027-03-14 (+40d) |  | 481d → 464d |  | resources Contract cost (BOQ x payment milestones) [69616 SAR]; Progress weight (fair EPC distribution) [76 h] → Contract cost (BOQ x payment milestones) [69616 SAR]; Progress weight (fair EPC distribution, SAR value) [36580 SAR] |
| DET | **Detailed design** | 2027-01-13 → 2027-02-14 (+32d) | 2027-02-18 → 2027-04-13 (+54d) |  |  |  |  |
| SUB | **Submittal** | 2027-01-13 → 2027-02-14 (+32d) | 2027-01-28 → 2027-03-23 (+54d) |  |  |  |  |
| NRY-E1070 | Detailed design: submittal (drawings, BOQ, data sheets) - Riyadh (Thumamah) | 2027-01-13 → 2027-02-14 (+32d) | 2027-01-28 → 2027-03-23 (+54d) | 12d → 22d | 464d → 430d |  | resources Contract cost (BOQ x payment milestones) [139231 SAR]; Progress weight (fair EPC distribution) [86 h] → Contract cost (BOQ x payment milestones) [136447 SAR]; Progress weight (fair EPC distribution, SAR value) [70060 SAR] |
| APR | **Approval** | 2027-01-31 → 2027-03-24 (+52d) | 2027-02-18 → 2027-04-13 (+54d) |  |  |  |  |
| NRY-E1080 | Detailed design: SAR review and approval - Riyadh (Thumamah) | 2027-01-31 → 2027-03-24 (+52d) | 2027-02-18 → 2027-04-13 (+54d) |  | 469d → 442d |  | resources Contract cost (BOQ x payment milestones) [139231 SAR]; Progress weight (fair EPC distribution) [108 h] → Contract cost (BOQ x payment milestones) [139231 SAR]; Progress weight (fair EPC distribution, SAR value) [47740 SAR] |
| IFC | **IFC and shop drawings** | 2027-01-31 → 2027-03-24 (+52d) | 2027-02-28 → 2027-04-29 (+60d) |  |  |  |  |
| SUB | **Submittal** | 2027-01-31 → 2027-03-24 (+52d) | 2027-02-04 → 2027-04-08 (+63d) |  |  |  |  |
| NRY-E1090 | IFC and shop drawings: submittal - Riyadh (Thumamah) | 2027-01-31 → 2027-03-24 (+52d) | 2027-02-04 → 2027-04-08 (+63d) | 5d → 12d | 464d → 430d |  | resources Contract cost (BOQ x payment milestones) [69616 SAR]; Progress weight (fair EPC distribution) [29 h] → Contract cost (BOQ x payment milestones) [68223 SAR]; Progress weight (fair EPC distribution, SAR value) [31620 SAR] |
| APR | **Approval** | 2027-02-07 → 2027-04-11 (+63d) | 2027-02-28 → 2027-04-29 (+60d) |  |  |  |  |
| NRY-E1100 | IFC and shop drawings: SAR approval and release - Riyadh (Thumamah) | 2027-02-07 → 2027-04-11 (+63d) | 2027-02-28 → 2027-04-29 (+60d) |  | 464d → 430d |  | resources Contract cost (BOQ x payment milestones) [69616 SAR]; Progress weight (fair EPC distribution) [87 h] → Contract cost (BOQ x payment milestones) [69616 SAR]; Progress weight (fair EPC distribution, SAR value) [39060 SAR] |
| HCS | **HCIS documentation (Stage 3 and 4)** | 2027-01-20 → 2027-02-25 (+36d) | 2027-02-28 → 2027-04-29 (+60d) |  |  |  |  |
| SUB | **Submittal** | 2027-01-20 → 2027-02-25 (+36d) | 2027-02-04 → 2027-04-08 (+63d) |  |  |  |  |
| NRY-E1110 | HCIS Stage 3 and 4 documents: preparation - Riyadh (Thumamah) | 2027-01-20 → 2027-02-25 (+36d) | 2027-02-04 → 2027-04-08 (+63d) | 12d → 26d | 464d → 430d | NRY-E1050 FS+5d, NRY-E1090 FF → NRY-E1050 FS+8d, NRY-E1090 FF | resources Contract cost (BOQ x payment milestones) [17404 SAR]; Progress weight (fair EPC distribution) [17 h] → Contract cost (BOQ x payment milestones) [17056 SAR]; Progress weight (fair EPC distribution, SAR value) [14880 SAR] |
| APR | **Approval** | 2027-02-07 → 2027-04-11 (+63d) | 2027-02-28 → 2027-04-29 (+60d) |  |  |  |  |
| NRY-E1120 | HCIS Stage 3 and 4 documents: SAR final review and HCIS submission - Riyadh (Thumamah) | 2027-02-07 → 2027-04-11 (+63d) | 2027-02-28 → 2027-04-29 (+60d) |  | 464d → 430d |  | resources Contract cost (BOQ x payment milestones) [17404 SAR]; Progress weight (fair EPC distribution) [22 h] → Contract cost (BOQ x payment milestones) [17404 SAR]; Progress weight (fair EPC distribution, SAR value) [8680 SAR] |
| ASB | **As-built and O&M documentation** | 2027-09-21 → 2027-11-04 (+44d) | 2027-11-23 → 2028-01-03 (+41d) |  |  |  |  |
| SUB | **Submittal** | 2027-09-21 → 2027-11-04 (+44d) | 2027-11-02 → 2027-12-13 (+41d) |  |  |  |  |
| NRY-E1130 | As-built and O&M documentation: submittal - Riyadh (Thumamah) | 2027-09-21 → 2027-11-04 (+44d) | 2027-11-02 → 2027-12-13 (+41d) | 30d → 28d | 464d → 430d |  | resources Contract cost (BOQ x payment milestones) [52212 SAR]; Progress weight (fair EPC distribution) [43 h] → Contract cost (BOQ x payment milestones) [52212 SAR]; Progress weight (fair EPC distribution, SAR value) [25420 SAR] |
| APR | **Approval** | 2027-11-03 → 2027-12-14 (+41d) | 2027-11-23 → 2028-01-03 (+41d) |  |  |  |  |
| NRY-E1140 | As-built and O&M documentation: SAR review and approval - Riyadh (Thumamah) | 2027-11-03 → 2027-12-14 (+41d) | 2027-11-23 → 2028-01-03 (+41d) |  | 464d → 430d |  | resources Contract cost (BOQ x payment milestones) [17404 SAR]; Progress weight (fair EPC distribution) [22 h] → Contract cost (BOQ x payment milestones) [17404 SAR]; Progress weight (fair EPC distribution, SAR value) [13640 SAR] |
| HMK | **Makkah (HHR)** | 2027-10-10 → 2027-01-03 (-280d) | 2029-04-30 → 2028-06-06 (-328d) |  |  |  |  |
| HMK-E1200 | MS2 Engineering submittal complete (10%) - Makkah | 2028-01-13 → 2027-04-08 (-280d) | 2028-01-13 → 2027-04-08 (-280d) |  | 121d → 344d |  |  |
| HMK-E1210 | MS3 Engineering approved by SAR (10%) - Makkah | 2028-02-03 → 2027-04-29 (-280d) | 2028-02-03 → 2027-04-29 (-280d) |  | 106d → 329d |  |  |
| SRV | **Site survey and as-found verification** | 2026-12-27 → 2027-01-03 (+7d) | 2027-01-14 → 2027-02-28 (+45d) |  |  |  |  |
| SUB | **Submittal** | 2026-12-27 → 2027-01-03 (+7d) | 2027-01-07 → 2027-02-04 (+28d) |  |  |  |  |
| HMK-E1010 | Survey: submittal of site survey and as-found report - Makkah | 2027-10-10 → 2027-01-03 (-280d) | 2027-11-04 → 2027-02-04 (-273d) | 20d → 25d | 106d → 21d | PRJ-M2100 FS+153d → PRJ-A1060, PRJ-M1150 | resources Contract cost (BOQ x payment milestones) [48550 SAR]; Progress weight (fair EPC distribution) [115 h] → Contract cost (BOQ x payment milestones) [67000 SAR]; Progress weight (fair EPC distribution, SAR value) [76880 SAR] |
| APR | **Approval** | 2027-01-10 → 2027-02-07 (+28d) | 2027-01-14 → 2027-02-28 (+45d) |  |  |  |  |
| HMK-E1020 | Survey: SAR approval of survey report - Makkah | 2027-11-07 → 2027-02-07 (-273d) | 2027-11-11 → 2027-02-28 (-256d) | 5d → 15d | 166d → 368d |  | resources Contract cost (BOQ x payment milestones) [48550 SAR]; Progress weight (fair EPC distribution) [29 h] → Contract cost (BOQ x payment milestones) [48550 SAR]; Progress weight (fair EPC distribution, SAR value) [32860 SAR] |
| CNC | **Concept design** | 2027-01-10 → 2027-02-07 (+28d) | 2027-02-04 → 2027-03-15 (+39d) |  |  |  |  |
| SUB | **Submittal** | 2027-01-10 → 2027-02-07 (+28d) | 2027-01-14 → 2027-02-14 (+31d) |  |  |  |  |
| HMK-E1030 | Concept design: submittal - Makkah | 2027-11-07 → 2027-02-07 (-273d) | 2027-11-16 → 2027-02-14 (-275d) | 8d → 6d | 106d → 329d |  | resources Contract cost (BOQ x payment milestones) [97101 SAR]; Progress weight (fair EPC distribution) [63 h] → Contract cost (BOQ x payment milestones) [95159 SAR]; Progress weight (fair EPC distribution, SAR value) [31620 SAR] |
| APR | **Approval** | 2027-01-17 → 2027-02-15 (+29d) | 2027-02-04 → 2027-03-15 (+39d) |  |  |  |  |
| HMK-E1040 | Concept design: SAR review and approval - Makkah | 2027-11-17 → 2027-02-15 (-275d) | 2027-12-07 → 2027-03-15 (-267d) |  | 148d → 362d |  | resources Contract cost (BOQ x payment milestones) [97101 SAR]; Progress weight (fair EPC distribution) [118 h] → Contract cost (BOQ x payment milestones) [97101 SAR]; Progress weight (fair EPC distribution, SAR value) [78120 SAR] |
| PRE | **Preliminary (schematic) design** | 2027-01-17 → 2027-02-15 (+29d) | 2027-02-16 → 2027-03-29 (+41d) |  |  |  |  |
| SUB | **Submittal** | 2027-01-17 → 2027-02-15 (+29d) | 2027-01-26 → 2027-03-01 (+34d) |  |  |  |  |
| HMK-E1050 | Preliminary design: submittal - Makkah | 2027-11-17 → 2027-02-15 (-275d) | 2027-12-05 → 2027-03-01 (-279d) | 13d → 10d | 106d → 329d |  | resources Contract cost (BOQ x payment milestones) [194202 SAR]; Progress weight (fair EPC distribution) [151 h] → Contract cost (BOQ x payment milestones) [190318 SAR]; Progress weight (fair EPC distribution, SAR value) [78740 SAR] |
| APR | **Approval** | 2027-01-27 → 2027-03-02 (+34d) | 2027-02-16 → 2027-03-29 (+41d) |  |  |  |  |
| HMK-E1060 | Preliminary design: SAR review and approval - Makkah | 2027-12-06 → 2027-03-02 (-279d) | 2027-12-26 → 2027-03-29 (-272d) |  | 135d → 352d |  | resources Contract cost (BOQ x payment milestones) [194202 SAR]; Progress weight (fair EPC distribution) [174 h] → Contract cost (BOQ x payment milestones) [194202 SAR]; Progress weight (fair EPC distribution, SAR value) [118420 SAR] |
| DET | **Detailed design** | 2027-01-27 → 2027-03-02 (+34d) | 2027-03-14 → 2027-04-20 (+37d) |  |  |  |  |

| ID | Task | Start | Finish | Duration | Total float | Predecessors | Other |
| --- | --- | --- | --- | --- | --- | --- | --- |
| SUB | **Submittal** | 2027-01-27 → 2027-03-02 (+34d) | 2027-02-11 → 2027-03-30 (+47d) |  |  |  |  |
| HMK-E1070 | Detailed design: submittal (drawings, BOQ, data sheets) - Makkah | 2027-12-06 → 2027-03-02 (-279d) | 2028-01-02 → 2027-03-30 (-278d) | 20d → 16d | 106d → 329d |  | resources Contract cost (BOQ x payment milestones) [388404 SAR]; Progress weight (fair EPC distribution) [309 h] → Contract cost (BOQ x payment milestones) [380636 SAR]; Progress weight (fair EPC distribution, SAR value) [169880 SAR] |
| APR | **Approval** | 2027-02-14 → 2027-03-31 (+45d) | 2027-03-14 → 2027-04-20 (+37d) |  |  |  |  |
| HMK-E1080 | Detailed design: SAR review and approval - Makkah | 2028-01-03 → 2027-03-31 (-278d) | 2028-01-23 → 2027-04-20 (-278d) |  | 115d → 336d |  | resources Contract cost (BOQ x payment milestones) [388404 SAR]; Progress weight (fair EPC distribution) [232 h] → Contract cost (BOQ x payment milestones) [388404 SAR]; Progress weight (fair EPC distribution, SAR value) [159340 SAR] |
| IFC | **IFC and shop drawings** | 2027-02-14 → 2027-03-31 (+45d) | 2027-03-21 → 2027-04-29 (+39d) |  |  |  |  |
| SUB | **Submittal** | 2027-02-14 → 2027-03-31 (+45d) | 2027-02-18 → 2027-04-08 (+49d) |  |  |  |  |
| HMK-E1090 | IFC and shop drawings: submittal - Makkah | 2028-01-03 → 2027-03-31 (-278d) | 2028-01-13 → 2027-04-08 (-280d) | 9d → 7d | 106d → 329d |  | resources Contract cost (BOQ x payment milestones) [194202 SAR]; Progress weight (fair EPC distribution) [122 h] → Contract cost (BOQ x payment milestones) [190318 SAR]; Progress weight (fair EPC distribution, SAR value) [62620 SAR] |
| APR | **Approval** | 2027-02-21 → 2027-04-11 (+49d) | 2027-03-21 → 2027-04-29 (+39d) |  |  |  |  |
| HMK-E1100 | IFC and shop drawings: SAR approval and release - Makkah | 2028-01-16 → 2027-04-11 (-280d) | 2028-02-03 → 2027-04-29 (-280d) |  | 106d → 329d |  | resources Contract cost (BOQ x payment milestones) [194202 SAR]; Progress weight (fair EPC distribution) [203 h] → Contract cost (BOQ x payment milestones) [194202 SAR]; Progress weight (fair EPC distribution, SAR value) [134540 SAR] |
| HCS | **HCIS documentation (Stage 3 and 4)** | 2027-02-03 → 2027-03-17 (+42d) | 2027-03-21 → 2027-04-29 (+39d) |  |  |  |  |
| SUB | **Submittal** | 2027-02-03 → 2027-03-17 (+42d) | 2027-02-18 → 2027-04-08 (+49d) |  |  |  |  |
| HMK-E1110 | HCIS Stage 3 and 4 documents: preparation - Makkah | 2027-12-16 → 2027-03-17 (-274d) | 2028-01-13 → 2027-04-08 (-280d) | 21d → 17d | 106d → 329d | HMK-E1050 FS+8d, HMK-E1090 FF → HMK-E1050 FS+6d, HMK-E1090 FF | resources Contract cost (BOQ x payment milestones) [48550 SAR]; Progress weight (fair EPC distribution) [63 h] → Contract cost (BOQ x payment milestones) [47579 SAR]; Progress weight (fair EPC distribution, SAR value) [34720 SAR] |
| APR | **Approval** | 2027-02-21 → 2027-04-11 (+49d) | 2027-03-21 → 2027-04-29 (+39d) |  |  |  |  |
| HMK-E1120 | HCIS Stage 3 and 4 documents: SAR final review and HCIS submission - Makkah | 2028-01-16 → 2027-04-11 (-280d) | 2028-02-03 → 2027-04-29 (-280d) |  | 106d → 329d |  | resources Contract cost (BOQ x payment milestones) [48550 SAR]; Progress weight (fair EPC distribution) [45 h] → Contract cost (BOQ x payment milestones) [48550 SAR]; Progress weight (fair EPC distribution, SAR value) [31000 SAR] |
| ASB | **As-built and O&M documentation** | 2027-09-28 → 2028-03-08 (+162d) | 2027-11-29 → 2028-06-06 (+190d) |  |  |  |  |
| SUB | **Submittal** | 2027-09-28 → 2028-03-08 (+162d) | 2027-11-08 → 2028-05-16 (+190d) |  |  |  |  |
| HMK-E1130 | As-built and O&M documentation: submittal - Makkah | 2029-01-29 → 2028-03-08 (-327d) | 2029-04-02 → 2028-05-16 (-321d) | 40d → 45d | 106d → 329d |  | resources Contract cost (BOQ x payment milestones) [145651 SAR]; Progress weight (fair EPC distribution) [131 h] → Contract cost (BOQ x payment milestones) [145651 SAR]; Progress weight (fair EPC distribution, SAR value) [82460 SAR] |
| APR | **Approval** | 2027-11-09 → 2028-05-17 (+190d) | 2027-11-29 → 2028-06-06 (+190d) |  |  |  |  |
| HMK-E1140 | As-built and O&M documentation: SAR review and approval - Makkah | 2029-04-03 → 2028-05-17 (-321d) | 2029-04-30 → 2028-06-06 (-328d) |  | 106d → 329d |  | resources Contract cost (BOQ x payment milestones) [48550 SAR]; Progress weight (fair EPC distribution) [49 h] → Contract cost (BOQ x payment milestones) [48550 SAR]; Progress weight (fair EPC distribution, SAR value) [27280 SAR] |
| ERY | **Riyadh (Malaz) (EWR)** | 2026-12-27 → 2027-01-03 (+7d) | 2027-11-29 → 2027-12-15 (+16d) |  |  |  |  |
| ERY-E1200 | MS2 Engineering submittal complete (10%) - Riyadh (Malaz) | 2027-02-18 → 2027-04-08 (+49d) | 2027-02-18 → 2027-04-08 (+49d) |  | 475d → 458d |  |  |
| ERY-E1210 | MS3 Engineering approved by SAR (10%) - Riyadh (Malaz) | 2027-03-21 → 2027-04-29 (+39d) | 2027-03-21 → 2027-04-29 (+39d) |  | 460d → 443d |  |  |
| SRV | **Site survey and as-found verification** | 2027-08-19 → 2027-01-03 (-228d) | 2027-09-08 → 2027-02-02 (-218d) |  |  |  |  |
| SUB | **Submittal** | 2027-08-19 → 2027-01-03 (-228d) | 2027-09-01 → 2027-01-12 (-232d) |  |  |  |  |
| ERY-E1010 | Survey: submittal of site survey and as-found report - Riyadh (Malaz) | 2026-12-27 → 2027-01-03 (+7d) | 2027-01-07 → 2027-01-12 (+5d) | 10d → 8d | 22d → 38d | PRJ-M1100 FS+10d → PRJ-A1060, PRJ-M1150 | resources Contract cost (BOQ x payment milestones) [15458 SAR]; Progress weight (fair EPC distribution) [31 h] → Contract cost (BOQ x payment milestones) [21331 SAR]; Progress weight (fair EPC distribution, SAR value) [16740 SAR] |
| APR | **Approval** | 2027-09-02 → 2027-01-13 (-232d) | 2027-09-08 → 2027-02-02 (-218d) |  |  |  |  |
| ERY-E1020 | Survey: SAR approval of survey report - Riyadh (Malaz) | 2027-01-10 → 2027-01-13 (+3d) | 2027-01-14 → 2027-02-02 (+19d) | 5d → 15d | 500d → 499d |  | resources Contract cost (BOQ x payment milestones) [15458 SAR]; Progress weight (fair EPC distribution) [15 h] → Contract cost (BOQ x payment milestones) [15458 SAR]; Progress weight (fair EPC distribution, SAR value) [17980 SAR] |
| CNC | **Concept design** | 2027-09-02 → 2027-01-13 (-232d) | 2027-09-30 → 2027-02-14 (-228d) |  |  |  |  |
| SUB | **Submittal** | 2027-09-02 → 2027-01-13 (-232d) | 2027-09-08 → 2027-01-24 (-227d) |  |  |  |  |
| ERY-E1030 | Concept design: submittal - Riyadh (Malaz) | 2027-01-10 → 2027-01-13 (+3d) | 2027-01-14 → 2027-01-24 (+10d) | 5d → 8d | 460d → 443d |  | resources Contract cost (BOQ x payment milestones) [30915 SAR]; Progress weight (fair EPC distribution) [14 h] → Contract cost (BOQ x payment milestones) [30297 SAR]; Progress weight (fair EPC distribution, SAR value) [12400 SAR] |
| APR | **Approval** | 2027-09-09 → 2027-01-25 (-227d) | 2027-09-30 → 2027-02-14 (-228d) |  |  |  |  |
| ERY-E1040 | Concept design: SAR review and approval - Riyadh (Malaz) | 2027-01-17 → 2027-01-25 (+8d) | 2027-02-04 → 2027-02-14 (+10d) |  | 485d → 491d |  | resources Contract cost (BOQ x payment milestones) [30915 SAR]; Progress weight (fair EPC distribution) [43 h] → Contract cost (BOQ x payment milestones) [30915 SAR]; Progress weight (fair EPC distribution, SAR value) [22940 SAR] |
| PRE | **Preliminary (schematic) design** | 2027-09-09 → 2027-01-25 (-227d) | 2027-10-12 → 2027-03-14 (-212d) |  |  |  |  |
| SUB | **Submittal** | 2027-09-09 → 2027-01-25 (-227d) | 2027-09-20 → 2027-02-11 (-221d) |  |  |  |  |
| ERY-E1050 | Preliminary design: submittal - Riyadh (Malaz) | 2027-01-17 → 2027-01-25 (+8d) | 2027-01-26 → 2027-02-11 (+16d) | 8d → 14d | 460d → 443d |  | resources Contract cost (BOQ x payment milestones) [61830 SAR]; Progress weight (fair EPC distribution) [36 h] → Contract cost (BOQ x payment milestones) [60594 SAR]; Progress weight (fair EPC distribution, SAR value) [30380 SAR] |
| APR | **Approval** | 2027-09-21 → 2027-02-14 (-219d) | 2027-10-12 → 2027-03-14 (-212d) |  |  |  |  |
| ERY-E1060 | Preliminary design: SAR review and approval - Riyadh (Malaz) | 2027-01-27 → 2027-02-14 (+18d) | 2027-02-16 → 2027-03-14 (+26d) |  |  |  | resources Contract cost (BOQ x payment milestones) [61830 SAR]; Progress weight (fair EPC distribution) [67 h] → Contract cost (BOQ x payment milestones) [61830 SAR]; Progress weight (fair EPC distribution, SAR value) [32240 SAR] |
| DET | **Detailed design** | 2027-09-21 → 2027-02-14 (-219d) | 2027-10-28 → 2027-04-13 (-198d) |  |  |  |  |
| SUB | **Submittal** | 2027-09-21 → 2027-02-14 (-219d) | 2027-10-07 → 2027-03-23 (-198d) |  |  |  |  |
| ERY-E1070 | Detailed design: submittal (drawings, BOQ, data sheets) - Riyadh (Malaz) | 2027-01-27 → 2027-02-14 (+18d) | 2027-02-11 → 2027-03-23 (+40d) | 12d → 22d | 460d → 443d |  | resources Contract cost (BOQ x payment milestones) [123661 SAR]; Progress weight (fair EPC distribution) [77 h] → Contract cost (BOQ x payment milestones) [121188 SAR]; Progress weight (fair EPC distribution, SAR value) [62000 SAR] |
| APR | **Approval** | 2027-10-10 → 2027-03-24 (-200d) | 2027-10-28 → 2027-04-13 (-198d) |  |  |  |  |
| ERY-E1080 | Detailed design: SAR review and approval - Riyadh (Malaz) | 2027-02-14 → 2027-03-24 (+38d) | 2027-03-14 → 2027-04-13 (+30d) |  | 465d → 455d |  | resources Contract cost (BOQ x payment milestones) [123661 SAR]; Progress weight (fair EPC distribution) [96 h] → Contract cost (BOQ x payment milestones) [123661 SAR]; Progress weight (fair EPC distribution, SAR value) [42160 SAR] |
| IFC | **IFC and shop drawings** | 2027-10-10 → 2027-03-24 (-200d) | 2027-11-04 → 2027-04-29 (-189d) |  |  |  |  |
| SUB | **Submittal** | 2027-10-10 → 2027-03-24 (-200d) | 2027-10-14 → 2027-04-08 (-189d) |  |  |  |  |
| ERY-E1090 | IFC and shop drawings: submittal - Riyadh (Malaz) | 2027-02-14 → 2027-03-24 (+38d) | 2027-02-18 → 2027-04-08 (+49d) | 5d → 12d | 460d → 443d |  | resources Contract cost (BOQ x payment milestones) [61830 SAR]; Progress weight (fair EPC distribution) [26 h] → Contract cost (BOQ x payment milestones) [60594 SAR]; Progress weight (fair EPC distribution, SAR value) [27900 SAR] |
| APR | **Approval** | 2027-10-17 → 2027-04-11 (-189d) | 2027-11-04 → 2027-04-29 (-189d) |  |  |  |  |
| ERY-E1100 | IFC and shop drawings: SAR approval and release - Riyadh (Malaz) | 2027-02-21 → 2027-04-11 (+49d) | 2027-03-21 → 2027-04-29 (+39d) |  | 460d → 443d |  | resources Contract cost (BOQ x payment milestones) [61830 SAR]; Progress weight (fair EPC distribution) [78 h] → Contract cost (BOQ x payment milestones) [61830 SAR]; Progress weight (fair EPC distribution, SAR value) [34720 SAR] |
| HCS | **HCIS documentation (Stage 3 and 4)** | 2027-09-29 → 2027-02-25 (-216d) | 2027-11-04 → 2027-04-29 (-189d) |  |  |  |  |
| SUB | **Submittal** | 2027-09-29 → 2027-02-25 (-216d) | 2027-10-14 → 2027-04-08 (-189d) |  |  |  |  |
| ERY-E1110 | HCIS Stage 3 and 4 documents: preparation - Riyadh (Malaz) | 2027-02-03 → 2027-02-25 (+22d) | 2027-02-18 → 2027-04-08 (+49d) | 12d → 26d | 460d → 443d | ERY-E1050 FS+5d, ERY-E1090 FF → ERY-E1050 FS+8d, ERY-E1090 FF | resources Contract cost (BOQ x payment milestones) [15458 SAR]; Progress weight (fair EPC distribution) [15 h] → Contract cost (BOQ x payment milestones) [15148 SAR]; Progress weight (fair EPC distribution, SAR value) [13020 SAR] |
| APR | **Approval** | 2027-10-17 → 2027-04-11 (-189d) | 2027-11-04 → 2027-04-29 (-189d) |  |  |  |  |
| ERY-E1120 | HCIS Stage 3 and 4 documents: SAR final review and HCIS submission - Riyadh (Malaz) | 2027-02-21 → 2027-04-11 (+49d) | 2027-03-21 → 2027-04-29 (+39d) |  | 460d → 443d |  | resources Contract cost (BOQ x payment milestones) [15458 SAR]; Progress weight (fair EPC distribution) [19 h] → Contract cost (BOQ x payment milestones) [15458 SAR]; Progress weight (fair EPC distribution, SAR value) [7440 SAR] |
| ASB | **As-built and O&M documentation** | 2028-06-12 → 2027-10-19 (-237d) | 2028-08-13 → 2027-12-15 (-242d) |  |  |  |  |
| SUB | **Submittal** | 2028-06-12 → 2027-10-19 (-237d) | 2028-07-23 → 2027-11-24 (-242d) |  |  |  |  |
| ERY-E1130 | As-built and O&M documentation: submittal - Riyadh (Malaz) | 2027-09-28 → 2027-10-19 (+21d) | 2027-11-08 → 2027-11-24 (+16d) | 30d → 27d | 460d → 443d |  | resources Contract cost (BOQ x payment milestones) [46373 SAR]; Progress weight (fair EPC distribution) [38 h] → Contract cost (BOQ x payment milestones) [46373 SAR]; Progress weight (fair EPC distribution, SAR value) [22320 SAR] |
| APR | **Approval** | 2028-07-24 → 2027-11-25 (-242d) | 2028-08-13 → 2027-12-15 (-242d) |  |  |  |  |
| ERY-E1140 | As-built and O&M documentation: SAR review and approval - Riyadh (Malaz) | 2027-11-09 → 2027-11-25 (+16d) | 2027-11-29 → 2027-12-15 (+16d) |  | 460d → 443d |  | resources Contract cost (BOQ x payment milestones) [15458 SAR]; Progress weight (fair EPC distribution) [19 h] → Contract cost (BOQ x payment milestones) [15458 SAR]; Progress weight (fair EPC distribution, SAR value) [12400 SAR] |
| HJD | **Jeddah (HHR)** | 2027-03-04 → 2027-03-29 (+25d) | 2028-08-31 → 2028-08-02 (-29d) |  |  |  |  |
| HJD-E1200 | MS2 Engineering submittal complete (10%) - Jeddah | 2027-06-23 → 2027-07-07 (+14d) | 2027-06-23 → 2027-07-07 (+14d) |  | 282d → 303d |  |  |
| HJD-E1210 | MS3 Engineering approved by SAR (10%) - Jeddah | 2027-07-14 → 2027-07-28 (+14d) | 2027-07-14 → 2027-07-28 (+14d) |  | 267d → 288d |  |  |
| SRV | **Site survey and as-found verification** | 2027-10-10 → 2027-03-29 (-195d) | 2027-10-28 → 2027-05-24 (-157d) |  |  |  |  |
| SUB | **Submittal** | 2027-11-28 → 2027-03-29 (-244d) | 2027-12-02 → 2027-04-26 (-220d) |  |  |  |  |
| HJD-E1010 | Survey: submittal of site survey and as-found report - Jeddah | 2027-03-04 → 2027-03-29 (+25d) | 2027-04-07 → 2027-04-26 (+19d) | 20d → 21d | 267d → 288d | PRJ-M2100 FS+8d → PRJ-A1060, PRJ-M2100 | resources Contract cost (BOQ x payment milestones) [47754 SAR]; Progress weight (fair EPC distribution) [114 h] → Contract cost (BOQ x payment milestones) [65901 SAR]; Progress weight (fair EPC distribution, SAR value) [72540 SAR] |
| APR | **Approval** | 2027-12-05 → 2027-04-27 (-222d) | 2027-12-23 → 2027-05-24 (-213d) |  |  |  |  |
| HJD-E1020 | Survey: SAR approval of survey report - Jeddah | 2027-04-08 → 2027-04-27 (+19d) | 2027-04-14 → 2027-05-24 (+40d) | 5d → 15d | 327d → 335d |  | resources Contract cost (BOQ x payment milestones) [47754 SAR]; Progress weight (fair EPC distribution) [28 h] → Contract cost (BOQ x payment milestones) [47754 SAR]; Progress weight (fair EPC distribution, SAR value) [35960 SAR] |
| CNC | **Concept design** | 2027-10-24 → 2027-04-27 (-180d) | 2027-11-18 → 2027-06-02 (-169d) |  |  |  |  |
| SUB | **Submittal** | 2027-11-17 → 2027-04-27 (-204d) | 2027-12-02 → 2027-05-05 (-211d) |  |  |  |  |
| HJD-E1030 | Concept design: submittal - Jeddah | 2027-04-08 → 2027-04-27 (+19d) | 2027-04-19 → 2027-05-05 (+16d) | 8d → 7d | 267d → 288d |  | resources Contract cost (BOQ x payment milestones) [95509 SAR]; Progress weight (fair EPC distribution) [62 h] → Contract cost (BOQ x payment milestones) [93599 SAR]; Progress weight (fair EPC distribution, SAR value) [34100 SAR] |
| APR | **Approval** | 2027-12-05 → 2027-05-06 (-213d) | 2027-12-23 → 2027-06-02 (-204d) |  |  |  |  |
| HJD-E1040 | Concept design: SAR review and approval - Jeddah | 2027-04-20 → 2027-05-06 (+16d) | 2027-05-10 → 2027-06-02 (+23d) |  | 309d → 328d |  | resources Contract cost (BOQ x payment milestones) [95509 SAR]; Progress weight (fair EPC distribution) [116 h] → Contract cost (BOQ x payment milestones) [95509 SAR]; Progress weight (fair EPC distribution, SAR value) [73780 SAR] |

| ID | Task | Start | Finish | Duration | Total float | Predecessors | Other |
| --- | --- | --- | --- | --- | --- | --- | --- |
| PRE | **Preliminary (schematic) design** | 2027-10-31 → 2027-05-06 (-178d) | 2027-11-30 → 2027-06-20 (-163d) |  |  |  |  |
| SUB | **Submittal** | 2028-07-31 → 2027-05-06 (-452d) | 2028-09-10 → 2027-05-30 (-469d) |  |  |  |  |
| HJD-E1050 | Preliminary design: submittal - Jeddah | 2027-04-20 → 2027-05-06 (+16d) | 2027-05-06 → 2027-05-30 (+24d) | 13d → 12d | 267d → 288d |  | resources Contract cost (BOQ x payment milestones) [191018 SAR]; Progress weight (fair EPC distribution) [148 h] → Contract cost (BOQ x payment milestones) [187197 SAR]; Progress weight (fair EPC distribution, SAR value) [86180 SAR] |
| APR | **Approval** | 2028-09-11 → 2027-05-31 (-469d) | 2028-10-01 → 2027-06-20 (-469d) |  |  |  |  |
| HJD-E1060 | Preliminary design: SAR review and approval - Jeddah | 2027-05-09 → 2027-05-31 (+22d) | 2027-06-03 → 2027-06-20 (+17d) |  | 296d → 316d |  | resources Contract cost (BOQ x payment milestones) [191018 SAR]; Progress weight (fair EPC distribution) [171 h] → Contract cost (BOQ x payment milestones) [191018 SAR]; Progress weight (fair EPC distribution, SAR value) [107880 SAR] |
| DET | **Detailed design** | 2027-11-10 → 2027-05-31 (-163d) | 2027-12-16 → 2027-07-15 (-154d) |  |  |  |  |
| SUB | **Submittal** | 2028-05-08 → 2027-05-31 (-343d) | 2028-05-21 → 2027-06-24 (-332d) |  |  |  |  |
| HJD-E1070 | Detailed design: submittal (drawings, BOQ, data sheets) - Jeddah | 2027-05-09 → 2027-05-31 (+22d) | 2027-06-10 → 2027-06-24 (+14d) | 20d → 19d | 267d → 288d |  | resources Contract cost (BOQ x payment milestones) [382035 SAR]; Progress weight (fair EPC distribution) [304 h] → Contract cost (BOQ x payment milestones) [374395 SAR]; Progress weight (fair EPC distribution, SAR value) [181040 SAR] |
| APR | **Approval** | 2028-05-22 → 2027-06-27 (-330d) | 2028-05-28 → 2027-07-15 (-318d) |  |  |  |  |
| HJD-E1080 | Detailed design: SAR review and approval - Jeddah | 2027-06-13 → 2027-06-27 (+14d) | 2027-07-01 → 2027-07-15 (+14d) |  | 276d → 297d |  | resources Contract cost (BOQ x payment milestones) [382035 SAR]; Progress weight (fair EPC distribution) [228 h] → Contract cost (BOQ x payment milestones) [382035 SAR]; Progress weight (fair EPC distribution, SAR value) [142600 SAR] |
| IFC | **IFC and shop drawings** | 2027-11-28 → 2027-06-27 (-154d) | 2027-12-23 → 2027-07-28 (-148d) |  |  |  |  |
| SUB | **Submittal** | 2027-06-24 → 2027-06-27 (+3d) |  |  |  |  |  |
| HJD-E1090 | IFC and shop drawings: submittal - Jeddah | 2027-06-13 → 2027-06-27 (+14d) | 2027-06-23 → 2027-07-07 (+14d) |  | 267d → 288d |  | resources Contract cost (BOQ x payment milestones) [191018 SAR]; Progress weight (fair EPC distribution) [120 h] → Contract cost (BOQ x payment milestones) [187197 SAR]; Progress weight (fair EPC distribution, SAR value) [72540 SAR] |
| APR | **Approval** |  | 2027-07-14 → 2027-07-28 (+14d) |  |  |  |  |
| HJD-E1100 | IFC and shop drawings: SAR approval and release - Jeddah | 2027-06-24 → 2027-07-08 (+14d) | 2027-07-14 → 2027-07-28 (+14d) |  | 267d → 288d |  | resources Contract cost (BOQ x payment milestones) [191018 SAR]; Progress weight (fair EPC distribution) [200 h] → Contract cost (BOQ x payment milestones) [191018 SAR]; Progress weight (fair EPC distribution, SAR value) [121520 SAR] |
| HCS | **HCIS documentation (Stage 3 and 4)** | 2027-11-17 → 2027-06-09 (-161d) | 2027-12-23 → 2027-07-28 (-148d) |  |  |  |  |
| SUB | **Submittal** | 2027-07-08 → 2027-06-09 (-29d) | 2027-07-14 → 2027-07-07 (-7d) |  |  |  |  |
| HJD-E1110 | HCIS Stage 3 and 4 documents: preparation - Jeddah | 2027-05-26 → 2027-06-09 (+14d) | 2027-06-23 → 2027-07-07 (+14d) |  | 267d → 288d | HJD-E1050 FS+8d, HJD-E1090 FF → HJD-E1050 FS+7d, HJD-E1090 FF | resources Contract cost (BOQ x payment milestones) [47754 SAR]; Progress weight (fair EPC distribution) [62 h] → Contract cost (BOQ x payment milestones) [46799 SAR]; Progress weight (fair EPC distribution, SAR value) [37820 SAR] |
| APR | **Approval** | 2027-07-15 → 2027-07-08 (-7d) | 2027-08-04 → 2027-07-28 (-7d) |  |  |  |  |
| HJD-E1120 | HCIS Stage 3 and 4 documents: SAR final review and HCIS submission - Jeddah | 2027-06-24 → 2027-07-08 (+14d) | 2027-07-14 → 2027-07-28 (+14d) |  | 267d → 288d |  | resources Contract cost (BOQ x payment milestones) [47754 SAR]; Progress weight (fair EPC distribution) [44 h] → Contract cost (BOQ x payment milestones) [47754 SAR]; Progress weight (fair EPC distribution, SAR value) [26660 SAR] |
| ASB | **As-built and O&M documentation** | 2028-07-31 → 2028-05-17 (-75d) | 2028-10-01 → 2028-08-02 (-60d) |  |  |  |  |
| SUB | **Submittal** | 2027-07-15 → 2028-05-17 (+307d) | 2027-07-26 → 2028-07-12 (+352d) |  |  |  |  |
| HJD-E1130 | As-built and O&M documentation: submittal - Jeddah | 2028-06-18 → 2028-05-17 (-32d) | 2028-08-10 → 2028-07-12 (-29d) | 40d → 41d | 267d → 288d |  | resources Contract cost (BOQ x payment milestones) [143263 SAR]; Progress weight (fair EPC distribution) [129 h] → Contract cost (BOQ x payment milestones) [143263 SAR]; Progress weight (fair EPC distribution, SAR value) [78740 SAR] |
| APR | **Approval** | 2027-07-27 → 2028-07-13 (+352d) | 2027-08-16 → 2028-08-02 (+352d) |  |  |  |  |
| HJD-E1140 | As-built and O&M documentation: SAR review and approval - Jeddah | 2028-08-13 → 2028-07-13 (-31d) | 2028-08-31 → 2028-08-02 (-29d) |  | 267d → 288d |  | resources Contract cost (BOQ x payment milestones) [47754 SAR]; Progress weight (fair EPC distribution) [48 h] → Contract cost (BOQ x payment milestones) [47754 SAR]; Progress weight (fair EPC distribution, SAR value) [29140 SAR] |
| EDM | **Dammam (EWR)** | 2027-06-24 → 2027-06-17 (-7d) | 2028-06-08 → 2028-06-06 (-2d) |  |  |  |  |
| EDM-E1200 | MS2 Engineering submittal complete (10%) - Dammam | 2027-08-18 → 2027-09-22 (+35d) | 2027-08-18 → 2027-09-22 (+35d) |  | 347d → 344d |  |  |
| EDM-E1210 | MS3 Engineering approved by SAR (10%) - Dammam | 2027-09-08 → 2027-10-14 (+36d) | 2027-09-08 → 2027-10-14 (+36d) |  | 332d → 329d |  |  |
| SRV | **Site survey and as-found verification** | 2028-05-08 → 2027-06-17 (-326d) | 2028-05-28 → 2027-07-19 (-314d) |  |  |  |  |
| SUB | **Submittal** | 2028-05-22 → 2027-06-17 (-340d) | 2028-05-28 → 2027-06-28 (-335d) |  |  |  |  |
| EDM-E1010 | Survey: submittal of site survey and as-found report - Dammam | 2027-06-24 → 2027-06-17 (-7d) | 2027-07-07 → 2027-06-28 (-9d) | 10d → 8d | 332d → 329d | PRJ-M2100 FS+78d → PRJ-A1060, PRJ-M2100 FS+53d | resources Contract cost (BOQ x payment milestones) [15938 SAR]; Progress weight (fair EPC distribution) [32 h] → Contract cost (BOQ x payment milestones) [21994 SAR]; Progress weight (fair EPC distribution, SAR value) [17360 SAR] |
| APR | **Approval** | 2028-05-29 → 2027-06-29 (-335d) | 2028-06-18 → 2027-07-19 (-335d) |  |  |  |  |
| EDM-E1020 | Survey: SAR approval of survey report - Dammam | 2027-07-08 → 2027-06-29 (-9d) | 2027-07-14 → 2027-07-19 (+5d) | 5d → 15d | 372d → 391d |  | resources Contract cost (BOQ x payment milestones) [15938 SAR]; Progress weight (fair EPC distribution) [16 h] → Contract cost (BOQ x payment milestones) [15938 SAR]; Progress weight (fair EPC distribution, SAR value) [18600 SAR] |
| CNC | **Concept design** | 2028-05-22 → 2027-06-29 (-328d) | 2028-06-18 → 2027-08-01 (-322d) |  |  |  |  |
| SUB | **Submittal** | 2028-05-29 → 2027-06-29 (-335d) | 2028-06-07 → 2027-07-11 (-332d) |  |  |  |  |
| EDM-E1030 | Concept design: submittal - Dammam | 2027-07-08 → 2027-06-29 (-9d) | 2027-07-14 → 2027-07-11 (-3d) | 5d → 9d | 332d → 329d |  | resources Contract cost (BOQ x payment milestones) [31875 SAR]; Progress weight (fair EPC distribution) [15 h] → Contract cost (BOQ x payment milestones) [31238 SAR]; Progress weight (fair EPC distribution, SAR value) [13640 SAR] |
| APR | **Approval** | 2028-06-08 → 2027-07-12 (-332d) | 2028-06-28 → 2027-08-01 (-332d) |  |  |  |  |
| EDM-E1040 | Concept design: SAR review and approval - Dammam | 2027-07-15 → 2027-07-12 (-3d) | 2027-08-04 → 2027-08-01 (-3d) |  | 357d → 382d |  | resources Contract cost (BOQ x payment milestones) [31875 SAR]; Progress weight (fair EPC distribution) [44 h] → Contract cost (BOQ x payment milestones) [31875 SAR]; Progress weight (fair EPC distribution, SAR value) [22320 SAR] |
| PRE | **Preliminary (schematic) design** | 2028-05-29 → 2027-07-12 (-322d) | 2028-06-28 → 2027-08-23 (-310d) |  |  |  |  |
| SUB | **Submittal** | 2028-06-08 → 2027-07-12 (-332d) | 2028-06-25 → 2027-08-02 (-328d) |  |  |  |  |
| EDM-E1050 | Preliminary design: submittal - Dammam | 2027-07-15 → 2027-07-12 (-3d) | 2027-07-26 → 2027-08-02 (+7d) | 8d → 16d | 332d → 329d |  | resources Contract cost (BOQ x payment milestones) [63750 SAR]; Progress weight (fair EPC distribution) [37 h] → Contract cost (BOQ x payment milestones) [62475 SAR]; Progress weight (fair EPC distribution, SAR value) [33480 SAR] |
| APR | **Approval** | 2028-06-26 → 2027-08-03 (-328d) | 2028-07-16 → 2027-08-23 (-328d) |  |  |  |  |
| EDM-E1060 | Preliminary design: SAR review and approval - Dammam | 2027-07-27 → 2027-08-03 (+7d) | 2027-08-16 → 2027-08-23 (+7d) |  | 349d → 366d |  | resources Contract cost (BOQ x payment milestones) [63750 SAR]; Progress weight (fair EPC distribution) [70 h] → Contract cost (BOQ x payment milestones) [63750 SAR]; Progress weight (fair EPC distribution, SAR value) [31620 SAR] |
| DET | **Detailed design** | 2028-06-08 → 2027-08-03 (-310d) | 2028-07-16 → 2027-09-28 (-292d) |  |  |  |  |
| SUB | **Submittal** | 2028-06-26 → 2027-08-03 (-328d) | 2028-07-02 → 2027-09-06 (-300d) |  |  |  |  |
| EDM-E1070 | Detailed design: submittal (drawings, BOQ, data sheets) - Dammam | 2027-07-27 → 2027-08-03 (+7d) | 2027-08-11 → 2027-09-06 (+26d) | 12d → 25d | 332d → 329d |  | resources Contract cost (BOQ x payment milestones) [127500 SAR]; Progress weight (fair EPC distribution) [79 h] → Contract cost (BOQ x payment milestones) [124950 SAR]; Progress weight (fair EPC distribution, SAR value) [67580 SAR] |
| APR | **Approval** | 2028-07-03 → 2027-09-07 (-300d) | 2028-07-23 → 2027-09-28 (-299d) |  |  |  |  |
| EDM-E1080 | Detailed design: SAR review and approval - Dammam | 2027-08-12 → 2027-09-07 (+26d) | 2027-09-01 → 2027-09-28 (+27d) |  | 337d → 341d |  | resources Contract cost (BOQ x payment milestones) [127500 SAR]; Progress weight (fair EPC distribution) [99 h] → Contract cost (BOQ x payment milestones) [127500 SAR]; Progress weight (fair EPC distribution, SAR value) [40300 SAR] |
| IFC | **IFC and shop drawings** | 2028-06-26 → 2027-09-07 (-293d) | 2028-07-23 → 2027-10-14 (-283d) |  |  |  |  |
| SUB | **Submittal** | 2028-06-15 → 2027-09-07 (-282d) | 2028-07-02 → 2027-09-22 (-284d) |  |  |  |  |
| EDM-E1090 | IFC and shop drawings: submittal - Dammam | 2027-08-12 → 2027-09-07 (+26d) | 2027-08-18 → 2027-09-22 (+35d) | 5d → 12d | 332d → 329d |  | resources Contract cost (BOQ x payment milestones) [63750 SAR]; Progress weight (fair EPC distribution) [27 h] → Contract cost (BOQ x payment milestones) [62475 SAR]; Progress weight (fair EPC distribution, SAR value) [28520 SAR] |
| APR | **Approval** | 2028-07-03 → 2027-09-26 (-281d) | 2028-07-23 → 2027-10-14 (-283d) |  |  |  |  |
| EDM-E1100 | IFC and shop drawings: SAR approval and release - Dammam | 2027-08-19 → 2027-09-26 (+38d) | 2027-09-08 → 2027-10-14 (+36d) |  | 332d → 329d |  | resources Contract cost (BOQ x payment milestones) [63750 SAR]; Progress weight (fair EPC distribution) [80 h] → Contract cost (BOQ x payment milestones) [63750 SAR]; Progress weight (fair EPC distribution, SAR value) [35960 SAR] |
| HCS | **HCIS documentation (Stage 3 and 4)** | 2028-06-15 → 2027-08-16 (-304d) | 2028-07-23 → 2027-10-14 (-283d) |  |  |  |  |
| SUB | **Submittal** | 2029-02-20 → 2027-08-16 (-554d) | 2029-04-03 → 2027-09-22 (-559d) |  |  |  |  |
| EDM-E1110 | HCIS Stage 3 and 4 documents: preparation - Dammam | 2027-08-03 → 2027-08-16 (+13d) | 2027-08-18 → 2027-09-22 (+35d) | 12d → 28d | 332d → 329d | EDM-E1050 FS+5d, EDM-E1090 FF → EDM-E1050 FS+9d, EDM-E1090 FF | resources Contract cost (BOQ x payment milestones) [15938 SAR]; Progress weight (fair EPC distribution) [16 h] → Contract cost (BOQ x payment milestones) [15619 SAR]; Progress weight (fair EPC distribution, SAR value) [14260 SAR] |
| APR | **Approval** | 2029-04-04 → 2027-09-26 (-556d) | 2029-05-01 → 2027-10-14 (-565d) |  |  |  |  |
| EDM-E1120 | HCIS Stage 3 and 4 documents: SAR final review and HCIS submission - Dammam | 2027-08-19 → 2027-09-26 (+38d) | 2027-09-08 → 2027-10-14 (+36d) |  | 332d → 329d |  | resources Contract cost (BOQ x payment milestones) [15938 SAR]; Progress weight (fair EPC distribution) [20 h] → Contract cost (BOQ x payment milestones) [15938 SAR]; Progress weight (fair EPC distribution, SAR value) [7440 SAR] |
| ASB | **As-built and O&M documentation** | 2029-02-20 → 2028-04-03 (-323d) | 2029-05-01 → 2028-06-06 (-329d) |  |  |  |  |
| SUB | **Submittal** | 2029-05-14 → 2028-04-03 (-406d) | 2029-06-24 → 2028-05-16 (-404d) |  |  |  |  |
| EDM-E1130 | As-built and O&M documentation: submittal - Dammam | 2028-04-02 → 2028-04-03 (+1d) | 2028-05-18 → 2028-05-16 (-2d) | 30d → 27d | 332d → 329d |  | resources Contract cost (BOQ x payment milestones) [47813 SAR]; Progress weight (fair EPC distribution) [39 h] → Contract cost (BOQ x payment milestones) [47813 SAR]; Progress weight (fair EPC distribution, SAR value) [22940 SAR] |
| APR | **Approval** | 2029-06-25 → 2028-05-17 (-404d) | 2029-07-15 → 2028-06-06 (-404d) |  |  |  |  |
| EDM-E1140 | As-built and O&M documentation: SAR review and approval - Dammam | 2028-05-21 → 2028-05-17 (-4d) | 2028-06-08 → 2028-06-06 (-2d) |  | 332d → 329d |  | resources Contract cost (BOQ x payment milestones) [15938 SAR]; Progress weight (fair EPC distribution) [20 h] → Contract cost (BOQ x payment milestones) [15938 SAR]; Progress weight (fair EPC distribution, SAR value) [13020 SAR] |
| NQS | **Al Qassim (NSR)** | 2027-08-19 → 2027-08-10 (-9d) | 2028-08-13 → 2028-08-20 (+7d) |  |  |  |  |
| NQS-E1200 | MS2 Engineering submittal complete (10%) - Al Qassim | 2027-10-14 → 2027-11-18 (+35d) | 2027-10-14 → 2027-11-18 (+35d) |  | 301d → 291d |  |  |
| NQS-E1210 | MS3 Engineering approved by SAR (10%) - Al Qassim | 2027-11-04 → 2027-12-09 (+35d) | 2027-11-04 → 2027-12-09 (+35d) |  | 286d → 276d |  |  |
| SRV | **Site survey and as-found verification** | 2028-07-20 → 2027-08-10 (-345d) | 2028-08-09 → 2027-09-09 (-335d) |  |  |  |  |
| SUB | **Submittal** | 2028-09-07 → 2027-08-10 (-394d) | 2028-09-20 → 2027-08-19 (-398d) |  |  |  |  |
| NQS-E1010 | Survey: submittal of site survey and as-found report - Al Qassim | 2027-08-19 → 2027-08-10 (-9d) | 2027-09-01 → 2027-08-19 (-13d) | 10d → 8d | 286d → 276d | PRJ-M2100 FS+118d → PRJ-A1060, PRJ-M2100 FS+91d | resources Contract cost (BOQ x payment milestones) [16995 SAR]; Progress weight (fair EPC distribution) [34 h] → Contract cost (BOQ x payment milestones) [23453 SAR]; Progress weight (fair EPC distribution, SAR value) [18600 SAR] |
| APR | **Approval** | 2028-09-21 → 2027-08-22 (-396d) | 2028-09-27 → 2027-09-09 (-384d) |  |  |  |  |

| ID | Task | Start | Finish | Duration | Total float | Predecessors | Other |
| --- | --- | --- | --- | --- | --- | --- | --- |
| NQS-E1020 | Survey: SAR approval of survey report - Al Qassim | 2027-09-02 → 2027-08-22 (-11d) | 2027-09-08 → 2027-09-09 (+1d) | 5d → 15d | 326d → 340d |  | resources Contract cost (BOQ x payment milestones) [16995 SAR]; Progress weight (fair EPC distribution) [17 h] → Contract cost (BOQ x payment milestones) [16995 SAR]; Progress weight (fair EPC distribution, SAR value) [19840 SAR] |
| CNC | **Concept design** | 2028-08-03 → 2027-08-22 (-347d) | 2028-08-30 → 2027-09-26 (-339d) |  |  |  |  |
| SUB | **Submittal** | 2028-09-21 → 2027-08-22 (-396d) | 2028-09-27 → 2027-09-02 (-391d) |  |  |  |  |
| NQS-E1030 | Concept design: submittal - Al Qassim | 2027-09-02 → 2027-08-22 (-11d) | 2027-09-08 → 2027-09-02 (-6d) | 5d → 10d | 286d → 276d |  | resources Contract cost (BOQ x payment milestones) [33989 SAR]; Progress weight (fair EPC distribution) [16 h] → Contract cost (BOQ x payment milestones) [33309 SAR]; Progress weight (fair EPC distribution, SAR value) [15500 SAR] |
| APR | **Approval** | 2028-09-28 → 2027-09-05 (-389d) | 2028-10-18 → 2027-09-26 (-388d) |  |  |  |  |
| NQS-E1040 | Concept design: SAR review and approval - Al Qassim | 2027-09-09 → 2027-09-05 (-4d) | 2027-09-30 → 2027-09-26 (-4d) |  | 311d → 330d |  | resources Contract cost (BOQ x payment milestones) [33989 SAR]; Progress weight (fair EPC distribution) [47 h] → Contract cost (BOQ x payment milestones) [33989 SAR]; Progress weight (fair EPC distribution, SAR value) [22940 SAR] |
| PRE | **Preliminary (schematic) design** | 2028-08-10 → 2027-09-05 (-340d) | 2028-09-11 → 2027-10-18 (-329d) |  |  |  |  |
| SUB | **Submittal** | 2028-09-28 → 2027-09-05 (-389d) | 2028-10-09 → 2027-09-27 (-378d) |  |  |  |  |
| NQS-E1050 | Preliminary design: submittal - Al Qassim | 2027-09-09 → 2027-09-05 (-4d) | 2027-09-20 → 2027-09-27 (+7d) | 8d → 16d | 286d → 276d |  | resources Contract cost (BOQ x payment milestones) [67978 SAR]; Progress weight (fair EPC distribution) [40 h] → Contract cost (BOQ x payment milestones) [66619 SAR]; Progress weight (fair EPC distribution, SAR value) [35340 SAR] |
| APR | **Approval** | 2028-10-10 → 2027-09-28 (-378d) | 2028-10-30 → 2027-10-18 (-378d) |  |  |  |  |
| NQS-E1060 | Preliminary design: SAR review and approval - Al Qassim | 2027-09-21 → 2027-09-28 (+7d) | 2027-10-12 → 2027-10-18 (+6d) |  | 303d → 314d |  | resources Contract cost (BOQ x payment milestones) [67978 SAR]; Progress weight (fair EPC distribution) [74 h] → Contract cost (BOQ x payment milestones) [67978 SAR]; Progress weight (fair EPC distribution, SAR value) [33480 SAR] |
| DET | **Detailed design** | 2028-08-22 → 2027-09-28 (-329d) | 2028-09-27 → 2027-11-23 (-309d) |  |  |  |  |
| SUB | **Submittal** | 2028-10-10 → 2027-09-28 (-378d) | 2028-10-25 → 2027-11-02 (-358d) |  |  |  |  |
| NQS-E1070 | Detailed design: submittal (drawings, BOQ, data sheets) - Al Qassim | 2027-09-21 → 2027-09-28 (+7d) | 2027-10-07 → 2027-11-02 (+26d) | 12d → 26d | 286d → 276d |  | resources Contract cost (BOQ x payment milestones) [135957 SAR]; Progress weight (fair EPC distribution) [84 h] → Contract cost (BOQ x payment milestones) [133238 SAR]; Progress weight (fair EPC distribution, SAR value) [73160 SAR] |
| APR | **Approval** | 2028-10-26 → 2027-11-03 (-358d) | 2028-11-15 → 2027-11-23 (-358d) |  |  |  |  |
| NQS-E1080 | Detailed design: SAR review and approval - Al Qassim | 2027-10-10 → 2027-11-03 (+24d) | 2027-10-28 → 2027-11-23 (+26d) |  | 291d → 288d |  | resources Contract cost (BOQ x payment milestones) [135957 SAR]; Progress weight (fair EPC distribution) [105 h] → Contract cost (BOQ x payment milestones) [135957 SAR]; Progress weight (fair EPC distribution, SAR value) [42160 SAR] |
| IFC | **IFC and shop drawings** | 2028-09-07 → 2027-11-03 (-309d) | 2028-10-04 → 2027-12-09 (-300d) |  |  |  |  |
| SUB | **Submittal** | 2028-10-26 → 2027-11-03 (-358d) | 2028-11-01 → 2027-11-18 (-349d) |  |  |  |  |
| NQS-E1090 | IFC and shop drawings: submittal - Al Qassim | 2027-10-10 → 2027-11-03 (+24d) | 2027-10-14 → 2027-11-18 (+35d) | 5d → 12d | 286d → 276d |  | resources Contract cost (BOQ x payment milestones) [67978 SAR]; Progress weight (fair EPC distribution) [28 h] → Contract cost (BOQ x payment milestones) [66619 SAR]; Progress weight (fair EPC distribution, SAR value) [31000 SAR] |
| APR | **Approval** | 2028-11-02 → 2027-11-21 (-347d) | 2028-11-22 → 2027-12-09 (-349d) |  |  |  |  |
| NQS-E1100 | IFC and shop drawings: SAR approval and release - Al Qassim | 2027-10-17 → 2027-11-21 (+35d) | 2027-11-04 → 2027-12-09 (+35d) |  | 286d → 276d |  | resources Contract cost (BOQ x payment milestones) [67978 SAR]; Progress weight (fair EPC distribution) [85 h] → Contract cost (BOQ x payment milestones) [67978 SAR]; Progress weight (fair EPC distribution, SAR value) [38440 SAR] |
| HCS | **HCIS documentation (Stage 3 and 4)** | 2028-08-29 → 2027-10-12 (-322d) | 2028-10-04 → 2027-12-09 (-300d) |  |  |  |  |
| SUB | **Submittal** | 2028-10-17 → 2027-10-12 (-371d) | 2028-11-01 → 2027-11-18 (-349d) |  |  |  |  |
| NQS-E1110 | HCIS Stage 3 and 4 documents: preparation - Al Qassim | 2027-09-29 → 2027-10-12 (+13d) | 2027-10-14 → 2027-11-18 (+35d) | 12d → 28d | 286d → 276d | NQS-E1050 FS+5d, NQS-E1090 FF → NQS-E1050 FS+10d, NQS-E1090 FF | resources Contract cost (BOQ x payment milestones) [16995 SAR]; Progress weight (fair EPC distribution) [17 h] → Contract cost (BOQ x payment milestones) [16655 SAR]; Progress weight (fair EPC distribution, SAR value) [14880 SAR] |
| APR | **Approval** | 2028-11-02 → 2027-11-21 (-347d) | 2028-11-22 → 2027-12-09 (-349d) |  |  |  |  |
| NQS-E1120 | HCIS Stage 3 and 4 documents: SAR final review and HCIS submission - Al Qassim | 2027-10-17 → 2027-11-21 (+35d) | 2027-11-04 → 2027-12-09 (+35d) |  | 286d → 276d |  | resources Contract cost (BOQ x payment milestones) [16995 SAR]; Progress weight (fair EPC distribution) [21 h] → Contract cost (BOQ x payment milestones) [16995 SAR]; Progress weight (fair EPC distribution, SAR value) [8060 SAR] |
| ASB | **As-built and O&M documentation** | 2029-05-14 → 2028-06-21 (-327d) | 2029-07-15 → 2028-08-20 (-329d) |  |  |  |  |
| SUB | **Submittal** | 2029-07-02 → 2028-06-21 (-376d) | 2029-08-12 → 2028-07-30 (-378d) |  |  |  |  |
| NQS-E1130 | As-built and O&M documentation: submittal - Al Qassim | 2028-06-12 → 2028-06-21 (+9d) | 2028-07-23 → 2028-07-30 (+7d) | 30d → 28d | 286d → 276d |  | resources Contract cost (BOQ x payment milestones) [50984 SAR]; Progress weight (fair EPC distribution) [42 h] → Contract cost (BOQ x payment milestones) [50984 SAR]; Progress weight (fair EPC distribution, SAR value) [24800 SAR] |
| APR | **Approval** | 2029-08-13 → 2028-07-31 (-378d) | 2029-09-02 → 2028-08-20 (-378d) |  |  |  |  |
| NQS-E1140 | As-built and O&M documentation: SAR review and approval - Al Qassim | 2028-07-24 → 2028-07-31 (+7d) | 2028-08-13 → 2028-08-20 (+7d) |  | 286d → 276d |  | resources Contract cost (BOQ x payment milestones) [16995 SAR]; Progress weight (fair EPC distribution) [21 h] → Contract cost (BOQ x payment milestones) [16995 SAR]; Progress weight (fair EPC distribution, SAR value) [13640 SAR] |
| EHF | **Hufuf (EWR)** | 2027-08-19 → 2027-08-10 (-9d) | 2028-08-03 → 2028-07-26 (-8d) |  |  |  |  |
| EHF-E1200 | MS2 Engineering submittal complete (10%) - Hufuf | 2027-10-14 → 2027-11-18 (+35d) | 2027-10-14 → 2027-11-18 (+35d) |  | 307d → 308d |  |  |
| EHF-E1210 | MS3 Engineering approved by SAR (10%) - Hufuf | 2027-11-04 → 2027-12-09 (+35d) | 2027-11-04 → 2027-12-09 (+35d) |  | 292d → 293d |  |  |
| SRV | **Site survey and as-found verification** | 2028-09-07 → 2027-08-10 (-394d) | 2028-09-27 → 2027-09-09 (-384d) |  |  |  |  |
| SUB | **Submittal** | 2027-07-27 → 2027-08-10 (+14d) | 2027-08-11 → 2027-08-19 (+8d) |  |  |  |  |
| EHF-E1010 | Survey: submittal of site survey and as-found report - Hufuf | 2027-08-19 → 2027-08-10 (-9d) | 2027-09-01 → 2027-08-19 (-13d) | 10d → 8d | 292d → 293d | PRJ-M2100 FS+118d → PRJ-A1060, PRJ-M2100 FS+91d | resources Contract cost (BOQ x payment milestones) [14143 SAR]; Progress weight (fair EPC distribution) [28 h] → Contract cost (BOQ x payment milestones) [19517 SAR]; Progress weight (fair EPC distribution, SAR value) [15500 SAR] |
| APR | **Approval** | 2027-08-12 → 2027-08-22 (+10d) | 2027-09-01 → 2027-09-09 (+8d) |  |  |  |  |
| EHF-E1020 | Survey: SAR approval of survey report - Hufuf | 2027-09-02 → 2027-08-22 (-11d) | 2027-09-08 → 2027-09-09 (+1d) | 5d → 15d | 332d → 357d |  | resources Contract cost (BOQ x payment milestones) [14143 SAR]; Progress weight (fair EPC distribution) [14 h] → Contract cost (BOQ x payment milestones) [14143 SAR]; Progress weight (fair EPC distribution, SAR value) [16740 SAR] |
| CNC | **Concept design** | 2028-09-21 → 2027-08-22 (-396d) | 2028-10-18 → 2027-09-26 (-388d) |  |  |  |  |
| SUB | **Submittal** | 2027-08-12 → 2027-08-22 (+10d) | 2027-08-18 → 2027-09-02 (+15d) |  |  |  |  |
| EHF-E1030 | Concept design: submittal - Hufuf | 2027-09-02 → 2027-08-22 (-11d) | 2027-09-08 → 2027-09-02 (-6d) | 5d → 10d | 292d → 293d |  | resources Contract cost (BOQ x payment milestones) [28285 SAR]; Progress weight (fair EPC distribution) [13 h] → Contract cost (BOQ x payment milestones) [27719 SAR]; Progress weight (fair EPC distribution, SAR value) [13020 SAR] |
| APR | **Approval** | 2027-08-19 → 2027-09-05 (+17d) | 2027-09-08 → 2027-09-26 (+18d) |  |  |  |  |
| EHF-E1040 | Concept design: SAR review and approval - Hufuf | 2027-09-09 → 2027-09-05 (-4d) | 2027-09-30 → 2027-09-26 (-4d) |  | 317d → 347d |  | resources Contract cost (BOQ x payment milestones) [28285 SAR]; Progress weight (fair EPC distribution) [39 h] → Contract cost (BOQ x payment milestones) [28285 SAR]; Progress weight (fair EPC distribution, SAR value) [19220 SAR] |
| PRE | **Preliminary (schematic) design** | 2028-09-28 → 2027-09-05 (-389d) | 2028-10-30 → 2027-10-18 (-378d) |  |  |  |  |
| SUB | **Submittal** | 2027-08-03 → 2027-09-05 (+33d) | 2027-08-18 → 2027-09-27 (+40d) |  |  |  |  |
| EHF-E1050 | Preliminary design: submittal - Hufuf | 2027-09-09 → 2027-09-05 (-4d) | 2027-09-20 → 2027-09-27 (+7d) | 8d → 16d | 292d → 293d |  | resources Contract cost (BOQ x payment milestones) [56570 SAR]; Progress weight (fair EPC distribution) [33 h] → Contract cost (BOQ x payment milestones) [55439 SAR]; Progress weight (fair EPC distribution, SAR value) [29760 SAR] |
| APR | **Approval** | 2027-08-19 → 2027-09-28 (+40d) | 2027-09-08 → 2027-10-18 (+40d) |  |  |  |  |
| EHF-E1060 | Preliminary design: SAR review and approval - Hufuf | 2027-09-21 → 2027-09-28 (+7d) | 2027-10-12 → 2027-10-18 (+6d) |  | 309d → 331d |  | resources Contract cost (BOQ x payment milestones) [56570 SAR]; Progress weight (fair EPC distribution) [62 h] → Contract cost (BOQ x payment milestones) [56570 SAR]; Progress weight (fair EPC distribution, SAR value) [27900 SAR] |
| DET | **Detailed design** | 2028-10-10 → 2027-09-28 (-378d) | 2028-11-15 → 2027-11-23 (-358d) |  |  |  |  |
| SUB | **Submittal** | 2027-10-10 → 2027-09-28 (-12d) | 2027-10-21 → 2027-11-02 (+12d) |  |  |  |  |
| EHF-E1070 | Detailed design: submittal (drawings, BOQ, data sheets) - Hufuf | 2027-09-21 → 2027-09-28 (+7d) | 2027-10-07 → 2027-11-02 (+26d) | 12d → 26d | 292d → 293d |  | resources Contract cost (BOQ x payment milestones) [113140 SAR]; Progress weight (fair EPC distribution) [70 h] → Contract cost (BOQ x payment milestones) [110877 SAR]; Progress weight (fair EPC distribution, SAR value) [60760 SAR] |
| APR | **Approval** | 2027-10-24 → 2027-11-03 (+10d) | 2027-10-28 → 2027-11-23 (+26d) |  |  |  |  |
| EHF-E1080 | Detailed design: SAR review and approval - Hufuf | 2027-10-10 → 2027-11-03 (+24d) | 2027-10-28 → 2027-11-23 (+26d) |  | 297d → 305d |  | resources Contract cost (BOQ x payment milestones) [113140 SAR]; Progress weight (fair EPC distribution) [88 h] → Contract cost (BOQ x payment milestones) [113140 SAR]; Progress weight (fair EPC distribution, SAR value) [35340 SAR] |
| IFC | **IFC and shop drawings** | 2028-10-26 → 2027-11-03 (-358d) | 2028-11-22 → 2027-12-09 (-349d) |  |  |  |  |
| SUB | **Submittal** | 2027-10-24 → 2027-11-03 (+10d) | 2027-10-28 → 2027-11-18 (+21d) |  |  |  |  |
| EHF-E1090 | IFC and shop drawings: submittal - Hufuf | 2027-10-10 → 2027-11-03 (+24d) | 2027-10-14 → 2027-11-18 (+35d) | 5d → 12d | 292d → 293d |  | resources Contract cost (BOQ x payment milestones) [56570 SAR]; Progress weight (fair EPC distribution) [24 h] → Contract cost (BOQ x payment milestones) [55439 SAR]; Progress weight (fair EPC distribution, SAR value) [25420 SAR] |
| APR | **Approval** | 2027-10-31 → 2027-11-21 (+21d) | 2027-11-18 → 2027-12-09 (+21d) |  |  |  |  |
| EHF-E1100 | IFC and shop drawings: SAR approval and release - Hufuf | 2027-10-17 → 2027-11-21 (+35d) | 2027-11-04 → 2027-12-09 (+35d) |  | 292d → 293d |  | resources Contract cost (BOQ x payment milestones) [56570 SAR]; Progress weight (fair EPC distribution) [71 h] → Contract cost (BOQ x payment milestones) [56570 SAR]; Progress weight (fair EPC distribution, SAR value) [32240 SAR] |
| HCS | **HCIS documentation (Stage 3 and 4)** | 2028-10-17 → 2027-10-12 (-371d) | 2028-11-22 → 2027-12-09 (-349d) |  |  |  |  |
| SUB | **Submittal** | 2027-10-31 → 2027-10-12 (-19d) | 2027-11-09 → 2027-11-18 (+9d) |  |  |  |  |
| EHF-E1110 | HCIS Stage 3 and 4 documents: preparation - Hufuf | 2027-09-29 → 2027-10-12 (+13d) | 2027-10-14 → 2027-11-18 (+35d) | 12d → 28d | 292d → 293d | EHF-E1050 FS+5d, EHF-E1090 FF → EHF-E1050 FS+10d, EHF-E1090 FF | resources Contract cost (BOQ x payment milestones) [14143 SAR]; Progress weight (fair EPC distribution) [14 h] → Contract cost (BOQ x payment milestones) [13860 SAR]; Progress weight (fair EPC distribution, SAR value) [12400 SAR] |
| APR | **Approval** | 2027-11-10 → 2027-11-21 (+11d) | 2027-11-30 → 2027-12-09 (+9d) |  |  |  |  |
| EHF-E1120 | HCIS Stage 3 and 4 documents: SAR final review and HCIS submission - Hufuf | 2027-10-17 → 2027-11-21 (+35d) | 2027-11-04 → 2027-12-09 (+35d) |  | 292d → 293d |  | resources Contract cost (BOQ x payment milestones) [14143 SAR]; Progress weight (fair EPC distribution) [18 h] → Contract cost (BOQ x payment milestones) [14143 SAR]; Progress weight (fair EPC distribution, SAR value) [6820 SAR] |
| ASB | **As-built and O&M documentation** | 2029-07-02 → 2028-05-30 (-398d) | 2029-09-02 → 2028-07-26 (-403d) |  |  |  |  |
| SUB | **Submittal** | 2027-11-10 → 2028-05-30 (+202d) | 2027-11-25 → 2028-07-05 (+223d) |  |  |  |  |
| EHF-E1130 | As-built and O&M documentation: submittal - Hufuf | 2028-06-04 → 2028-05-30 (-5d) | 2028-07-13 → 2028-07-05 (-8d) | 30d → 27d | 292d → 293d |  | resources Contract cost (BOQ x payment milestones) [42428 SAR]; Progress weight (fair EPC distribution) [35 h] → Contract cost (BOQ x payment milestones) [42428 SAR]; Progress weight (fair EPC distribution, SAR value) [20460 SAR] |
| APR | **Approval** | 2027-11-28 → 2028-07-06 (+221d) | 2027-12-16 → 2028-07-26 (+223d) |  |  |  |  |
| EHF-E1140 | As-built and O&M documentation: SAR review and approval - Hufuf | 2028-07-16 → 2028-07-06 (-10d) | 2028-08-03 → 2028-07-26 (-8d) |  | 292d → 293d |  | resources Contract cost (BOQ x payment milestones) [14143 SAR]; Progress weight (fair EPC distribution) [18 h] → Contract cost (BOQ x payment milestones) [14143 SAR]; Progress weight (fair EPC distribution, SAR value) [11160 SAR] |
| NMJ | **Al Majma'ah (NSR)** | 2027-10-10 → 2027-09-28 (-12d) | 2028-10-01 → 2028-10-08 (+7d) |  |  |  |  |

| ID | Task | Start | Finish | Duration | Total float | Predecessors | Other |
| --- | --- | --- | --- | --- | --- | --- | --- |
| NMJ-E1200 | MS2 Engineering submittal complete (10%) - Al Majma'ah | 2027-12-02 → 2028-01-06 (+35d) | 2027-12-02 → 2028-01-06 (+35d) |  | 266d → 256d |  |  |
| NMJ-E1210 | MS3 Engineering approved by SAR (10%) - Al Majma'ah | 2027-12-23 → 2028-01-27 (+35d) | 2027-12-23 → 2028-01-27 (+35d) |  | 251d → 241d |  |  |
| SRV | **Site survey and as-found verification** | 2027-06-24 → 2027-09-28 (+96d) | 2027-07-14 → 2027-10-28 (+106d) |  |  |  |  |
| SUB | **Submittal** | 2028-04-02 → 2027-09-28 (-187d) | 2028-05-18 → 2027-10-07 (-224d) |  |  |  |  |
| NMJ-E1010 | Survey: submittal of site survey and as-found report - Al Majma'ah | 2027-10-10 → 2027-09-28 (-12d) | 2027-10-21 → 2027-10-07 (-14d) | 10d → 8d | 251d → 241d | PRJ-M2100 FS+153d → PRJ-A1060, PRJ-M2100 FS+125d | resources Contract cost (BOQ x payment milestones) [16995 SAR]; Progress weight (fair EPC distribution) [34 h] → Contract cost (BOQ x payment milestones) [23453 SAR]; Progress weight (fair EPC distribution, SAR value) [18600 SAR] |
| APR | **Approval** | 2028-05-21 → 2027-10-10 (-224d) | 2028-06-08 → 2027-10-28 (-224d) |  |  |  |  |
| NMJ-E1020 | Survey: SAR approval of survey report - Al Majma'ah | 2027-10-24 → 2027-10-10 (-14d) |  | 5d → 15d | 291d → 306d |  | resources Contract cost (BOQ x payment milestones) [16995 SAR]; Progress weight (fair EPC distribution) [17 h] → Contract cost (BOQ x payment milestones) [16995 SAR]; Progress weight (fair EPC distribution, SAR value) [19840 SAR] |
| CNC | **Concept design** | 2027-07-08 → 2027-10-10 (+94d) | 2027-08-04 → 2027-11-11 (+99d) |  |  |  |  |
| SUB | **Submittal** | 2027-08-19 → 2027-10-10 (+52d) | 2027-09-01 → 2027-10-21 (+50d) |  |  |  |  |
| NMJ-E1030 | Concept design: submittal - Al Majma'ah | 2027-10-24 → 2027-10-10 (-14d) | 2027-10-28 → 2027-10-21 (-7d) | 5d → 10d | 251d → 241d |  | resources Contract cost (BOQ x payment milestones) [33989 SAR]; Progress weight (fair EPC distribution) [16 h] → Contract cost (BOQ x payment milestones) [33309 SAR]; Progress weight (fair EPC distribution, SAR value) [15500 SAR] |
| APR | **Approval** | 2027-09-02 → 2027-10-24 (+52d) | 2027-09-08 → 2027-11-11 (+64d) |  |  |  |  |
| NMJ-E1040 | Concept design: SAR review and approval - Al Majma'ah | 2027-10-31 → 2027-10-24 (-7d) | 2027-11-18 → 2027-11-11 (-7d) |  | 276d → 296d |  | resources Contract cost (BOQ x payment milestones) [33989 SAR]; Progress weight (fair EPC distribution) [47 h] → Contract cost (BOQ x payment milestones) [33989 SAR]; Progress weight (fair EPC distribution, SAR value) [22940 SAR] |
| PRE | **Preliminary (schematic) design** | 2027-07-15 → 2027-10-24 (+101d) | 2027-08-16 → 2027-12-05 (+111d) |  |  |  |  |
| SUB | **Submittal** | 2027-09-02 → 2027-10-24 (+52d) | 2027-09-08 → 2027-11-14 (+67d) |  |  |  |  |
| NMJ-E1050 | Preliminary design: submittal - Al Majma'ah | 2027-10-31 → 2027-10-24 (-7d) | 2027-11-09 → 2027-11-14 (+5d) | 8d → 16d | 251d → 241d |  | resources Contract cost (BOQ x payment milestones) [67978 SAR]; Progress weight (fair EPC distribution) [40 h] → Contract cost (BOQ x payment milestones) [66619 SAR]; Progress weight (fair EPC distribution, SAR value) [35340 SAR] |
| APR | **Approval** | 2027-09-09 → 2027-11-15 (+67d) | 2027-09-30 → 2027-12-05 (+66d) |  |  |  |  |
| NMJ-E1060 | Preliminary design: SAR review and approval - Al Majma'ah | 2027-11-10 → 2027-11-15 (+5d) | 2027-11-30 → 2027-12-05 (+5d) |  | 268d → 280d |  | resources Contract cost (BOQ x payment milestones) [67978 SAR]; Progress weight (fair EPC distribution) [74 h] → Contract cost (BOQ x payment milestones) [67978 SAR]; Progress weight (fair EPC distribution, SAR value) [33480 SAR] |
| DET | **Detailed design** | 2027-07-27 → 2027-11-15 (+111d) | 2027-09-01 → 2028-01-10 (+131d) |  |  |  |  |
| SUB | **Submittal** | 2027-09-09 → 2027-11-15 (+67d) | 2027-09-20 → 2027-12-20 (+91d) |  |  |  |  |
| NMJ-E1070 | Detailed design: submittal (drawings, BOQ, data sheets) - Al Majma'ah | 2027-11-10 → 2027-11-15 (+5d) | 2027-11-25 → 2027-12-20 (+25d) | 12d → 26d | 251d → 241d |  | resources Contract cost (BOQ x payment milestones) [135957 SAR]; Progress weight (fair EPC distribution) [84 h] → Contract cost (BOQ x payment milestones) [133238 SAR]; Progress weight (fair EPC distribution, SAR value) [73160 SAR] |
| APR | **Approval** | 2027-09-21 → 2027-12-21 (+91d) | 2027-10-12 → 2028-01-10 (+90d) |  |  |  |  |
| NMJ-E1080 | Detailed design: SAR review and approval - Al Majma'ah | 2027-11-28 → 2027-12-21 (+23d) | 2027-12-16 → 2028-01-10 (+25d) |  | 256d → 254d |  | resources Contract cost (BOQ x payment milestones) [135957 SAR]; Progress weight (fair EPC distribution) [105 h] → Contract cost (BOQ x payment milestones) [135957 SAR]; Progress weight (fair EPC distribution, SAR value) [42160 SAR] |
| IFC | **IFC and shop drawings** | 2027-08-12 → 2027-12-21 (+131d) | 2027-09-08 → 2028-01-27 (+141d) |  |  |  |  |
| SUB | **Submittal** | 2027-09-21 → 2027-12-21 (+91d) | 2027-10-07 → 2028-01-06 (+91d) |  |  |  |  |
| NMJ-E1090 | IFC and shop drawings: submittal - Al Majma'ah | 2027-11-28 → 2027-12-21 (+23d) | 2027-12-02 → 2028-01-06 (+35d) | 5d → 13d | 251d → 241d |  | resources Contract cost (BOQ x payment milestones) [67978 SAR]; Progress weight (fair EPC distribution) [28 h] → Contract cost (BOQ x payment milestones) [66619 SAR]; Progress weight (fair EPC distribution, SAR value) [32240 SAR] |
| APR | **Approval** | 2027-10-10 → 2028-01-09 (+91d) | 2027-10-28 → 2028-01-27 (+91d) |  |  |  |  |
| NMJ-E1100 | IFC and shop drawings: SAR approval and release - Al Majma'ah | 2027-12-05 → 2028-01-09 (+35d) | 2027-12-23 → 2028-01-27 (+35d) |  | 251d → 241d |  | resources Contract cost (BOQ x payment milestones) [67978 SAR]; Progress weight (fair EPC distribution) [85 h] → Contract cost (BOQ x payment milestones) [67978 SAR]; Progress weight (fair EPC distribution, SAR value) [37200 SAR] |
| HCS | **HCIS documentation (Stage 3 and 4)** | 2027-08-03 → 2027-11-29 (+118d) | 2027-09-08 → 2028-01-27 (+141d) |  |  |  |  |
| SUB | **Submittal** | 2027-10-10 → 2027-11-29 (+50d) | 2027-10-14 → 2028-01-06 (+84d) |  |  |  |  |
| NMJ-E1110 | HCIS Stage 3 and 4 documents: preparation - Al Majma'ah | 2027-11-17 → 2027-11-29 (+12d) | 2027-12-02 → 2028-01-06 (+35d) | 12d → 29d | 251d → 241d | NMJ-E1050 FS+5d, NMJ-E1090 FF → NMJ-E1050 FS+10d, NMJ-E1090 FF | resources Contract cost (BOQ x payment milestones) [16995 SAR]; Progress weight (fair EPC distribution) [17 h] → Contract cost (BOQ x payment milestones) [16655 SAR]; Progress weight (fair EPC distribution, SAR value) [14880 SAR] |
| APR | **Approval** | 2027-10-17 → 2028-01-09 (+84d) | 2027-11-04 → 2028-01-27 (+84d) |  |  |  |  |
| NMJ-E1120 | HCIS Stage 3 and 4 documents: SAR final review and HCIS submission - Al Majma'ah | 2027-12-05 → 2028-01-09 (+35d) | 2027-12-23 → 2028-01-27 (+35d) |  | 251d → 241d |  | resources Contract cost (BOQ x payment milestones) [16995 SAR]; Progress weight (fair EPC distribution) [21 h] → Contract cost (BOQ x payment milestones) [16995 SAR]; Progress weight (fair EPC distribution, SAR value) [8060 SAR] |
| ASB | **As-built and O&M documentation** | 2028-04-02 → 2028-08-09 (+129d) | 2028-06-08 → 2028-10-08 (+122d) |  |  |  |  |
| SUB | **Submittal** | 2027-09-29 → 2028-08-09 (+315d) | 2027-10-14 → 2028-09-17 (+339d) |  |  |  |  |
| NMJ-E1130 | As-built and O&M documentation: submittal - Al Majma'ah | 2028-07-31 → 2028-08-09 (+9d) | 2028-09-10 → 2028-09-17 (+7d) | 30d → 28d | 251d → 241d |  | resources Contract cost (BOQ x payment milestones) [50984 SAR]; Progress weight (fair EPC distribution) [42 h] → Contract cost (BOQ x payment milestones) [50984 SAR]; Progress weight (fair EPC distribution, SAR value) [24800 SAR] |
| APR | **Approval** | 2027-10-17 → 2028-09-18 (+337d) | 2027-11-04 → 2028-10-08 (+339d) |  |  |  |  |
| NMJ-E1140 | As-built and O&M documentation: SAR review and approval - Al Majma'ah | 2028-09-11 → 2028-09-18 (+7d) | 2028-10-01 → 2028-10-08 (+7d) |  | 251d → 241d |  | resources Contract cost (BOQ x payment milestones) [16995 SAR]; Progress weight (fair EPC distribution) [21 h] → Contract cost (BOQ x payment milestones) [16995 SAR]; Progress weight (fair EPC distribution, SAR value) [13640 SAR] |
| HKA | **KAEC (HHR)** | 2028-02-09 → 2028-01-25 (-15d) | 2029-07-05 → 2029-04-05 (-91d) |  |  |  |  |
| HKA-E1200 | MS2 Engineering submittal complete (10%) - KAEC | 2028-05-30 → 2028-04-26 (-34d) | 2028-05-30 → 2028-04-26 (-34d) |  | 73d → 133d |  |  |
| HKA-E1210 | MS3 Engineering approved by SAR (10%) - KAEC | 2028-06-20 → 2028-05-24 (-27d) | 2028-06-20 → 2028-05-24 (-27d) |  | 58d → 118d |  |  |
| SRV | **Site survey and as-found verification** | 2027-08-19 → 2028-01-25 (+159d) | 2027-09-08 → 2028-03-13 (+187d) |  |  |  |  |
| SUB | **Submittal** | 2028-06-04 → 2028-01-25 (-131d) | 2028-07-13 → 2028-02-14 (-150d) |  |  |  |  |
| HKA-E1010 | Survey: submittal of site survey and as-found report - KAEC | 2028-02-09 → 2028-01-25 (-15d) | 2028-03-14 → 2028-02-14 (-29d) | 20d → 15d | 58d → 118d | PRJ-M2100 FS+241d → PRJ-A1060, PRJ-M2100 FS+210d | resources Contract cost (BOQ x payment milestones) [27822 SAR]; Progress weight (fair EPC distribution) [66 h] → Contract cost (BOQ x payment milestones) [38394 SAR]; Progress weight (fair EPC distribution, SAR value) [37820 SAR] |
| APR | **Approval** | 2028-07-16 → 2028-02-15 (-152d) | 2028-08-03 → 2028-03-13 (-143d) |  |  |  |  |
| HKA-E1020 | Survey: SAR approval of survey report - KAEC | 2028-03-15 → 2028-02-15 (-29d) | 2028-03-21 → 2028-03-13 (-8d) | 5d → 15d | 118d → 165d |  | resources Contract cost (BOQ x payment milestones) [27822 SAR]; Progress weight (fair EPC distribution) [17 h] → Contract cost (BOQ x payment milestones) [27822 SAR]; Progress weight (fair EPC distribution, SAR value) [25420 SAR] |
| CNC | **Concept design** | 2027-09-02 → 2028-02-15 (+166d) | 2027-09-30 → 2028-03-22 (+174d) |  |  |  |  |
| SUB | **Submittal** | 2028-04-05 → 2028-02-15 (-50d) | 2028-04-18 → 2028-03-01 (-48d) |  |  |  |  |
| HKA-E1030 | Concept design: submittal - KAEC | 2028-03-15 → 2028-02-15 (-29d) | 2028-03-26 → 2028-03-01 (-25d) | 8d → 7d | 58d → 118d |  | resources Contract cost (BOQ x payment milestones) [55644 SAR]; Progress weight (fair EPC distribution) [36 h] → Contract cost (BOQ x payment milestones) [54531 SAR]; Progress weight (fair EPC distribution, SAR value) [19840 SAR] |
| APR | **Approval** | 2028-04-19 → 2028-03-02 (-48d) | 2028-04-25 → 2028-03-22 (-34d) |  |  |  |  |
| HKA-E1040 | Concept design: SAR review and approval - KAEC | 2028-03-27 → 2028-03-02 (-25d) | 2028-04-16 → 2028-03-22 (-25d) |  | 100d → 158d |  | resources Contract cost (BOQ x payment milestones) [55644 SAR]; Progress weight (fair EPC distribution) [67 h] → Contract cost (BOQ x payment milestones) [55644 SAR]; Progress weight (fair EPC distribution, SAR value) [42780 SAR] |
| PRE | **Preliminary (schematic) design** | 2027-09-09 → 2028-03-02 (+175d) | 2027-10-12 → 2028-04-09 (+180d) |  |  |  |  |
| SUB | **Submittal** | 2028-04-19 → 2028-03-02 (-48d) | 2028-04-25 → 2028-03-19 (-37d) |  |  |  |  |
| HKA-E1050 | Preliminary design: submittal - KAEC | 2028-03-27 → 2028-03-02 (-25d) | 2028-04-12 → 2028-03-19 (-24d) | 13d → 12d | 58d → 118d |  | resources Contract cost (BOQ x payment milestones) [111288 SAR]; Progress weight (fair EPC distribution) [86 h] → Contract cost (BOQ x payment milestones) [109062 SAR]; Progress weight (fair EPC distribution, SAR value) [50220 SAR] |
| APR | **Approval** | 2028-04-26 → 2028-03-20 (-37d) | 2028-05-23 → 2028-04-09 (-44d) |  |  |  |  |
| HKA-E1060 | Preliminary design: SAR review and approval - KAEC | 2028-04-13 → 2028-03-20 (-24d) | 2028-05-10 → 2028-04-09 (-31d) |  | 87d → 146d |  | resources Contract cost (BOQ x payment milestones) [111288 SAR]; Progress weight (fair EPC distribution) [100 h] → Contract cost (BOQ x payment milestones) [111288 SAR]; Progress weight (fair EPC distribution, SAR value) [62620 SAR] |
| DET | **Detailed design** | 2027-09-21 → 2028-03-20 (+181d) | 2027-10-28 → 2028-05-11 (+196d) |  |  |  |  |
| SUB | **Submittal** | 2028-04-26 → 2028-03-20 (-37d) | 2028-05-14 → 2028-04-13 (-31d) |  |  |  |  |
| HKA-E1070 | Detailed design: submittal (drawings, BOQ, data sheets) - KAEC | 2028-04-13 → 2028-03-20 (-24d) | 2028-05-17 → 2028-04-13 (-34d) | 20d → 19d | 58d → 118d |  | resources Contract cost (BOQ x payment milestones) [222575 SAR]; Progress weight (fair EPC distribution) [177 h] → Contract cost (BOQ x payment milestones) [218124 SAR]; Progress weight (fair EPC distribution, SAR value) [105400 SAR] |
| APR | **Approval** | 2028-05-15 → 2028-04-16 (-29d) | 2028-06-04 → 2028-05-11 (-24d) |  |  |  |  |
| HKA-E1080 | Detailed design: SAR review and approval - KAEC | 2028-05-18 → 2028-04-16 (-32d) | 2028-06-07 → 2028-05-11 (-27d) |  | 67d → 127d |  | resources Contract cost (BOQ x payment milestones) [222575 SAR]; Progress weight (fair EPC distribution) [133 h] → Contract cost (BOQ x payment milestones) [222575 SAR]; Progress weight (fair EPC distribution, SAR value) [83080 SAR] |
| IFC | **IFC and shop drawings** | 2027-10-10 → 2028-04-16 (+189d) | 2027-11-04 → 2028-05-24 (+202d) |  |  |  |  |
| SUB | **Submittal** | 2028-05-15 → 2028-04-16 (-29d) | 2028-05-30 → 2028-04-26 (-34d) |  |  |  |  |
| HKA-E1090 | IFC and shop drawings: submittal - KAEC | 2028-05-18 → 2028-04-16 (-32d) | 2028-05-30 → 2028-04-26 (-34d) |  | 58d → 118d |  | resources Contract cost (BOQ x payment milestones) [111288 SAR]; Progress weight (fair EPC distribution) [70 h] → Contract cost (BOQ x payment milestones) [109062 SAR]; Progress weight (fair EPC distribution, SAR value) [42160 SAR] |
| APR | **Approval** | 2028-05-31 → 2028-04-27 (-34d) | 2028-06-20 → 2028-05-24 (-27d) |  |  |  |  |
| HKA-E1100 | IFC and shop drawings: SAR approval and release - KAEC | 2028-05-31 → 2028-04-27 (-34d) | 2028-06-20 → 2028-05-24 (-27d) |  | 58d → 118d |  | resources Contract cost (BOQ x payment milestones) [111288 SAR]; Progress weight (fair EPC distribution) [116 h] → Contract cost (BOQ x payment milestones) [111288 SAR]; Progress weight (fair EPC distribution, SAR value) [70680 SAR] |
| HCS | **HCIS documentation (Stage 3 and 4)** | 2027-09-29 → 2028-03-29 (+182d) | 2027-11-04 → 2028-05-24 (+202d) |  |  |  |  |
| SUB | **Submittal** | 2028-05-31 → 2028-03-29 (-63d) | 2028-06-06 → 2028-04-26 (-41d) |  |  |  |  |
| HKA-E1110 | HCIS Stage 3 and 4 documents: preparation - KAEC | 2028-04-25 → 2028-03-29 (-27d) | 2028-05-30 → 2028-04-26 (-34d) |  | 58d → 118d | HKA-E1050 FS+8d, HKA-E1090 FF → HKA-E1050 FS+7d, HKA-E1090 FF | resources Contract cost (BOQ x payment milestones) [27822 SAR]; Progress weight (fair EPC distribution) [36 h] → Contract cost (BOQ x payment milestones) [27265 SAR]; Progress weight (fair EPC distribution, SAR value) [21700 SAR] |
| APR | **Approval** | 2028-06-07 → 2028-04-27 (-41d) | 2028-06-27 → 2028-05-24 (-34d) |  |  |  |  |
| HKA-E1120 | HCIS Stage 3 and 4 documents: SAR final review and HCIS submission - KAEC | 2028-05-31 → 2028-04-27 (-34d) | 2028-06-20 → 2028-05-24 (-27d) |  | 58d → 118d |  | resources Contract cost (BOQ x payment milestones) [27822 SAR]; Progress weight (fair EPC distribution) [26 h] → Contract cost (BOQ x payment milestones) [27822 SAR]; Progress weight (fair EPC distribution, SAR value) [15500 SAR] |

| ID | Task | Start | Finish | Duration | Total float | Predecessors | Other |
| --- | --- | --- | --- | --- | --- | --- | --- |
| ASB | **As-built and O&M documentation** | 2028-06-04 → 2029-01-18 (+228d) | 2028-08-03 → 2029-04-05 (+245d) |  |  |  |  |
| SUB | **Submittal** | 2028-05-22 → 2029-01-18 (+241d) | 2028-06-06 → 2029-03-15 (+282d) |  |  |  |  |
| HKA-E1130 | As-built and O&M documentation: submittal - KAEC | 2029-04-15 → 2029-01-18 (-87d) | 2029-06-14 → 2029-03-15 (-91d) | 40d → 35d | 58d → 118d |  | resources Contract cost (BOQ x payment milestones) [83466 SAR]; Progress weight (fair EPC distribution) [75 h] → Contract cost (BOQ x payment milestones) [83466 SAR]; Progress weight (fair EPC distribution, SAR value) [44020 SAR] |
| APR | **Approval** | 2028-06-07 → 2029-03-18 (+284d) | 2028-06-27 → 2029-04-05 (+282d) |  |  |  |  |
| HKA-E1140 | As-built and O&M documentation: SAR review and approval - KAEC | 2029-06-17 → 2029-03-18 (-91d) | 2029-07-05 → 2029-04-05 (-91d) |  | 58d → 118d |  | resources Contract cost (BOQ x payment milestones) [27822 SAR]; Progress weight (fair EPC distribution) [28 h] → Contract cost (BOQ x payment milestones) [27822 SAR]; Progress weight (fair EPC distribution, SAR value) [18600 SAR] |
| HMD | **Madinah (HHR)** | 2028-02-09 → 2028-01-25 (-15d) | 2029-07-11 → 2029-04-11 (-91d) |  |  |  |  |
| HMD-E1200 | MS2 Engineering submittal complete (10%) - Madinah | 2028-05-30 → 2028-04-26 (-34d) | 2028-05-30 → 2028-04-26 (-34d) |  | 69d → 129d |  |  |
| HMD-E1210 | MS3 Engineering approved by SAR (10%) - Madinah | 2028-06-20 → 2028-05-24 (-27d) | 2028-06-20 → 2028-05-24 (-27d) |  | 54d → 114d |  |  |
| SRV | **Site survey and as-found verification** | 2028-04-05 → 2028-01-25 (-71d) | 2028-04-25 → 2028-03-14 (-42d) |  |  |  |  |
| SUB | **Submittal** | 2029-01-04 → 2028-01-25 (-345d) | 2029-02-21 → 2028-02-15 (-372d) |  |  |  |  |
| HMD-E1010 | Survey: submittal of site survey and as-found report - Madinah | 2028-02-09 → 2028-01-25 (-15d) | 2028-03-14 → 2028-02-15 (-28d) | 20d → 16d | 54d → 114d | PRJ-M2100 FS+241d → PRJ-A1060, PRJ-M2100 FS+210d | resources Contract cost (BOQ x payment milestones) [27811 SAR]; Progress weight (fair EPC distribution) [66 h] → Contract cost (BOQ x payment milestones) [38379 SAR]; Progress weight (fair EPC distribution, SAR value) [38440 SAR] |
| APR | **Approval** | 2029-02-25 → 2028-02-16 (-375d) | 2029-03-15 → 2028-03-14 (-366d) |  |  |  |  |
| HMD-E1020 | Survey: SAR approval of survey report - Madinah | 2028-03-15 → 2028-02-16 (-28d) | 2028-03-21 → 2028-03-14 (-7d) | 5d → 15d | 114d → 160d |  | resources Contract cost (BOQ x payment milestones) [27811 SAR]; Progress weight (fair EPC distribution) [17 h] → Contract cost (BOQ x payment milestones) [27811 SAR]; Progress weight (fair EPC distribution, SAR value) [24180 SAR] |
| CNC | **Concept design** | 2028-04-19 → 2028-02-16 (-63d) | 2028-05-23 → 2028-03-23 (-61d) |  |  |  |  |
| SUB | **Submittal** | 2027-03-04 → 2028-02-16 (+349d) | 2027-04-07 → 2028-03-02 (+330d) |  |  |  |  |
| HMD-E1030 | Concept design: submittal - Madinah | 2028-03-15 → 2028-02-16 (-28d) | 2028-03-26 → 2028-03-02 (-24d) | 8d → 7d | 54d → 114d |  | resources Contract cost (BOQ x payment milestones) [55621 SAR]; Progress weight (fair EPC distribution) [36 h] → Contract cost (BOQ x payment milestones) [54509 SAR]; Progress weight (fair EPC distribution, SAR value) [19840 SAR] |
| APR | **Approval** | 2027-04-08 → 2028-03-05 (+332d) | 2027-04-14 → 2028-03-23 (+344d) |  |  |  |  |
| HMD-E1040 | Concept design: SAR review and approval - Madinah | 2028-03-27 → 2028-03-05 (-22d) | 2028-04-16 → 2028-03-23 (-24d) |  | 96d → 153d |  | resources Contract cost (BOQ x payment milestones) [55621 SAR]; Progress weight (fair EPC distribution) [67 h] → Contract cost (BOQ x payment milestones) [55621 SAR]; Progress weight (fair EPC distribution, SAR value) [42780 SAR] |
| PRE | **Preliminary (schematic) design** | 2028-04-26 → 2028-03-05 (-52d) | 2028-06-04 → 2028-04-10 (-55d) |  |  |  |  |
| SUB | **Submittal** | 2028-02-09 → 2028-03-05 (+25d) | 2028-03-14 → 2028-03-20 (+6d) |  |  |  |  |
| HMD-E1050 | Preliminary design: submittal - Madinah | 2028-03-27 → 2028-03-05 (-22d) | 2028-04-12 → 2028-03-20 (-23d) | 13d → 12d | 54d → 114d |  | resources Contract cost (BOQ x payment milestones) [111243 SAR]; Progress weight (fair EPC distribution) [86 h] → Contract cost (BOQ x payment milestones) [109018 SAR]; Progress weight (fair EPC distribution, SAR value) [50220 SAR] |
| APR | **Approval** | 2028-03-15 → 2028-03-21 (+6d) | 2028-03-21 → 2028-04-10 (+20d) |  |  |  |  |
| HMD-E1060 | Preliminary design: SAR review and approval - Madinah | 2028-04-13 → 2028-03-21 (-23d) | 2028-05-10 → 2028-04-10 (-30d) |  | 83d → 141d |  | resources Contract cost (BOQ x payment milestones) [111243 SAR]; Progress weight (fair EPC distribution) [100 h] → Contract cost (BOQ x payment milestones) [111243 SAR]; Progress weight (fair EPC distribution, SAR value) [62620 SAR] |
| DET | **Detailed design** | 2028-05-15 → 2028-03-21 (-55d) | 2028-06-20 → 2028-05-11 (-40d) |  |  |  |  |
| SUB | **Submittal** | 2028-03-15 → 2028-03-21 (+6d) | 2028-03-26 → 2028-04-13 (+18d) |  |  |  |  |
| HMD-E1070 | Detailed design: submittal (drawings, BOQ, data sheets) - Madinah | 2028-04-13 → 2028-03-21 (-23d) | 2028-05-17 → 2028-04-13 (-34d) | 20d → 18d | 54d → 114d |  | resources Contract cost (BOQ x payment milestones) [222485 SAR]; Progress weight (fair EPC distribution) [177 h] → Contract cost (BOQ x payment milestones) [218036 SAR]; Progress weight (fair EPC distribution, SAR value) [102920 SAR] |
| APR | **Approval** | 2028-03-27 → 2028-04-16 (+20d) | 2028-04-16 → 2028-05-11 (+25d) |  |  |  |  |
| HMD-E1080 | Detailed design: SAR review and approval - Madinah | 2028-05-18 → 2028-04-16 (-32d) | 2028-06-07 → 2028-05-11 (-27d) |  | 63d → 123d |  | resources Contract cost (BOQ x payment milestones) [222485 SAR]; Progress weight (fair EPC distribution) [133 h] → Contract cost (BOQ x payment milestones) [222485 SAR]; Progress weight (fair EPC distribution, SAR value) [85560 SAR] |
| IFC | **IFC and shop drawings** | 2028-05-31 → 2028-04-16 (-45d) | 2028-06-27 → 2028-05-24 (-34d) |  |  |  |  |
| SUB | **Submittal** | 2028-03-27 → 2028-04-16 (+20d) | 2028-04-12 → 2028-04-26 (+14d) |  |  |  |  |
| HMD-E1090 | IFC and shop drawings: submittal - Madinah | 2028-05-18 → 2028-04-16 (-32d) | 2028-05-30 → 2028-04-26 (-34d) |  | 54d → 114d |  | resources Contract cost (BOQ x payment milestones) [111243 SAR]; Progress weight (fair EPC distribution) [70 h] → Contract cost (BOQ x payment milestones) [109018 SAR]; Progress weight (fair EPC distribution, SAR value) [42160 SAR] |
| APR | **Approval** | 2028-04-13 → 2028-04-27 (+14d) | 2028-05-10 → 2028-05-24 (+14d) |  |  |  |  |
| HMD-E1100 | IFC and shop drawings: SAR approval and release - Madinah | 2028-05-31 → 2028-04-27 (-34d) | 2028-06-20 → 2028-05-24 (-27d) |  | 54d → 114d |  | resources Contract cost (BOQ x payment milestones) [111243 SAR]; Progress weight (fair EPC distribution) [116 h] → Contract cost (BOQ x payment milestones) [111243 SAR]; Progress weight (fair EPC distribution, SAR value) [70680 SAR] |
| HCS | **HCIS documentation (Stage 3 and 4)** | 2028-05-22 → 2028-03-30 (-53d) | 2028-06-27 → 2028-05-24 (-34d) |  |  |  |  |
| SUB | **Submittal** | 2028-04-13 → 2028-03-30 (-14d) | 2028-05-17 → 2028-04-26 (-21d) |  |  |  |  |
| HMD-E1110 | HCIS Stage 3 and 4 documents: preparation - Madinah | 2028-04-25 → 2028-03-30 (-26d) | 2028-05-30 → 2028-04-26 (-34d) | 21d → 20d | 54d → 114d | HMD-E1050 FS+8d, HMD-E1090 FF → HMD-E1050 FS+7d, HMD-E1090 FF | resources Contract cost (BOQ x payment milestones) [27811 SAR]; Progress weight (fair EPC distribution) [36 h] → Contract cost (BOQ x payment milestones) [27254 SAR]; Progress weight (fair EPC distribution, SAR value) [21700 SAR] |
| APR | **Approval** | 2028-05-18 → 2028-04-27 (-21d) | 2028-06-07 → 2028-05-24 (-14d) |  |  |  |  |
| HMD-E1120 | HCIS Stage 3 and 4 documents: SAR final review and HCIS submission - Madinah | 2028-05-31 → 2028-04-27 (-34d) | 2028-06-20 → 2028-05-24 (-27d) |  | 54d → 114d |  | resources Contract cost (BOQ x payment milestones) [27811 SAR]; Progress weight (fair EPC distribution) [26 h] → Contract cost (BOQ x payment milestones) [27811 SAR]; Progress weight (fair EPC distribution, SAR value) [16120 SAR] |
| ASB | **As-built and O&M documentation** | 2029-01-04 → 2029-01-23 (+19d) | 2029-03-15 → 2029-04-11 (+27d) |  |  |  |  |
| SUB | **Submittal** | 2028-05-18 → 2029-01-23 (+250d) | 2028-05-30 → 2029-03-21 (+295d) |  |  |  |  |
| HMD-E1130 | As-built and O&M documentation: submittal - Madinah | 2029-04-19 → 2029-01-23 (-86d) | 2029-06-20 → 2029-03-21 (-91d) | 40d → 36d | 54d → 114d |  | resources Contract cost (BOQ x payment milestones) [83432 SAR]; Progress weight (fair EPC distribution) [75 h] → Contract cost (BOQ x payment milestones) [83432 SAR]; Progress weight (fair EPC distribution, SAR value) [44020 SAR] |
| APR | **Approval** | 2028-05-31 → 2029-03-22 (+295d) | 2028-06-20 → 2029-04-11 (+295d) |  |  |  |  |
| HMD-E1140 | As-built and O&M documentation: SAR review and approval - Madinah | 2029-06-21 → 2029-03-22 (-91d) | 2029-07-11 → 2029-04-11 (-91d) |  | 54d → 114d |  | resources Contract cost (BOQ x payment milestones) [27811 SAR]; Progress weight (fair EPC distribution) [28 h] → Contract cost (BOQ x payment milestones) [27811 SAR]; Progress weight (fair EPC distribution, SAR value) [18600 SAR] |
| EAB | **Abqaiq (EWR)** | 2028-04-05 → 2028-03-20 (-16d) | 2029-03-15 → 2029-01-31 (-43d) |  |  |  |  |
| EAB-E1200 | MS2 Engineering submittal complete (10%) - Abqaiq | 2028-06-06 → 2028-06-28 (+22d) | 2028-06-06 → 2028-06-28 (+22d) |  | 153d → 173d |  |  |
| EAB-E1210 | MS3 Engineering approved by SAR (10%) - Abqaiq | 2028-06-27 → 2028-07-19 (+22d) | 2028-06-27 → 2028-07-19 (+22d) |  | 138d → 158d |  |  |
| SRV | **Site survey and as-found verification** | 2027-03-04 → 2028-03-20 (+382d) | 2027-04-14 → 2028-04-19 (+371d) |  |  |  |  |
| SUB | **Submittal** | 2027-04-08 → 2028-03-20 (+347d) | 2027-04-19 → 2028-03-29 (+345d) |  |  |  |  |
| EAB-E1010 | Survey: submittal of site survey and as-found report - Abqaiq | 2028-04-05 → 2028-03-20 (-16d) | 2028-04-18 → 2028-03-29 (-20d) | 10d → 8d | 138d → 158d | PRJ-M2100 FS+276d → PRJ-A1060, PRJ-M2100 FS+244d | resources Contract cost (BOQ x payment milestones) [10028 SAR]; Progress weight (fair EPC distribution) [20 h] → Contract cost (BOQ x payment milestones) [13839 SAR]; Progress weight (fair EPC distribution, SAR value) [11160 SAR] |
| APR | **Approval** | 2027-04-20 → 2028-03-30 (+345d) | 2027-05-10 → 2028-04-19 (+345d) |  |  |  |  |
| EAB-E1020 | Survey: SAR approval of survey report - Abqaiq | 2028-04-19 → 2028-03-30 (-20d) | 2028-04-25 → 2028-04-19 (-6d) | 5d → 15d | 178d → 218d |  | resources Contract cost (BOQ x payment milestones) [10028 SAR]; Progress weight (fair EPC distribution) [10 h] → Contract cost (BOQ x payment milestones) [10028 SAR]; Progress weight (fair EPC distribution, SAR value) [11780 SAR] |
| CNC | **Concept design** | 2027-04-08 → 2028-03-30 (+357d) | 2027-05-10 → 2028-05-09 (+365d) |  |  |  |  |
| SUB | **Submittal** | 2027-04-20 → 2028-03-30 (+345d) | 2027-05-06 → 2028-04-11 (+341d) |  |  |  |  |
| EAB-E1030 | Concept design: submittal - Abqaiq | 2028-04-19 → 2028-03-30 (-20d) | 2028-04-25 → 2028-04-11 (-14d) | 5d → 9d | 138d → 158d |  | resources Contract cost (BOQ x payment milestones) [20057 SAR]; Progress weight (fair EPC distribution) [9 h] → Contract cost (BOQ x payment milestones) [19656 SAR]; Progress weight (fair EPC distribution, SAR value) [8680 SAR] |
| APR | **Approval** | 2027-05-09 → 2028-04-12 (+339d) | 2027-06-03 → 2028-05-09 (+341d) |  |  |  |  |
| EAB-E1040 | Concept design: SAR review and approval - Abqaiq | 2028-04-26 → 2028-04-12 (-14d) | 2028-05-23 → 2028-05-09 (-14d) |  | 163d → 209d |  | resources Contract cost (BOQ x payment milestones) [20057 SAR]; Progress weight (fair EPC distribution) [28 h] → Contract cost (BOQ x payment milestones) [20057 SAR]; Progress weight (fair EPC distribution, SAR value) [14260 SAR] |
| PRE | **Preliminary (schematic) design** | 2027-04-20 → 2028-04-12 (+358d) | 2027-06-03 → 2028-05-30 (+362d) |  |  |  |  |
| SUB | **Submittal** | 2027-05-09 → 2028-04-12 (+339d) | 2027-06-10 → 2028-05-09 (+334d) |  |  |  |  |
| EAB-E1050 | Preliminary design: submittal - Abqaiq | 2028-04-26 → 2028-04-12 (-14d) | 2028-05-14 → 2028-05-09 (-5d) | 8d → 15d | 138d → 158d |  | resources Contract cost (BOQ x payment milestones) [40114 SAR]; Progress weight (fair EPC distribution) [23 h] → Contract cost (BOQ x payment milestones) [39311 SAR]; Progress weight (fair EPC distribution, SAR value) [20460 SAR] |
| APR | **Approval** | 2027-06-13 → 2028-05-10 (+332d) | 2027-07-01 → 2028-05-30 (+334d) |  |  |  |  |
| EAB-E1060 | Preliminary design: SAR review and approval - Abqaiq | 2028-05-15 → 2028-05-10 (-5d) | 2028-06-04 → 2028-05-30 (-5d) |  | 155d → 194d |  | resources Contract cost (BOQ x payment milestones) [40114 SAR]; Progress weight (fair EPC distribution) [44 h] → Contract cost (BOQ x payment milestones) [40114 SAR]; Progress weight (fair EPC distribution, SAR value) [20460 SAR] |
| DET | **Detailed design** | 2027-05-09 → 2028-05-10 (+367d) | 2027-07-01 → 2028-07-03 (+368d) |  |  |  |  |
| SUB | **Submittal** | 2027-06-13 → 2028-05-10 (+332d) | 2027-06-23 → 2028-06-12 (+355d) |  |  |  |  |
| EAB-E1070 | Detailed design: submittal (drawings, BOQ, data sheets) - Abqaiq | 2028-05-15 → 2028-05-10 (-5d) | 2028-05-30 → 2028-06-12 (+13d) | 12d → 24d | 138d → 158d |  | resources Contract cost (BOQ x payment milestones) [80227 SAR]; Progress weight (fair EPC distribution) [50 h] → Contract cost (BOQ x payment milestones) [78623 SAR]; Progress weight (fair EPC distribution, SAR value) [41540 SAR] |
| APR | **Approval** | 2027-06-24 → 2028-06-13 (+355d) | 2027-07-14 → 2028-07-03 (+355d) |  |  |  |  |
| EAB-E1080 | Detailed design: SAR review and approval - Abqaiq | 2028-05-31 → 2028-06-13 (+13d) | 2028-06-20 → 2028-07-03 (+13d) |  | 143d → 170d |  | resources Contract cost (BOQ x payment milestones) [80227 SAR]; Progress weight (fair EPC distribution) [62 h] → Contract cost (BOQ x payment milestones) [80227 SAR]; Progress weight (fair EPC distribution, SAR value) [26040 SAR] |
| IFC | **IFC and shop drawings** | 2027-06-13 → 2028-06-13 (+366d) | 2027-07-14 → 2028-07-19 (+371d) |  |  |  |  |
| SUB | **Submittal** | 2027-05-26 → 2028-06-13 (+384d) | 2027-06-23 → 2028-06-28 (+371d) |  |  |  |  |
| EAB-E1090 | IFC and shop drawings: submittal - Abqaiq | 2028-05-31 → 2028-06-13 (+13d) | 2028-06-06 → 2028-06-28 (+22d) | 5d → 12d | 138d → 158d |  | resources Contract cost (BOQ x payment milestones) [40114 SAR]; Progress weight (fair EPC distribution) [17 h] → Contract cost (BOQ x payment milestones) [39311 SAR]; Progress weight (fair EPC distribution, SAR value) [17980 SAR] |
| APR | **Approval** | 2027-06-24 → 2028-06-29 (+371d) | 2027-07-14 → 2028-07-19 (+371d) |  |  |  |  |

| ID | Task | Start | Finish | Duration | Total float | Predecessors | Other |
| --- | --- | --- | --- | --- | --- | --- | --- |
| EAB-E1100 | IFC and shop drawings: SAR approval and release - Abqaiq | 2028-06-07 → 2028-06-29 (+22d) | 2028-06-27 → 2028-07-19 (+22d) |  | 138d → 158d |  | resources Contract cost (BOQ x payment milestones) [40114 SAR]; Progress weight (fair EPC distribution) [50 h] → Contract cost (BOQ x payment milestones) [40114 SAR]; Progress weight (fair EPC distribution, SAR value) [22940 SAR] |
| HCS | **HCIS documentation (Stage 3 and 4)** | 2027-05-26 → 2028-05-23 (+363d) | 2027-07-14 → 2028-07-19 (+371d) |  |  |  |  |
| SUB | **Submittal** | 2028-06-18 → 2028-05-23 (-26d) | 2028-08-10 → 2028-06-28 (-43d) |  |  |  |  |
| EAB-E1110 | HCIS Stage 3 and 4 documents: preparation - Abqaiq | 2028-05-22 → 2028-05-23 (+1d) | 2028-06-06 → 2028-06-28 (+22d) | 12d → 27d | 138d → 158d | EAB-E1050 FS+5d, EAB-E1090 FF → EAB-E1050 FS+9d, EAB-E1090 FF | resources Contract cost (BOQ x payment milestones) [10028 SAR]; Progress weight (fair EPC distribution) [10 h] → Contract cost (BOQ x payment milestones) [9828 SAR]; Progress weight (fair EPC distribution, SAR value) [8680 SAR] |
| APR | **Approval** | 2028-08-13 → 2028-06-29 (-45d) | 2028-08-31 → 2028-07-19 (-43d) |  |  |  |  |
| EAB-E1120 | HCIS Stage 3 and 4 documents: SAR final review and HCIS submission - Abqaiq | 2028-06-07 → 2028-06-29 (+22d) | 2028-06-27 → 2028-07-19 (+22d) |  | 138d → 158d |  | resources Contract cost (BOQ x payment milestones) [10028 SAR]; Progress weight (fair EPC distribution) [12 h] → Contract cost (BOQ x payment milestones) [10028 SAR]; Progress weight (fair EPC distribution, SAR value) [4960 SAR] |
| ASB | **As-built and O&M documentation** | 2028-06-18 → 2028-12-06 (+171d) | 2028-08-31 → 2029-01-31 (+153d) |  |  |  |  |
| SUB | **Submittal** | 2027-10-10 → 2028-12-06 (+423d) | 2027-11-04 → 2029-01-10 (+433d) |  |  |  |  |
| EAB-E1130 | As-built and O&M documentation: submittal - Abqaiq | 2029-01-04 → 2028-12-06 (-29d) | 2029-02-21 → 2029-01-10 (-42d) | 30d → 26d | 138d → 158d |  | resources Contract cost (BOQ x payment milestones) [30085 SAR]; Progress weight (fair EPC distribution) [25 h] → Contract cost (BOQ x payment milestones) [30085 SAR]; Progress weight (fair EPC distribution, SAR value) [14260 SAR] |
| APR | **Approval** | 2027-11-07 → 2029-01-11 (+431d) | 2027-11-11 → 2029-01-31 (+447d) |  |  |  |  |
| EAB-E1140 | As-built and O&M documentation: SAR review and approval - Abqaiq | 2029-02-25 → 2029-01-11 (-45d) | 2029-03-15 → 2029-01-31 (-43d) |  | 138d → 158d |  | resources Contract cost (BOQ x payment milestones) [10028 SAR]; Progress weight (fair EPC distribution) [12 h] → Contract cost (BOQ x payment milestones) [10028 SAR]; Progress weight (fair EPC distribution, SAR value) [8060 SAR] |
| NHL | **Hail (NSR)** | 2028-05-08 → 2028-04-12 (-26d) | 2029-05-01 → 2029-04-16 (-15d) |  |  |  |  |
| NHL-E1200 | MS2 Engineering submittal complete (10%) - Hail | 2028-07-02 → 2028-07-20 (+18d) | 2028-07-02 → 2028-07-20 (+18d) |  | 125d → 126d |  |  |
| NHL-E1210 | MS3 Engineering approved by SAR (10%) - Hail | 2028-07-23 → 2028-08-10 (+18d) | 2028-07-23 → 2028-08-10 (+18d) |  | 110d → 111d |  |  |
| SRV | **Site survey and as-found verification** | 2027-10-10 → 2028-04-12 (+185d) | 2027-11-11 → 2028-05-21 (+192d) |  |  |  |  |
| SUB | **Submittal** | 2027-11-07 → 2028-04-12 (+157d) | 2027-11-16 → 2028-04-23 (+159d) |  |  |  |  |
| NHL-E1010 | Survey: submittal of site survey and as-found report - Hail | 2028-05-08 → 2028-04-12 (-26d) | 2028-05-21 → 2028-04-23 (-28d) | 10d → 8d | 110d → 111d | PRJ-M2100 FS+294d → PRJ-A1060, PRJ-M2100 FS+261d | resources Contract cost (BOQ x payment milestones) [16995 SAR]; Progress weight (fair EPC distribution) [34 h] → Contract cost (BOQ x payment milestones) [23453 SAR]; Progress weight (fair EPC distribution, SAR value) [18600 SAR] |
| APR | **Approval** | 2027-11-17 → 2028-04-24 (+159d) | 2027-12-07 → 2028-05-21 (+166d) |  |  |  |  |
| NHL-E1020 | Survey: SAR approval of survey report - Hail | 2028-05-22 → 2028-04-24 (-28d) | 2028-05-28 → 2028-05-21 (-7d) | 5d → 15d | 150d → 170d |  | resources Contract cost (BOQ x payment milestones) [16995 SAR]; Progress weight (fair EPC distribution) [17 h] → Contract cost (BOQ x payment milestones) [16995 SAR]; Progress weight (fair EPC distribution, SAR value) [19840 SAR] |
| CNC | **Concept design** | 2027-11-07 → 2028-04-24 (+169d) | 2027-12-07 → 2028-06-01 (+177d) |  |  |  |  |
| SUB | **Submittal** | 2027-11-17 → 2028-04-24 (+159d) | 2027-12-05 → 2028-05-11 (+158d) |  |  |  |  |
| NHL-E1030 | Concept design: submittal - Hail | 2028-05-22 → 2028-04-24 (-28d) | 2028-05-28 → 2028-05-11 (-17d) | 5d → 9d | 110d → 111d |  | resources Contract cost (BOQ x payment milestones) [33989 SAR]; Progress weight (fair EPC distribution) [16 h] → Contract cost (BOQ x payment milestones) [33309 SAR]; Progress weight (fair EPC distribution, SAR value) [14260 SAR] |
| APR | **Approval** | 2027-12-06 → 2028-05-14 (+160d) | 2027-12-26 → 2028-06-01 (+158d) |  |  |  |  |
| NHL-E1040 | Concept design: SAR review and approval - Hail | 2028-05-29 → 2028-05-14 (-15d) | 2028-06-18 → 2028-06-01 (-17d) |  | 135d → 161d |  | resources Contract cost (BOQ x payment milestones) [33989 SAR]; Progress weight (fair EPC distribution) [47 h] → Contract cost (BOQ x payment milestones) [33989 SAR]; Progress weight (fair EPC distribution, SAR value) [24180 SAR] |
| PRE | **Preliminary (schematic) design** | 2027-11-17 → 2028-05-14 (+179d) | 2027-12-26 → 2028-06-22 (+179d) |  |  |  |  |
| SUB | **Submittal** | 2027-12-06 → 2028-05-14 (+160d) | 2028-01-02 → 2028-06-01 (+151d) |  |  |  |  |
| NHL-E1050 | Preliminary design: submittal - Hail | 2028-05-29 → 2028-05-14 (-15d) | 2028-06-07 → 2028-06-01 (-6d) | 8d → 15d | 110d → 111d |  | resources Contract cost (BOQ x payment milestones) [67978 SAR]; Progress weight (fair EPC distribution) [40 h] → Contract cost (BOQ x payment milestones) [66619 SAR]; Progress weight (fair EPC distribution, SAR value) [34720 SAR] |
| APR | **Approval** | 2028-01-03 → 2028-06-04 (+153d) | 2028-01-23 → 2028-06-22 (+151d) |  |  |  |  |
| NHL-E1060 | Preliminary design: SAR review and approval - Hail | 2028-06-08 → 2028-06-04 (-4d) | 2028-06-28 → 2028-06-22 (-6d) |  | 127d → 146d |  | resources Contract cost (BOQ x payment milestones) [67978 SAR]; Progress weight (fair EPC distribution) [74 h] → Contract cost (BOQ x payment milestones) [67978 SAR]; Progress weight (fair EPC distribution, SAR value) [34720 SAR] |
| DET | **Detailed design** | 2027-12-06 → 2028-06-04 (+181d) | 2028-01-23 → 2028-07-26 (+185d) |  |  |  |  |
| SUB | **Submittal** | 2028-01-03 → 2028-06-04 (+153d) | 2028-01-13 → 2028-07-05 (+174d) |  |  |  |  |
| NHL-E1070 | Detailed design: submittal (drawings, BOQ, data sheets) - Hail | 2028-06-08 → 2028-06-04 (-4d) | 2028-06-25 → 2028-07-05 (+10d) | 12d → 24d | 110d → 111d |  | resources Contract cost (BOQ x payment milestones) [135957 SAR]; Progress weight (fair EPC distribution) [84 h] → Contract cost (BOQ x payment milestones) [133238 SAR]; Progress weight (fair EPC distribution, SAR value) [70680 SAR] |
| APR | **Approval** | 2028-01-16 → 2028-07-06 (+172d) | 2028-02-03 → 2028-07-26 (+174d) |  |  |  |  |
| NHL-E1080 | Detailed design: SAR review and approval - Hail | 2028-06-26 → 2028-07-06 (+10d) | 2028-07-16 → 2028-07-26 (+10d) |  | 115d → 122d |  | resources Contract cost (BOQ x payment milestones) [135957 SAR]; Progress weight (fair EPC distribution) [105 h] → Contract cost (BOQ x payment milestones) [135957 SAR]; Progress weight (fair EPC distribution, SAR value) [44020 SAR] |
| IFC | **IFC and shop drawings** | 2028-01-03 → 2028-07-06 (+185d) | 2028-02-03 → 2028-08-10 (+189d) |  |  |  |  |
| SUB | **Submittal** | 2027-12-16 → 2028-07-06 (+203d) | 2028-01-13 → 2028-07-20 (+189d) |  |  |  |  |
| NHL-E1090 | IFC and shop drawings: submittal - Hail | 2028-06-26 → 2028-07-06 (+10d) | 2028-07-02 → 2028-07-20 (+18d) | 5d → 11d | 110d → 111d |  | resources Contract cost (BOQ x payment milestones) [67978 SAR]; Progress weight (fair EPC distribution) [28 h] → Contract cost (BOQ x payment milestones) [66619 SAR]; Progress weight (fair EPC distribution, SAR value) [29140 SAR] |
| APR | **Approval** | 2028-01-16 → 2028-07-23 (+189d) | 2028-02-03 → 2028-08-10 (+189d) |  |  |  |  |
| NHL-E1100 | IFC and shop drawings: SAR approval and release - Hail | 2028-07-03 → 2028-07-23 (+20d) | 2028-07-23 → 2028-08-10 (+18d) |  | 110d → 111d |  | resources Contract cost (BOQ x payment milestones) [67978 SAR]; Progress weight (fair EPC distribution) [85 h] → Contract cost (BOQ x payment milestones) [67978 SAR]; Progress weight (fair EPC distribution, SAR value) [39680 SAR] |
| HCS | **HCIS documentation (Stage 3 and 4)** | 2027-12-16 → 2028-06-15 (+182d) | 2028-02-03 → 2028-08-10 (+189d) |  |  |  |  |
| SUB | **Submittal** | 2029-01-29 → 2028-06-15 (-228d) | 2029-04-02 → 2028-07-20 (-256d) |  |  |  |  |
| NHL-E1110 | HCIS Stage 3 and 4 documents: preparation - Hail |  | 2028-07-02 → 2028-07-20 (+18d) | 12d → 26d | 110d → 111d | NHL-E1050 FS+5d, NHL-E1090 FF → NHL-E1050 FS+9d, NHL-E1090 FF | resources Contract cost (BOQ x payment milestones) [16995 SAR]; Progress weight (fair EPC distribution) [17 h] → Contract cost (BOQ x payment milestones) [16655 SAR]; Progress weight (fair EPC distribution, SAR value) [14880 SAR] |
| APR | **Approval** | 2029-04-03 → 2028-07-23 (-254d) | 2029-04-30 → 2028-08-10 (-263d) |  |  |  |  |
| NHL-E1120 | HCIS Stage 3 and 4 documents: SAR final review and HCIS submission - Hail | 2028-07-03 → 2028-07-23 (+20d) | 2028-07-23 → 2028-08-10 (+18d) |  | 110d → 111d |  | resources Contract cost (BOQ x payment milestones) [16995 SAR]; Progress weight (fair EPC distribution) [21 h] → Contract cost (BOQ x payment milestones) [16995 SAR]; Progress weight (fair EPC distribution, SAR value) [8680 SAR] |
| ASB | **As-built and O&M documentation** | 2029-01-29 → 2029-02-07 (+9d) | 2029-04-30 → 2029-04-16 (-14d) |  |  |  |  |
| SUB | **Submittal** | 2028-02-09 → 2029-02-07 (+364d) | 2028-03-14 → 2029-03-26 (+377d) |  |  |  |  |
| NHL-E1130 | As-built and O&M documentation: submittal - Hail | 2029-02-20 → 2029-02-07 (-13d) | 2029-04-03 → 2029-03-26 (-8d) | 30d → 28d | 110d → 111d |  | resources Contract cost (BOQ x payment milestones) [50984 SAR]; Progress weight (fair EPC distribution) [42 h] → Contract cost (BOQ x payment milestones) [50984 SAR]; Progress weight (fair EPC distribution, SAR value) [24800 SAR] |
| APR | **Approval** | 2028-03-15 → 2029-03-27 (+377d) | 2028-03-21 → 2029-04-16 (+391d) |  |  |  |  |
| NHL-E1140 | As-built and O&M documentation: SAR review and approval - Hail | 2029-04-04 → 2029-03-27 (-8d) | 2029-05-01 → 2029-04-16 (-15d) |  | 110d → 111d |  | resources Contract cost (BOQ x payment milestones) [16995 SAR]; Progress weight (fair EPC distribution) [21 h] → Contract cost (BOQ x payment milestones) [16995 SAR]; Progress weight (fair EPC distribution, SAR value) [13640 SAR] |
| NJF | **Al Jouf (NSR)** | 2028-10-05 → 2028-06-29 (-98d) | 2029-03-15 → 2029-07-09 (+116d) |  |  |  |  |
| NJF-E1200 | MS2 Engineering submittal complete (10%) - Al Jouf | 2028-09-13 → 2028-10-05 (+22d) | 2028-09-13 → 2028-10-05 (+22d) |  | 72d → 71d |  |  |
| NJF-E1210 | MS3 Engineering approved by SAR (10%) - Al Jouf | 2028-10-04 → 2028-10-26 (+22d) | 2028-10-04 → 2028-10-26 (+22d) |  | 57d → 56d |  |  |
| SRV | **Site survey and as-found verification** | 2028-02-09 → 2028-06-29 (+141d) | 2028-03-21 → 2028-07-31 (+132d) |  |  |  |  |
| SUB | **Submittal** | 2028-03-15 → 2028-06-29 (+106d) | 2028-03-26 → 2028-07-10 (+106d) |  |  |  |  |
| NJF-E1010 | Survey: submittal of site survey and as-found report - Al Jouf | 2028-07-20 → 2028-06-29 (-21d) | 2028-08-02 → 2028-07-10 (-23d) | 10d → 8d | 57d → 56d | PRJ-M2100 FS+347d → PRJ-A1060, PRJ-M2100 FS+312d | resources Contract cost (BOQ x payment milestones) [17114 SAR]; Progress weight (fair EPC distribution) [34 h] → Contract cost (BOQ x payment milestones) [23618 SAR]; Progress weight (fair EPC distribution, SAR value) [18600 SAR] |
| APR | **Approval** | 2028-03-27 → 2028-07-11 (+106d) | 2028-04-16 → 2028-07-31 (+106d) |  |  |  |  |
| NJF-E1020 | Survey: SAR approval of survey report - Al Jouf | 2028-08-03 → 2028-07-11 (-23d) | 2028-08-09 → 2028-07-31 (-9d) | 5d → 15d | 97d → 119d |  | resources Contract cost (BOQ x payment milestones) [17114 SAR]; Progress weight (fair EPC distribution) [17 h] → Contract cost (BOQ x payment milestones) [17114 SAR]; Progress weight (fair EPC distribution, SAR value) [20460 SAR] |
| CNC | **Concept design** | 2028-03-15 → 2028-07-11 (+118d) | 2028-04-16 → 2028-08-13 (+119d) |  |  |  |  |
| SUB | **Submittal** | 2028-07-20 → 2028-07-11 (-9d) | 2028-08-02 → 2028-07-23 (-10d) |  |  |  |  |
| NJF-E1030 | Concept design: submittal - Al Jouf | 2028-08-03 → 2028-07-11 (-23d) | 2028-08-09 → 2028-07-23 (-17d) | 5d → 9d | 57d → 56d |  | resources Contract cost (BOQ x payment milestones) [34228 SAR]; Progress weight (fair EPC distribution) [16 h] → Contract cost (BOQ x payment milestones) [33544 SAR]; Progress weight (fair EPC distribution, SAR value) [14260 SAR] |
| APR | **Approval** | 2028-08-03 → 2028-07-24 (-10d) | 2028-08-09 → 2028-08-13 (+4d) |  |  |  |  |
| NJF-E1040 | Concept design: SAR review and approval - Al Jouf | 2028-08-10 → 2028-07-24 (-17d) | 2028-08-30 → 2028-08-13 (-17d) |  | 82d → 110d |  | resources Contract cost (BOQ x payment milestones) [34228 SAR]; Progress weight (fair EPC distribution) [48 h] → Contract cost (BOQ x payment milestones) [34228 SAR]; Progress weight (fair EPC distribution, SAR value) [24180 SAR] |
| PRE | **Preliminary (schematic) design** | 2028-03-27 → 2028-07-24 (+119d) | 2028-05-10 → 2028-09-04 (+117d) |  |  |  |  |
| SUB | **Submittal** | 2028-08-03 → 2028-07-24 (-10d) | 2028-08-09 → 2028-08-14 (+5d) |  |  |  |  |
| NJF-E1050 | Preliminary design: submittal - Al Jouf | 2028-08-10 → 2028-07-24 (-17d) | 2028-08-21 → 2028-08-14 (-7d) | 8d → 16d | 57d → 56d |  | resources Contract cost (BOQ x payment milestones) [68457 SAR]; Progress weight (fair EPC distribution) [40 h] → Contract cost (BOQ x payment milestones) [67088 SAR]; Progress weight (fair EPC distribution, SAR value) [35960 SAR] |
| APR | **Approval** | 2028-08-10 → 2028-08-15 (+5d) | 2028-08-30 → 2028-09-04 (+5d) |  |  |  |  |
| NJF-E1060 | Preliminary design: SAR review and approval - Al Jouf | 2028-08-22 → 2028-08-15 (-7d) | 2028-09-11 → 2028-09-04 (-7d) |  | 74d → 94d |  | resources Contract cost (BOQ x payment milestones) [68457 SAR]; Progress weight (fair EPC distribution) [75 h] → Contract cost (BOQ x payment milestones) [68457 SAR]; Progress weight (fair EPC distribution, SAR value) [33480 SAR] |
| DET | **Detailed design** | 2028-04-13 → 2028-08-15 (+124d) | 2028-06-07 → 2028-10-09 (+124d) |  |  |  |  |
| SUB | **Submittal** | 2028-08-10 → 2028-08-15 (+5d) | 2028-08-21 → 2028-09-18 (+28d) |  |  |  |  |
| NJF-E1070 | Detailed design: submittal (drawings, BOQ, data sheets) - Al Jouf | 2028-08-22 → 2028-08-15 (-7d) | 2028-09-06 → 2028-09-18 (+12d) | 12d → 25d | 57d → 56d |  | resources Contract cost (BOQ x payment milestones) [136914 SAR]; Progress weight (fair EPC distribution) [85 h] → Contract cost (BOQ x payment milestones) [134176 SAR]; Progress weight (fair EPC distribution, SAR value) [72540 SAR] |

| ID | Task | Start | Finish | Duration | Total float | Predecessors | Other |
| --- | --- | --- | --- | --- | --- | --- | --- |
| APR | **Approval** | 2028-08-22 → 2028-09-19 (+28d) | 2028-09-11 → 2028-10-09 (+28d) |  |  |  |  |
| NJF-E1080 | Detailed design: SAR review and approval - Al Jouf | 2028-09-07 → 2028-09-19 (+12d) | 2028-09-27 → 2028-10-09 (+12d) |  | 62d → 69d |  | resources Contract cost (BOQ x payment milestones) [136914 SAR]; Progress weight (fair EPC distribution) [106 h] → Contract cost (BOQ x payment milestones) [136914 SAR]; Progress weight (fair EPC distribution, SAR value) [43400 SAR] |
| IFC | **IFC and shop drawings** | 2028-05-18 → 2028-09-19 (+124d) | 2028-06-20 → 2028-10-26 (+128d) |  |  |  |  |
| SUB | **Submittal** | 2028-08-22 → 2028-09-19 (+28d) | 2028-09-06 → 2028-10-05 (+29d) |  |  |  |  |
| NJF-E1090 | IFC and shop drawings: submittal - Al Jouf | 2028-09-07 → 2028-09-19 (+12d) | 2028-09-13 → 2028-10-05 (+22d) | 5d → 13d | 57d → 56d |  | resources Contract cost (BOQ x payment milestones) [68457 SAR]; Progress weight (fair EPC distribution) [29 h] → Contract cost (BOQ x payment milestones) [67088 SAR]; Progress weight (fair EPC distribution, SAR value) [32240 SAR] |
| APR | **Approval** | 2028-09-07 → 2028-10-08 (+31d) | 2028-09-27 → 2028-10-26 (+29d) |  |  |  |  |
| NJF-E1100 | IFC and shop drawings: SAR approval and release - Al Jouf | 2028-09-14 → 2028-10-08 (+24d) | 2028-10-04 → 2028-10-26 (+22d) |  | 57d → 56d |  | resources Contract cost (BOQ x payment milestones) [68457 SAR]; Progress weight (fair EPC distribution) [86 h] → Contract cost (BOQ x payment milestones) [68457 SAR]; Progress weight (fair EPC distribution, SAR value) [37200 SAR] |
| HCS | **HCIS documentation (Stage 3 and 4)** | 2028-04-25 → 2028-08-28 (+125d) | 2028-06-20 → 2028-10-26 (+128d) |  |  |  |  |
| SUB | **Submittal** | 2028-09-07 → 2028-08-28 (-10d) | 2028-09-13 → 2028-10-05 (+22d) |  |  |  |  |
| NJF-E1110 | HCIS Stage 3 and 4 documents: preparation - Al Jouf | 2028-08-29 → 2028-08-28 (-1d) | 2028-09-13 → 2028-10-05 (+22d) | 12d → 29d | 57d → 56d | NJF-E1050 FS+5d, NJF-E1090 FF → NJF-E1050 FS+9d, NJF-E1090 FF | resources Contract cost (BOQ x payment milestones) [17114 SAR]; Progress weight (fair EPC distribution) [17 h] → Contract cost (BOQ x payment milestones) [16772 SAR]; Progress weight (fair EPC distribution, SAR value) [15500 SAR] |
| APR | **Approval** | 2028-09-14 → 2028-10-08 (+24d) | 2028-10-04 → 2028-10-26 (+22d) |  |  |  |  |
| NJF-E1120 | HCIS Stage 3 and 4 documents: SAR final review and HCIS submission - Al Jouf | 2028-09-14 → 2028-10-08 (+24d) | 2028-10-04 → 2028-10-26 (+22d) |  | 57d → 56d |  | resources Contract cost (BOQ x payment milestones) [17114 SAR]; Progress weight (fair EPC distribution) [21 h] → Contract cost (BOQ x payment milestones) [17114 SAR]; Progress weight (fair EPC distribution, SAR value) [8060 SAR] |
| ASB | **As-built and O&M documentation** | 2029-04-15 → 2029-05-10 (+25d) | 2029-07-05 → 2029-07-09 (+4d) |  |  |  |  |
| SUB | **Submittal** | 2028-08-29 → 2029-05-10 (+254d) | 2028-09-13 → 2029-06-18 (+278d) |  |  |  |  |
| NJF-E1130 | As-built and O&M documentation: submittal - Al Jouf | 2029-05-14 → 2029-05-10 (-4d) | 2029-06-24 → 2029-06-18 (-6d) | 30d → 28d | 57d → 56d |  | resources Contract cost (BOQ x payment milestones) [51343 SAR]; Progress weight (fair EPC distribution) [42 h] → Contract cost (BOQ x payment milestones) [51343 SAR]; Progress weight (fair EPC distribution, SAR value) [25420 SAR] |
| APR | **Approval** | 2028-09-14 → 2029-06-19 (+278d) | 2028-10-04 → 2029-07-09 (+278d) |  |  |  |  |
| NJF-E1140 | As-built and O&M documentation: SAR review and approval - Al Jouf | 2029-06-25 → 2029-06-19 (-6d) | 2029-07-15 → 2029-07-09 (-6d) |  | 57d → 56d |  | resources Contract cost (BOQ x payment milestones) [17114 SAR]; Progress weight (fair EPC distribution) [21 h] → Contract cost (BOQ x payment milestones) [17114 SAR]; Progress weight (fair EPC distribution, SAR value) [13640 SAR] |
| NQR | **Al Qurayyat (NSR)** | 2028-11-23 → 2028-08-16 (-99d) | 2029-07-01 → 2029-08-27 (+57d) |  |  |  |  |
| NQR-E1200 | MS2 Engineering submittal complete (10%) - Al Qurayyat | 2028-11-01 → 2028-11-23 (+22d) | 2028-11-01 → 2028-11-23 (+22d) |  | 37d → 36d |  |  |
| NQR-E1210 | MS3 Engineering approved by SAR (10%) - Al Qurayyat | 2028-11-22 → 2028-12-14 (+22d) | 2028-11-22 → 2028-12-14 (+22d) |  | 22d → 21d |  |  |
| SRV | **Site survey and as-found verification** | 2028-02-09 → 2028-08-16 (+189d) | 2028-03-21 → 2028-09-17 (+180d) |  |  |  |  |
| SUB | **Submittal** | 2028-03-27 → 2028-08-16 (+142d) | 2028-04-12 → 2028-08-27 (+137d) |  |  |  |  |
| NQR-E1010 | Survey: submittal of site survey and as-found report - Al Qurayyat | 2028-09-07 → 2028-08-16 (-22d) | 2028-09-20 → 2028-08-27 (-24d) | 10d → 8d | 22d → 21d | PRJ-M2100 FS+382d → PRJ-A1060, PRJ-M2100 FS+346d | resources Contract cost (BOQ x payment milestones) [16995 SAR]; Progress weight (fair EPC distribution) [34 h] → Contract cost (BOQ x payment milestones) [23453 SAR]; Progress weight (fair EPC distribution, SAR value) [18600 SAR] |
| APR | **Approval** | 2028-04-13 → 2028-08-28 (+137d) | 2028-05-10 → 2028-09-17 (+130d) |  |  |  |  |
| NQR-E1020 | Survey: SAR approval of survey report - Al Qurayyat | 2028-09-21 → 2028-08-28 (-24d) | 2028-09-27 → 2028-09-17 (-10d) | 5d → 15d | 62d → 85d |  | resources Contract cost (BOQ x payment milestones) [16995 SAR]; Progress weight (fair EPC distribution) [17 h] → Contract cost (BOQ x payment milestones) [16995 SAR]; Progress weight (fair EPC distribution, SAR value) [19840 SAR] |
| CNC | **Concept design** | 2028-03-15 → 2028-08-28 (+166d) | 2028-04-16 → 2028-10-01 (+168d) |  |  |  |  |
| SUB | **Submittal** | 2028-04-13 → 2028-08-28 (+137d) | 2028-05-17 → 2028-09-10 (+116d) |  |  |  |  |
| NQR-E1030 | Concept design: submittal - Al Qurayyat | 2028-09-21 → 2028-08-28 (-24d) | 2028-09-27 → 2028-09-10 (-17d) | 5d → 10d | 22d → 21d |  | resources Contract cost (BOQ x payment milestones) [33989 SAR]; Progress weight (fair EPC distribution) [16 h] → Contract cost (BOQ x payment milestones) [33309 SAR]; Progress weight (fair EPC distribution, SAR value) [15500 SAR] |
| APR | **Approval** | 2028-05-18 → 2028-09-11 (+116d) | 2028-06-07 → 2028-10-01 (+116d) |  |  |  |  |
| NQR-E1040 | Concept design: SAR review and approval - Al Qurayyat | 2028-09-28 → 2028-09-11 (-17d) | 2028-10-18 → 2028-10-01 (-17d) |  | 47d → 75d |  | resources Contract cost (BOQ x payment milestones) [33989 SAR]; Progress weight (fair EPC distribution) [47 h] → Contract cost (BOQ x payment milestones) [33989 SAR]; Progress weight (fair EPC distribution, SAR value) [22940 SAR] |
| PRE | **Preliminary (schematic) design** | 2028-03-27 → 2028-09-11 (+168d) | 2028-05-10 → 2028-10-23 (+166d) |  |  |  |  |
| SUB | **Submittal** | 2028-05-18 → 2028-09-11 (+116d) | 2028-05-30 → 2028-10-02 (+125d) |  |  |  |  |
| NQR-E1050 | Preliminary design: submittal - Al Qurayyat | 2028-09-28 → 2028-09-11 (-17d) | 2028-10-09 → 2028-10-02 (-7d) | 8d → 16d | 22d → 21d |  | resources Contract cost (BOQ x payment milestones) [67978 SAR]; Progress weight (fair EPC distribution) [40 h] → Contract cost (BOQ x payment milestones) [66619 SAR]; Progress weight (fair EPC distribution, SAR value) [35340 SAR] |
| APR | **Approval** | 2028-05-31 → 2028-10-03 (+125d) | 2028-06-20 → 2028-10-23 (+125d) |  |  |  |  |
| NQR-E1060 | Preliminary design: SAR review and approval - Al Qurayyat | 2028-10-10 → 2028-10-03 (-7d) | 2028-10-30 → 2028-10-23 (-7d) |  | 39d → 59d |  | resources Contract cost (BOQ x payment milestones) [67978 SAR]; Progress weight (fair EPC distribution) [74 h] → Contract cost (BOQ x payment milestones) [67978 SAR]; Progress weight (fair EPC distribution, SAR value) [33480 SAR] |
| DET | **Detailed design** | 2028-04-13 → 2028-10-03 (+173d) | 2028-06-07 → 2028-11-28 (+174d) |  |  |  |  |
| SUB | **Submittal** | 2028-04-25 → 2028-10-03 (+161d) | 2028-05-30 → 2028-11-07 (+161d) |  |  |  |  |
| NQR-E1070 | Detailed design: submittal (drawings, BOQ, data sheets) - Al Qurayyat | 2028-10-10 → 2028-10-03 (-7d) | 2028-10-25 → 2028-11-07 (+13d) | 12d → 26d | 22d → 21d |  | resources Contract cost (BOQ x payment milestones) [135957 SAR]; Progress weight (fair EPC distribution) [84 h] → Contract cost (BOQ x payment milestones) [133238 SAR]; Progress weight (fair EPC distribution, SAR value) [73160 SAR] |
| APR | **Approval** | 2028-05-31 → 2028-11-08 (+161d) | 2028-06-20 → 2028-11-28 (+161d) |  |  |  |  |
| NQR-E1080 | Detailed design: SAR review and approval - Al Qurayyat | 2028-10-26 → 2028-11-08 (+13d) | 2028-11-15 → 2028-11-28 (+13d) |  | 27d → 33d |  | resources Contract cost (BOQ x payment milestones) [135957 SAR]; Progress weight (fair EPC distribution) [105 h] → Contract cost (BOQ x payment milestones) [135957 SAR]; Progress weight (fair EPC distribution, SAR value) [42160 SAR] |
| IFC | **IFC and shop drawings** | 2028-05-18 → 2028-11-08 (+174d) | 2028-06-20 → 2028-12-14 (+177d) |  |  |  |  |
| SUB | **Submittal** | 2029-04-15 → 2028-11-08 (-158d) | 2029-06-14 → 2028-11-23 (-203d) |  |  |  |  |
| NQR-E1090 | IFC and shop drawings: submittal - Al Qurayyat | 2028-10-26 → 2028-11-08 (+13d) | 2028-11-01 → 2028-11-23 (+22d) | 5d → 12d | 22d → 21d |  | resources Contract cost (BOQ x payment milestones) [67978 SAR]; Progress weight (fair EPC distribution) [28 h] → Contract cost (BOQ x payment milestones) [66619 SAR]; Progress weight (fair EPC distribution, SAR value) [31000 SAR] |
| APR | **Approval** | 2029-06-17 → 2028-11-26 (-203d) | 2029-07-05 → 2028-12-14 (-203d) |  |  |  |  |
| NQR-E1100 | IFC and shop drawings: SAR approval and release - Al Qurayyat | 2028-11-02 → 2028-11-26 (+24d) | 2028-11-22 → 2028-12-14 (+22d) |  | 22d → 21d |  | resources Contract cost (BOQ x payment milestones) [67978 SAR]; Progress weight (fair EPC distribution) [85 h] → Contract cost (BOQ x payment milestones) [67978 SAR]; Progress weight (fair EPC distribution, SAR value) [38440 SAR] |
| HCS | **HCIS documentation (Stage 3 and 4)** | 2028-04-25 → 2028-10-17 (+175d) | 2028-06-20 → 2028-12-14 (+177d) |  |  |  |  |
| SUB | **Submittal** | 2028-04-25 → 2028-10-17 (+175d) | 2028-05-30 → 2028-11-23 (+177d) |  |  |  |  |
| NQR-E1110 | HCIS Stage 3 and 4 documents: preparation - Al Qurayyat |  | 2028-11-01 → 2028-11-23 (+22d) | 12d → 28d | 22d → 21d | NQR-E1050 FS+5d, NQR-E1090 FF → NQR-E1050 FS+10d, NQR-E1090 FF | resources Contract cost (BOQ x payment milestones) [16995 SAR]; Progress weight (fair EPC distribution) [17 h] → Contract cost (BOQ x payment milestones) [16655 SAR]; Progress weight (fair EPC distribution, SAR value) [14880 SAR] |
| APR | **Approval** | 2028-05-31 → 2028-11-26 (+179d) | 2028-06-20 → 2028-12-14 (+177d) |  |  |  |  |
| NQR-E1120 | HCIS Stage 3 and 4 documents: SAR final review and HCIS submission - Al Qurayyat | 2028-11-02 → 2028-11-26 (+24d) | 2028-11-22 → 2028-12-14 (+22d) |  | 22d → 21d |  | resources Contract cost (BOQ x payment milestones) [16995 SAR]; Progress weight (fair EPC distribution) [21 h] → Contract cost (BOQ x payment milestones) [16995 SAR]; Progress weight (fair EPC distribution, SAR value) [8060 SAR] |
| ASB | **As-built and O&M documentation** | 2029-04-19 → 2029-06-28 (+70d) | 2029-07-11 → 2029-08-27 (+47d) |  |  |  |  |
| SUB | **Submittal** | 2029-04-19 → 2029-06-28 (+70d) | 2029-06-20 → 2029-08-06 (+47d) |  |  |  |  |
| NQR-E1130 | As-built and O&M documentation: submittal - Al Qurayyat | 2029-07-02 → 2029-06-28 (-4d) | 2029-08-12 → 2029-08-06 (-6d) | 30d → 28d | 22d → 21d |  | resources Contract cost (BOQ x payment milestones) [50984 SAR]; Progress weight (fair EPC distribution) [42 h] → Contract cost (BOQ x payment milestones) [50984 SAR]; Progress weight (fair EPC distribution, SAR value) [24800 SAR] |
| APR | **Approval** | 2029-06-21 → 2029-08-07 (+47d) | 2029-07-11 → 2029-08-27 (+47d) |  |  |  |  |
| NQR-E1140 | As-built and O&M documentation: SAR review and approval - Al Qurayyat | 2029-08-13 → 2029-08-07 (-6d) | 2029-09-02 → 2029-08-27 (-6d) |  | 22d → 21d |  | resources Contract cost (BOQ x payment milestones) [16995 SAR]; Progress weight (fair EPC distribution) [21 h] → Contract cost (BOQ x payment milestones) [16995 SAR]; Progress weight (fair EPC distribution, SAR value) [13640 SAR] |
| PRO | **Procurement** | 2027-03-01 → 2027-05-02 (+62d) | 2029-05-10 → 2029-04-19 (-21d) |  |  |  |  |
| NRY | **Riyadh (Thumamah) (NSR)** | 2027-03-01 → 2027-05-02 (+62d) | 2027-08-01 → 2027-09-01 (+31d) |  |  |  |  |
| NRY-P1100 | MS4 Material delivered (20%) - Riyadh (Thumamah) | 2027-08-01 → 2027-09-01 (+31d) | 2027-08-01 → 2027-09-01 (+31d) |  | 464d → 430d |  |  |
| CCT | **CCTV system** | 2027-03-01 → 2027-05-02 (+62d) | 2027-06-06 → 2027-07-12 (+36d) |  |  |  |  |
| NRY-P1010 | Manufacture CCTV cameras and analytics - Riyadh (Thumamah) | 2027-03-01 → 2027-05-02 (+62d) | 2027-06-06 → 2027-07-12 (+36d) | 60d → 47d | 464d → 430d |  | resources Contract cost (BOQ x payment milestones) [103080 SAR]; Progress weight (fair EPC distribution) [255 h] → Contract cost (BOQ x payment milestones) [103080 SAR]; Progress weight (fair EPC distribution, SAR value) [158100 SAR] |
| VMS | **Video management and video wall** | 2027-03-01 → 2027-05-02 (+62d) | 2027-06-06 → 2027-07-12 (+36d) |  |  |  |  |
| NRY-P1020 | Manufacture video management servers, storage and video wall - Riyadh (Thumamah) | 2027-03-01 → 2027-05-02 (+62d) | 2027-06-06 → 2027-07-12 (+36d) | 60d → 47d | 464d → 430d |  | resources Contract cost (BOQ x payment milestones) [126844 SAR]; Progress weight (fair EPC distribution) [314 h] → Contract cost (BOQ x payment milestones) [126844 SAR]; Progress weight (fair EPC distribution, SAR value) [194680 SAR] |
| ACC | **Access control and intercom** | 2027-03-01 → 2027-05-02 (+62d) | 2027-06-06 → 2027-07-12 (+36d) |  |  |  |  |
| NRY-P1030 | Manufacture access control and intercom equipment - Riyadh (Thumamah) | 2027-03-01 → 2027-05-02 (+62d) | 2027-06-06 → 2027-07-12 (+36d) | 60d → 47d | 464d → 430d |  | resources Contract cost (BOQ x payment milestones) [13405 SAR]; Progress weight (fair EPC distribution) [33 h] → Contract cost (BOQ x payment milestones) [13405 SAR]; Progress weight (fair EPC distribution, SAR value) [20460 SAR] |
| UPN | **UPS, network and cabinets** | 2027-03-01 → 2027-05-02 (+62d) | 2027-06-06 → 2027-07-12 (+36d) |  |  |  |  |
| NRY-P1040 | Manufacture UPS, network switches and field cabinets - Riyadh (Thumamah) | 2027-03-01 → 2027-05-02 (+62d) | 2027-06-06 → 2027-07-12 (+36d) | 60d → 47d | 464d → 430d |  | resources Contract cost (BOQ x payment milestones) [278789 SAR]; Progress weight (fair EPC distribution) [691 h] → Contract cost (BOQ x payment milestones) [278789 SAR]; Progress weight (fair EPC distribution, SAR value) [428420 SAR] |
| LOG | **FAT and logistics** | 2027-06-07 → 2027-07-13 (+36d) | 2027-08-01 → 2027-09-01 (+31d) |  |  |  |  |
| NRY-P1050 | Factory acceptance test at vendor premises - Riyadh (Thumamah) | 2027-06-07 → 2027-07-13 (+36d) | 2027-06-20 → 2027-07-26 (+36d) |  | 464d → 430d |  | resources Contract cost (BOQ x payment milestones) [34808 SAR]; Progress weight (fair EPC distribution) [216 h] → Contract cost (BOQ x payment milestones) [34808 SAR]; Progress weight (fair EPC distribution, SAR value) [133920 SAR] |
| NRY-P1060 | Shipping and customs clearance - Riyadh (Thumamah) | 2027-06-21 → 2027-07-27 (+36d) | 2027-07-25 → 2027-08-25 (+31d) | 25d → 22d | 464d → 430d |  | resources Contract cost (BOQ x payment milestones) [104424 SAR]; Progress weight (fair EPC distribution) [431 h] → Contract cost (BOQ x payment milestones) [104424 SAR]; Progress weight (fair EPC distribution, SAR value) [267220 SAR] |
| NRY-P1070 | Delivery to station and receiving inspection - Riyadh (Thumamah) | 2027-07-26 → 2027-08-26 (+31d) | 2027-08-01 → 2027-09-01 (+31d) |  | 464d → 430d |  | resources Contract cost (BOQ x payment milestones) [34808 SAR]; Progress weight (fair EPC distribution) [216 h] → Contract cost (BOQ x payment milestones) [34808 SAR]; Progress weight (fair EPC distribution, SAR value) [133920 SAR] |

| ID | Task | Start | Finish | Duration | Total float | Other |
| --- | --- | --- | --- | --- | --- | --- |
| HMK | **Makkah (HHR)** | 2028-02-06 → 2027-05-02 (-280d) | 2028-08-31 → 2027-11-08 (-297d) |  |  |  |
| HMK-P1100 | MS4 Material delivered (20%) - Makkah | 2028-08-31 → 2027-11-08 (-297d) | 2028-08-31 → 2027-11-08 (-297d) |  | 106d → 329d |  |
| CCT | **CCTV system** | 2027-03-22 → 2027-05-02 (+41d) | 2027-06-20 → 2027-08-29 (+70d) |  |  |  |
| HMK-P1010 | Manufacture CCTV cameras and analytics - Makkah | 2028-02-06 → 2027-05-02 (-280d) | 2028-06-22 → 2027-08-29 (-298d) | 90d → 81d | 106d → 329d | resources Contract cost (BOQ x payment milestones) [473780 SAR]; Progress weight (fair EPC distribution) [1174 h] → Contract cost (BOQ x payment milestones) [473780 SAR]; Progress weight (fair EPC distribution, SAR value) [727880 SAR] |
| VMS | **Video management and video wall** | 2027-03-22 → 2027-05-02 (+41d) | 2027-06-20 → 2027-08-29 (+70d) |  |  |  |
| HMK-P1020 | Manufacture video management servers, storage and video wall - Makkah | 2028-02-06 → 2027-05-02 (-280d) | 2028-06-22 → 2027-08-29 (-298d) | 90d → 81d | 106d → 329d | resources Contract cost (BOQ x payment milestones) [158552 SAR]; Progress weight (fair EPC distribution) [393 h] → Contract cost (BOQ x payment milestones) [158552 SAR]; Progress weight (fair EPC distribution, SAR value) [243660 SAR] |
| ACC | **Access control and intercom** | 2027-03-22 → 2027-05-02 (+41d) | 2027-06-20 → 2027-08-29 (+70d) |  |  |  |
| HMK-P1030 | Manufacture access control and intercom equipment - Makkah | 2028-02-06 → 2027-05-02 (-280d) | 2028-06-22 → 2027-08-29 (-298d) | 90d → 81d | 106d → 329d | resources Contract cost (BOQ x payment milestones) [12657 SAR]; Progress weight (fair EPC distribution) [31 h] → Contract cost (BOQ x payment milestones) [12657 SAR]; Progress weight (fair EPC distribution, SAR value) [19220 SAR] |
| UPN | **UPS, network and cabinets** | 2027-03-22 → 2027-05-02 (+41d) | 2027-06-20 → 2027-08-29 (+70d) |  |  |  |
| HMK-P1040 | Manufacture UPS, network switches and field cabinets - Makkah | 2028-02-06 → 2027-05-02 (-280d) | 2028-06-22 → 2027-08-29 (-298d) | 90d → 81d | 106d → 329d | resources Contract cost (BOQ x payment milestones) [811525 SAR]; Progress weight (fair EPC distribution) [2011 h] → Contract cost (BOQ x payment milestones) [811524 SAR]; Progress weight (fair EPC distribution, SAR value) [1246820 SAR] |
| LOG | **FAT and logistics** | 2027-06-21 → 2027-08-30 (+70d) | 2027-08-15 → 2027-11-08 (+85d) |  |  |  |
| HMK-P1050 | Factory acceptance test at vendor premises - Makkah | 2028-06-25 → 2027-08-30 (-300d) | 2028-07-06 → 2027-09-12 (-298d) |  | 106d → 329d | resources Contract cost (BOQ x payment milestones) [97101 SAR]; Progress weight (fair EPC distribution) [601 h] → Contract cost (BOQ x payment milestones) [97101 SAR]; Progress weight (fair EPC distribution, SAR value) [372620 SAR] |
| HMK-P1060 | Shipping and customs clearance - Makkah | 2028-07-09 → 2027-09-13 (-300d) | 2028-08-24 → 2027-11-01 (-297d) |  | 106d → 329d | resources Contract cost (BOQ x payment milestones) [291303 SAR]; Progress weight (fair EPC distribution) [1204 h] → Contract cost (BOQ x payment milestones) [291303 SAR]; Progress weight (fair EPC distribution, SAR value) [746480 SAR] |
| HMK-P1070 | Delivery to station and receiving inspection - Makkah | 2028-08-27 → 2027-11-02 (-299d) | 2028-08-31 → 2027-11-08 (-297d) |  | 106d → 329d | resources Contract cost (BOQ x payment milestones) [97101 SAR]; Progress weight (fair EPC distribution) [601 h] → Contract cost (BOQ x payment milestones) [97101 SAR]; Progress weight (fair EPC distribution, SAR value) [372620 SAR] |
| ERY | **Riyadh (Malaz) (EWR)** | 2027-03-22 → 2027-05-02 (+41d) | 2027-08-15 → 2027-08-24 (+9d) |  |  |  |
| ERY-P1100 | MS4 Material delivered (20%) - Riyadh (Malaz) | 2027-08-15 → 2027-08-24 (+9d) | 2027-08-15 → 2027-08-24 (+9d) |  | 460d → 443d |  |
| CCT | **CCTV system** | 2027-11-07 → 2027-05-02 (-189d) | 2028-02-10 → 2027-07-06 (-219d) |  |  |  |
| ERY-P1010 | Manufacture CCTV cameras and analytics - Riyadh (Malaz) | 2027-03-22 → 2027-05-02 (+41d) | 2027-06-20 → 2027-07-06 (+16d) | 60d → 43d | 460d → 443d | resources Contract cost (BOQ x payment milestones) [101092 SAR]; Progress weight (fair EPC distribution) [250 h] → Contract cost (BOQ x payment milestones) [101092 SAR]; Progress weight (fair EPC distribution, SAR value) [155000 SAR] |
| VMS | **Video management and video wall** | 2027-11-07 → 2027-05-02 (-189d) | 2028-02-10 → 2027-07-06 (-219d) |  |  |  |
| ERY-P1020 | Manufacture video management servers, storage and video wall - Riyadh (Malaz) | 2027-03-22 → 2027-05-02 (+41d) | 2027-06-20 → 2027-07-06 (+16d) | 60d → 43d | 460d → 443d | resources Contract cost (BOQ x payment milestones) [128120 SAR]; Progress weight (fair EPC distribution) [317 h] → Contract cost (BOQ x payment milestones) [128120 SAR]; Progress weight (fair EPC distribution, SAR value) [196540 SAR] |
| ACC | **Access control and intercom** | 2027-11-07 → 2027-05-02 (-189d) | 2028-02-10 → 2027-07-06 (-219d) |  |  |  |
| ERY-P1030 | Manufacture access control and intercom equipment - Riyadh (Malaz) | 2027-03-22 → 2027-05-02 (+41d) | 2027-06-20 → 2027-07-06 (+16d) | 60d → 43d | 460d → 443d | resources Contract cost (BOQ x payment milestones) [16098 SAR]; Progress weight (fair EPC distribution) [40 h] → Contract cost (BOQ x payment milestones) [16098 SAR]; Progress weight (fair EPC distribution, SAR value) [24800 SAR] |
| UPN | **UPS, network and cabinets** | 2027-11-07 → 2027-05-02 (-189d) | 2028-02-10 → 2027-07-06 (-219d) |  |  |  |
| ERY-P1040 | Manufacture UPS, network switches and field cabinets - Riyadh (Malaz) | 2027-03-22 → 2027-05-02 (+41d) | 2027-06-20 → 2027-07-06 (+16d) | 60d → 43d | 460d → 443d | resources Contract cost (BOQ x payment milestones) [218418 SAR]; Progress weight (fair EPC distribution) [541 h] → Contract cost (BOQ x payment milestones) [218418 SAR]; Progress weight (fair EPC distribution, SAR value) [335420 SAR] |
| LOG | **FAT and logistics** | 2028-02-13 → 2027-07-07 (-221d) | 2028-04-13 → 2027-08-24 (-233d) |  |  |  |
| ERY-P1050 | Factory acceptance test at vendor premises - Riyadh (Malaz) | 2027-06-21 → 2027-07-07 (+16d) | 2027-07-04 → 2027-07-20 (+16d) |  | 460d → 443d | resources Contract cost (BOQ x payment milestones) [30915 SAR]; Progress weight (fair EPC distribution) [191 h] → Contract cost (BOQ x payment milestones) [30915 SAR]; Progress weight (fair EPC distribution, SAR value) [118420 SAR] |
| ERY-P1060 | Shipping and customs clearance - Riyadh (Malaz) | 2027-07-05 → 2027-07-21 (+16d) | 2027-08-08 → 2027-08-17 (+9d) | 25d → 20d | 460d → 443d | resources Contract cost (BOQ x payment milestones) [92746 SAR]; Progress weight (fair EPC distribution) [383 h] → Contract cost (BOQ x payment milestones) [92746 SAR]; Progress weight (fair EPC distribution, SAR value) [237460 SAR] |
| ERY-P1070 | Delivery to station and receiving inspection - Riyadh (Malaz) | 2027-08-09 → 2027-08-18 (+9d) | 2027-08-15 → 2027-08-24 (+9d) |  | 460d → 443d | resources Contract cost (BOQ x payment milestones) [30915 SAR]; Progress weight (fair EPC distribution) [191 h] → Contract cost (BOQ x payment milestones) [30915 SAR]; Progress weight (fair EPC distribution, SAR value) [118420 SAR] |
| HJD | **Jeddah (HHR)** | 2027-07-15 → 2027-07-29 (+14d) |  |  |  |  |
| CCT | **CCTV system** | 2027-12-26 → 2027-07-29 (-150d) | 2028-04-06 → 2027-11-18 (-140d) |  |  |  |
| HJD-P1010 | Manufacture CCTV cameras and analytics - Jeddah | 2027-07-15 → 2027-07-29 (+14d) |  | 90d → 80d | 267d → 288d | resources Contract cost (BOQ x payment milestones) [396208 SAR]; Progress weight (fair EPC distribution) [982 h] → Contract cost (BOQ x payment milestones) [396208 SAR]; Progress weight (fair EPC distribution, SAR value) [608840 SAR] |
| VMS | **Video management and video wall** | 2027-12-26 → 2027-07-29 (-150d) | 2028-04-06 → 2027-11-18 (-140d) |  |  |  |
| HJD-P1020 | Manufacture video management servers, storage and video wall - Jeddah | 2027-07-15 → 2027-07-29 (+14d) |  | 90d → 80d | 267d → 288d | resources Contract cost (BOQ x payment milestones) [185712 SAR]; Progress weight (fair EPC distribution) [460 h] → Contract cost (BOQ x payment milestones) [185712 SAR]; Progress weight (fair EPC distribution, SAR value) [285200 SAR] |
| ACC | **Access control and intercom** | 2027-12-26 → 2027-07-29 (-150d) | 2028-04-06 → 2027-11-18 (-140d) |  |  |  |
| HJD-P1030 | Manufacture access control and intercom equipment - Jeddah | 2027-07-15 → 2027-07-29 (+14d) |  | 90d → 80d | 267d → 288d | resources Contract cost (BOQ x payment milestones) [12555 SAR]; Progress weight (fair EPC distribution) [31 h] → Contract cost (BOQ x payment milestones) [12555 SAR]; Progress weight (fair EPC distribution, SAR value) [19220 SAR] |
| UPN | **UPS, network and cabinets** | 2027-12-26 → 2027-07-29 (-150d) | 2028-04-06 → 2027-11-18 (-140d) |  |  |  |
| HJD-P1040 | Manufacture UPS, network switches and field cabinets - Jeddah | 2027-07-15 → 2027-07-29 (+14d) |  | 90d → 80d | 267d → 288d | resources Contract cost (BOQ x payment milestones) [838157 SAR]; Progress weight (fair EPC distribution) [2077 h] → Contract cost (BOQ x payment milestones) [838156 SAR]; Progress weight (fair EPC distribution, SAR value) [1287740 SAR] |
| LOG | **FAT and logistics** | 2028-04-09 → 2027-11-21 (-140d) | 2028-06-08 → 2028-01-27 (-133d) |  |  |  |
| HJD-P1050 | Factory acceptance test at vendor premises - Jeddah |  |  |  | 267d → 288d | resources Contract cost (BOQ x payment milestones) [95509 SAR]; Progress weight (fair EPC distribution) [592 h] → Contract cost (BOQ x payment milestones) [95509 SAR]; Progress weight (fair EPC distribution, SAR value) [367040 SAR] |
| HJD-P1060 | Shipping and customs clearance - Jeddah |  |  |  | 267d → 288d | resources Contract cost (BOQ x payment milestones) [286526 SAR]; Progress weight (fair EPC distribution) [1184 h] → Contract cost (BOQ x payment milestones) [286526 SAR]; Progress weight (fair EPC distribution, SAR value) [734080 SAR] |
| HJD-P1070 | Delivery to station and receiving inspection - Jeddah |  |  |  | 267d → 288d | resources Contract cost (BOQ x payment milestones) [95509 SAR]; Progress weight (fair EPC distribution) [592 h] → Contract cost (BOQ x payment milestones) [95509 SAR]; Progress weight (fair EPC distribution, SAR value) [367040 SAR] |
| EDM | **Dammam (EWR)** | 2027-09-09 → 2027-10-17 (+38d) | 2028-02-10 → 2028-02-01 (-9d) |  |  |  |
| EDM-P1100 | MS4 Material delivered (20%) - Dammam | 2028-02-10 → 2028-02-01 (-9d) | 2028-02-10 → 2028-02-01 (-9d) |  | 332d → 329d |  |
| CCT | **CCTV system** | 2028-07-24 → 2027-10-17 (-281d) | 2028-10-29 → 2027-12-14 (-320d) |  |  |  |
| EDM-P1010 | Manufacture CCTV cameras and analytics - Dammam | 2027-09-09 → 2027-10-17 (+38d) | 2027-12-16 → 2027-12-14 (-2d) | 70d → 43d | 332d → 329d | resources Contract cost (BOQ x payment milestones) [99436 SAR]; Progress weight (fair EPC distribution) [246 h] → Contract cost (BOQ x payment milestones) [99436 SAR]; Progress weight (fair EPC distribution, SAR value) [152520 SAR] |
| VMS | **Video management and video wall** | 2028-07-24 → 2027-10-17 (-281d) | 2028-10-29 → 2027-12-14 (-320d) |  |  |  |
| EDM-P1020 | Manufacture video management servers, storage and video wall - Dammam | 2027-09-09 → 2027-10-17 (+38d) | 2027-12-16 → 2027-12-14 (-2d) | 70d → 43d | 332d → 329d | resources Contract cost (BOQ x payment milestones) [148015 SAR]; Progress weight (fair EPC distribution) [367 h] → Contract cost (BOQ x payment milestones) [148015 SAR]; Progress weight (fair EPC distribution, SAR value) [227540 SAR] |
| ACC | **Access control and intercom** | 2028-07-24 → 2027-10-17 (-281d) | 2028-10-29 → 2027-12-14 (-320d) |  |  |  |
| EDM-P1030 | Manufacture access control and intercom equipment - Dammam | 2027-09-09 → 2027-10-17 (+38d) | 2027-12-16 → 2027-12-14 (-2d) | 70d → 43d | 332d → 329d | resources Contract cost (BOQ x payment milestones) [15834 SAR]; Progress weight (fair EPC distribution) [39 h] → Contract cost (BOQ x payment milestones) [15834 SAR]; Progress weight (fair EPC distribution, SAR value) [24180 SAR] |
| UPN | **UPS, network and cabinets** | 2028-07-24 → 2027-10-17 (-281d) | 2028-10-29 → 2027-12-14 (-320d) |  |  |  |
| EDM-P1040 | Manufacture UPS, network switches and field cabinets - Dammam | 2027-09-09 → 2027-10-17 (+38d) | 2027-12-16 → 2027-12-14 (-2d) | 70d → 43d | 332d → 329d | resources Contract cost (BOQ x payment milestones) [214841 SAR]; Progress weight (fair EPC distribution) [532 h] → Contract cost (BOQ x payment milestones) [214841 SAR]; Progress weight (fair EPC distribution, SAR value) [329840 SAR] |
| LOG | **FAT and logistics** | 2028-10-30 → 2027-12-15 (-320d) | 2028-12-24 → 2028-02-01 (-327d) |  |  |  |
| EDM-P1050 | Factory acceptance test at vendor premises - Dammam | 2027-12-19 → 2027-12-15 (-4d) | 2027-12-30 → 2027-12-28 (-2d) |  | 332d → 329d | resources Contract cost (BOQ x payment milestones) [31875 SAR]; Progress weight (fair EPC distribution) [197 h] → Contract cost (BOQ x payment milestones) [31875 SAR]; Progress weight (fair EPC distribution, SAR value) [122140 SAR] |
| EDM-P1060 | Shipping and customs clearance - Dammam | 2028-01-02 → 2027-12-29 (-4d) | 2028-02-03 → 2028-01-25 (-9d) | 25d → 20d | 332d → 329d | resources Contract cost (BOQ x payment milestones) [95625 SAR]; Progress weight (fair EPC distribution) [395 h] → Contract cost (BOQ x payment milestones) [95625 SAR]; Progress weight (fair EPC distribution, SAR value) [244900 SAR] |
| EDM-P1070 | Delivery to station and receiving inspection - Dammam | 2028-02-06 → 2028-01-26 (-11d) | 2028-02-10 → 2028-02-01 (-9d) |  | 332d → 329d | resources Contract cost (BOQ x payment milestones) [31875 SAR]; Progress weight (fair EPC distribution) [197 h] → Contract cost (BOQ x payment milestones) [31875 SAR]; Progress weight (fair EPC distribution, SAR value) [122140 SAR] |
| NQS | **Al Qassim (NSR)** | 2027-11-07 → 2027-12-12 (+35d) | 2028-04-13 → 2028-04-12 (-1d) |  |  |  |
| NQS-P1100 | MS4 Material delivered (20%) - Al Qassim | 2028-04-13 → 2028-04-12 (-1d) | 2028-04-13 → 2028-04-12 (-1d) |  | 286d → 276d |  |
| CCT | **CCTV system** | 2028-10-05 → 2027-12-12 (-298d) | 2029-01-10 → 2028-02-14 (-331d) |  |  |  |
| NQS-P1010 | Manufacture CCTV cameras and analytics - Al Qassim | 2027-11-07 → 2027-12-12 (+35d) | 2028-02-10 → 2028-02-14 (+4d) | 70d → 47d | 286d → 276d | resources Contract cost (BOQ x payment milestones) [104169 SAR]; Progress weight (fair EPC distribution) [258 h] → Contract cost (BOQ x payment milestones) [104169 SAR]; Progress weight (fair EPC distribution, SAR value) [159960 SAR] |
| VMS | **Video management and video wall** | 2028-10-05 → 2027-12-12 (-298d) | 2029-01-10 → 2028-02-14 (-331d) |  |  |  |
| NQS-P1020 | Manufacture video management servers, storage and video wall - Al Qassim | 2027-11-07 → 2027-12-12 (+35d) | 2028-02-10 → 2028-02-14 (+4d) | 70d → 47d | 286d → 276d | resources Contract cost (BOQ x payment milestones) [110385 SAR]; Progress weight (fair EPC distribution) [273 h] → Contract cost (BOQ x payment milestones) [110385 SAR]; Progress weight (fair EPC distribution, SAR value) [169260 SAR] |
| ACC | **Access control and intercom** | 2028-10-05 → 2027-12-12 (-298d) | 2029-01-10 → 2028-02-14 (-331d) |  |  |  |
| NQS-P1030 | Manufacture access control and intercom equipment - Al Qassim | 2027-11-07 → 2027-12-12 (+35d) | 2028-02-10 → 2028-02-14 (+4d) | 70d → 47d | 286d → 276d | resources Contract cost (BOQ x payment milestones) [13547 SAR]; Progress weight (fair EPC distribution) [34 h] → Contract cost (BOQ x payment milestones) [13547 SAR]; Progress weight (fair EPC distribution, SAR value) [21080 SAR] |
| UPN | **UPS, network and cabinets** | 2028-10-05 → 2027-12-12 (-298d) | 2029-01-10 → 2028-02-14 (-331d) |  |  |  |
| NQS-P1040 | Manufacture UPS, network switches and field cabinets - Al Qassim | 2027-11-07 → 2027-12-12 (+35d) | 2028-02-10 → 2028-02-14 (+4d) | 70d → 47d | 286d → 276d | resources Contract cost (BOQ x payment milestones) [281736 SAR]; Progress weight (fair EPC distribution) [698 h] → Contract cost (BOQ x payment milestones) [281736 SAR]; Progress weight (fair EPC distribution, SAR value) [432760 SAR] |
| LOG | **FAT and logistics** | 2029-01-11 → 2028-02-15 (-331d) | 2029-03-15 → 2028-04-12 (-337d) |  |  |  |
| NQS-P1050 | Factory acceptance test at vendor premises - Al Qassim | 2028-02-13 → 2028-02-15 (+2d) | 2028-03-02 → 2028-03-06 (+4d) |  | 286d → 276d | resources Contract cost (BOQ x payment milestones) [33989 SAR]; Progress weight (fair EPC distribution) [211 h] → Contract cost (BOQ x payment milestones) [33989 SAR]; Progress weight (fair EPC distribution, SAR value) [130820 SAR] |
| NQS-P1060 | Shipping and customs clearance - Al Qassim | 2028-03-05 → 2028-03-07 (+2d) | 2028-04-06 → 2028-04-05 (-1d) | 25d → 22d | 286d → 276d | resources Contract cost (BOQ x payment milestones) [101967 SAR]; Progress weight (fair EPC distribution) [421 h] → Contract cost (BOQ x payment milestones) [101967 SAR]; Progress weight (fair EPC distribution, SAR value) [261020 SAR] |
| NQS-P1070 | Delivery to station and receiving inspection - Al Qassim | 2028-04-09 → 2028-04-06 (-3d) | 2028-04-13 → 2028-04-12 (-1d) |  | 286d → 276d | resources Contract cost (BOQ x payment milestones) [33989 SAR]; Progress weight (fair EPC distribution) [211 h] → Contract cost (BOQ x payment milestones) [33989 SAR]; Progress weight (fair EPC distribution, SAR value) [130820 SAR] |
| EHF | **Hufuf (EWR)** | 2027-11-07 → 2027-12-12 (+35d) | 2028-04-13 → 2028-04-02 (-11d) |  |  |  |

| ID | Task | Start | Finish | Duration | Total float | Other |
| --- | --- | --- | --- | --- | --- | --- |
| EHF-P1100 | MS4 Material delivered (20%) - Hufuf | 2028-04-13 → 2028-04-02 (-11d) | 2028-04-13 → 2028-04-02 (-11d) |  | 292d → 293d |  |
| CCT | **CCTV system** | 2028-11-23 → 2027-12-12 (-347d) | 2029-03-08 → 2028-02-06 (-396d) |  |  |  |
| EHF-P1010 | Manufacture CCTV cameras and analytics - Hufuf | 2027-11-07 → 2027-12-12 (+35d) | 2028-02-10 → 2028-02-06 (-4d) | 70d → 41d | 292d → 293d | resources Contract cost (BOQ x payment milestones) [71254 SAR]; Progress weight (fair EPC distribution) [177 h] → Contract cost (BOQ x payment milestones) [71254 SAR]; Progress weight (fair EPC distribution, SAR value) [109740 SAR] |
| VMS | **Video management and video wall** | 2028-11-23 → 2027-12-12 (-347d) | 2029-03-08 → 2028-02-06 (-396d) |  |  |  |
| EHF-P1020 | Manufacture video management servers, storage and video wall - Hufuf | 2027-11-07 → 2027-12-12 (+35d) | 2028-02-10 → 2028-02-06 (-4d) | 70d → 41d | 292d → 293d | resources Contract cost (BOQ x payment milestones) [129428 SAR]; Progress weight (fair EPC distribution) [321 h] → Contract cost (BOQ x payment milestones) [129428 SAR]; Progress weight (fair EPC distribution, SAR value) [199020 SAR] |
| ACC | **Access control and intercom** | 2028-11-23 → 2027-12-12 (-347d) | 2029-03-08 → 2028-02-06 (-396d) |  |  |  |
| EHF-P1030 | Manufacture access control and intercom equipment - Hufuf | 2027-11-07 → 2027-12-12 (+35d) | 2028-02-10 → 2028-02-06 (-4d) | 70d → 41d | 292d → 293d | resources Contract cost (BOQ x payment milestones) [16348 SAR]; Progress weight (fair EPC distribution) [40 h] → Contract cost (BOQ x payment milestones) [16348 SAR]; Progress weight (fair EPC distribution, SAR value) [24800 SAR] |
| UPN | **UPS, network and cabinets** | 2028-11-23 → 2027-12-12 (-347d) | 2029-03-08 → 2028-02-06 (-396d) |  |  |  |
| EHF-P1040 | Manufacture UPS, network switches and field cabinets - Hufuf | 2027-11-07 → 2027-12-12 (+35d) | 2028-02-10 → 2028-02-06 (-4d) | 70d → 41d | 292d → 293d | resources Contract cost (BOQ x payment milestones) [207246 SAR]; Progress weight (fair EPC distribution) [513 h] → Contract cost (BOQ x payment milestones) [207246 SAR]; Progress weight (fair EPC distribution, SAR value) [318060 SAR] |
| LOG | **FAT and logistics** | 2029-03-11 → 2028-02-07 (-398d) | 2029-05-10 → 2028-04-02 (-403d) |  |  |  |
| EHF-P1050 | Factory acceptance test at vendor premises - Hufuf | 2028-02-13 → 2028-02-07 (-6d) | 2028-03-02 → 2028-02-27 (-4d) |  | 292d → 293d | resources Contract cost (BOQ x payment milestones) [28285 SAR]; Progress weight (fair EPC distribution) [175 h] → Contract cost (BOQ x payment milestones) [28285 SAR]; Progress weight (fair EPC distribution, SAR value) [108500 SAR] |
| EHF-P1060 | Shipping and customs clearance - Hufuf | 2028-03-05 → 2028-02-28 (-6d) | 2028-04-06 → 2028-03-26 (-11d) | 25d → 20d | 292d → 293d | resources Contract cost (BOQ x payment milestones) [84855 SAR]; Progress weight (fair EPC distribution) [350 h] → Contract cost (BOQ x payment milestones) [84855 SAR]; Progress weight (fair EPC distribution, SAR value) [217000 SAR] |
| EHF-P1070 | Delivery to station and receiving inspection - Hufuf | 2028-04-09 → 2028-03-27 (-13d) | 2028-04-13 → 2028-04-02 (-11d) |  | 292d → 293d | resources Contract cost (BOQ x payment milestones) [28285 SAR]; Progress weight (fair EPC distribution) [175 h] → Contract cost (BOQ x payment milestones) [28285 SAR]; Progress weight (fair EPC distribution, SAR value) [108500 SAR] |
| NMJ | **Al Majma'ah (NSR)** | 2027-12-26 → 2028-01-30 (+35d) | 2028-06-08 → 2028-06-07 (-1d) |  |  |  |
| NMJ-P1100 | MS4 Material delivered (20%) - Al Majma'ah | 2028-06-08 → 2028-06-07 (-1d) | 2028-06-08 → 2028-06-07 (-1d) |  | 251d → 241d |  |
| CCT | **CCTV system** | 2027-09-09 → 2028-01-30 (+143d) | 2027-12-16 → 2028-04-10 (+116d) |  |  |  |
| NMJ-P1010 | Manufacture CCTV cameras and analytics - Al Majma'ah | 2027-12-26 → 2028-01-30 (+35d) | 2028-04-06 → 2028-04-10 (+4d) | 70d → 47d | 251d → 241d | resources Contract cost (BOQ x payment milestones) [104169 SAR]; Progress weight (fair EPC distribution) [258 h] → Contract cost (BOQ x payment milestones) [104169 SAR]; Progress weight (fair EPC distribution, SAR value) [159960 SAR] |
| VMS | **Video management and video wall** | 2027-09-09 → 2028-01-30 (+143d) | 2027-12-16 → 2028-04-10 (+116d) |  |  |  |
| NMJ-P1020 | Manufacture video management servers, storage and video wall - Al Majma'ah | 2027-12-26 → 2028-01-30 (+35d) | 2028-04-06 → 2028-04-10 (+4d) | 70d → 47d | 251d → 241d | resources Contract cost (BOQ x payment milestones) [110385 SAR]; Progress weight (fair EPC distribution) [273 h] → Contract cost (BOQ x payment milestones) [110385 SAR]; Progress weight (fair EPC distribution, SAR value) [169260 SAR] |
| ACC | **Access control and intercom** | 2027-09-09 → 2028-01-30 (+143d) | 2027-12-16 → 2028-04-10 (+116d) |  |  |  |
| NMJ-P1030 | Manufacture access control and intercom equipment - Al Majma'ah | 2027-12-26 → 2028-01-30 (+35d) | 2028-04-06 → 2028-04-10 (+4d) | 70d → 47d | 251d → 241d | resources Contract cost (BOQ x payment milestones) [13547 SAR]; Progress weight (fair EPC distribution) [34 h] → Contract cost (BOQ x payment milestones) [13547 SAR]; Progress weight (fair EPC distribution, SAR value) [21080 SAR] |
| UPN | **UPS, network and cabinets** | 2027-09-09 → 2028-01-30 (+143d) | 2027-12-16 → 2028-04-10 (+116d) |  |  |  |
| NMJ-P1040 | Manufacture UPS, network switches and field cabinets - Al Majma'ah | 2027-12-26 → 2028-01-30 (+35d) | 2028-04-06 → 2028-04-10 (+4d) | 70d → 47d | 251d → 241d | resources Contract cost (BOQ x payment milestones) [281736 SAR]; Progress weight (fair EPC distribution) [698 h] → Contract cost (BOQ x payment milestones) [281736 SAR]; Progress weight (fair EPC distribution, SAR value) [432760 SAR] |
| LOG | **FAT and logistics** | 2027-12-19 → 2028-04-11 (+114d) | 2028-02-10 → 2028-06-07 (+118d) |  |  |  |
| NMJ-P1050 | Factory acceptance test at vendor premises - Al Majma'ah | 2028-04-09 → 2028-04-11 (+2d) | 2028-04-20 → 2028-04-24 (+4d) |  | 251d → 241d | resources Contract cost (BOQ x payment milestones) [33989 SAR]; Progress weight (fair EPC distribution) [211 h] → Contract cost (BOQ x payment milestones) [33989 SAR]; Progress weight (fair EPC distribution, SAR value) [130820 SAR] |
| NMJ-P1060 | Shipping and customs clearance - Al Majma'ah | 2028-04-23 → 2028-04-25 (+2d) | 2028-06-01 → 2028-05-31 (-1d) | 25d → 22d | 251d → 241d | resources Contract cost (BOQ x payment milestones) [101967 SAR]; Progress weight (fair EPC distribution) [421 h] → Contract cost (BOQ x payment milestones) [101967 SAR]; Progress weight (fair EPC distribution, SAR value) [261020 SAR] |
| NMJ-P1070 | Delivery to station and receiving inspection - Al Majma'ah | 2028-06-04 → 2028-06-01 (-3d) | 2028-06-08 → 2028-06-07 (-1d) |  | 251d → 241d | resources Contract cost (BOQ x payment milestones) [33989 SAR]; Progress weight (fair EPC distribution) [211 h] → Contract cost (BOQ x payment milestones) [33989 SAR]; Progress weight (fair EPC distribution, SAR value) [130820 SAR] |
| HKA | **KAEC (HHR)** | 2028-06-21 → 2028-05-25 (-27d) | 2029-01-02 → 2028-10-15 (-79d) |  |  |  |
| HKA-P1100 | MS4 Material delivered (20%) - KAEC | 2029-01-02 → 2028-10-15 (-79d) | 2029-01-02 → 2028-10-15 (-79d) |  | 58d → 118d |  |
| CCT | **CCTV system** | 2027-11-07 → 2028-05-25 (+200d) | 2028-02-10 → 2028-08-16 (+188d) |  |  |  |
| HKA-P1010 | Manufacture CCTV cameras and analytics - KAEC | 2028-06-21 → 2028-05-25 (-27d) | 2028-10-24 → 2028-08-16 (-69d) | 90d → 60d | 58d → 118d | resources Contract cost (BOQ x payment milestones) [263474 SAR]; Progress weight (fair EPC distribution) [653 h] → Contract cost (BOQ x payment milestones) [263474 SAR]; Progress weight (fair EPC distribution, SAR value) [404860 SAR] |
| VMS | **Video management and video wall** | 2027-11-07 → 2028-05-25 (+200d) | 2028-02-10 → 2028-08-16 (+188d) |  |  |  |
| HKA-P1020 | Manufacture video management servers, storage and video wall - KAEC | 2028-06-21 → 2028-05-25 (-27d) | 2028-10-24 → 2028-08-16 (-69d) | 90d → 60d | 58d → 118d | resources Contract cost (BOQ x payment milestones) [111291 SAR]; Progress weight (fair EPC distribution) [276 h] → Contract cost (BOQ x payment milestones) [111291 SAR]; Progress weight (fair EPC distribution, SAR value) [171120 SAR] |
| ACC | **Access control and intercom** | 2027-11-07 → 2028-05-25 (+200d) | 2028-02-10 → 2028-08-16 (+188d) |  |  |  |
| HKA-P1030 | Manufacture access control and intercom equipment - KAEC | 2028-06-21 → 2028-05-25 (-27d) | 2028-10-24 → 2028-08-16 (-69d) | 90d → 60d | 58d → 118d | resources Contract cost (BOQ x payment milestones) [12074 SAR]; Progress weight (fair EPC distribution) [30 h] → Contract cost (BOQ x payment milestones) [12074 SAR]; Progress weight (fair EPC distribution, SAR value) [18600 SAR] |
| UPN | **UPS, network and cabinets** | 2027-11-07 → 2028-05-25 (+200d) | 2028-02-10 → 2028-08-16 (+188d) |  |  |  |
| HKA-P1040 | Manufacture UPS, network switches and field cabinets - KAEC | 2028-06-21 → 2028-05-25 (-27d) | 2028-10-24 → 2028-08-16 (-69d) | 90d → 60d | 58d → 118d | resources Contract cost (BOQ x payment milestones) [447818 SAR]; Progress weight (fair EPC distribution) [1109 h] → Contract cost (BOQ x payment milestones) [447818 SAR]; Progress weight (fair EPC distribution, SAR value) [687580 SAR] |
| LOG | **FAT and logistics** | 2028-02-13 → 2028-08-17 (+186d) | 2028-04-13 → 2028-10-15 (+185d) |  |  |  |
| HKA-P1050 | Factory acceptance test at vendor premises - KAEC | 2028-10-25 → 2028-08-17 (-69d) | 2028-11-07 → 2028-08-30 (-69d) |  | 58d → 118d | resources Contract cost (BOQ x payment milestones) [55644 SAR]; Progress weight (fair EPC distribution) [345 h] → Contract cost (BOQ x payment milestones) [55644 SAR]; Progress weight (fair EPC distribution, SAR value) [213900 SAR] |
| HKA-P1060 | Shipping and customs clearance - KAEC | 2028-11-08 → 2028-08-31 (-69d) | 2028-12-26 → 2028-10-08 (-79d) | 35d → 27d | 58d → 118d | resources Contract cost (BOQ x payment milestones) [166931 SAR]; Progress weight (fair EPC distribution) [689 h] → Contract cost (BOQ x payment milestones) [166931 SAR]; Progress weight (fair EPC distribution, SAR value) [427180 SAR] |
| HKA-P1070 | Delivery to station and receiving inspection - KAEC | 2028-12-27 → 2028-10-09 (-79d) | 2029-01-02 → 2028-10-15 (-79d) |  | 58d → 118d | resources Contract cost (BOQ x payment milestones) [55644 SAR]; Progress weight (fair EPC distribution) [345 h] → Contract cost (BOQ x payment milestones) [55644 SAR]; Progress weight (fair EPC distribution, SAR value) [213900 SAR] |
| HMD | **Madinah (HHR)** | 2028-06-21 → 2028-05-25 (-27d) | 2029-01-02 → 2028-10-12 (-82d) |  |  |  |
| HMD-P1100 | MS4 Material delivered (20%) - Madinah | 2029-01-02 → 2028-10-12 (-82d) | 2029-01-02 → 2028-10-12 (-82d) |  | 54d → 114d |  |
| CCT | **CCTV system** | 2028-06-28 → 2028-05-25 (-34d) | 2028-10-03 → 2028-08-15 (-49d) |  |  |  |
| HMD-P1010 | Manufacture CCTV cameras and analytics - Madinah | 2028-06-21 → 2028-05-25 (-27d) | 2028-10-24 → 2028-08-15 (-70d) | 90d → 59d | 54d → 114d | resources Contract cost (BOQ x payment milestones) [264932 SAR]; Progress weight (fair EPC distribution) [656 h] → Contract cost (BOQ x payment milestones) [264932 SAR]; Progress weight (fair EPC distribution, SAR value) [406720 SAR] |
| VMS | **Video management and video wall** | 2028-06-28 → 2028-05-25 (-34d) | 2028-10-03 → 2028-08-15 (-49d) |  |  |  |
| HMD-P1020 | Manufacture video management servers, storage and video wall - Madinah | 2028-06-21 → 2028-05-25 (-27d) | 2028-10-24 → 2028-08-15 (-70d) | 90d → 59d | 54d → 114d | resources Contract cost (BOQ x payment milestones) [116027 SAR]; Progress weight (fair EPC distribution) [287 h] → Contract cost (BOQ x payment milestones) [116027 SAR]; Progress weight (fair EPC distribution, SAR value) [177940 SAR] |
| ACC | **Access control and intercom** | 2028-06-28 → 2028-05-25 (-34d) | 2028-10-03 → 2028-08-15 (-49d) |  |  |  |
| HMD-P1030 | Manufacture access control and intercom equipment - Madinah | 2028-06-21 → 2028-05-25 (-27d) | 2028-10-24 → 2028-08-15 (-70d) | 90d → 59d | 54d → 114d | resources Contract cost (BOQ x payment milestones) [12501 SAR]; Progress weight (fair EPC distribution) [31 h] → Contract cost (BOQ x payment milestones) [12501 SAR]; Progress weight (fair EPC distribution, SAR value) [19220 SAR] |
| UPN | **UPS, network and cabinets** | 2028-06-28 → 2028-05-25 (-34d) | 2028-10-03 → 2028-08-15 (-49d) |  |  |  |
| HMD-P1040 | Manufacture UPS, network switches and field cabinets - Madinah | 2028-06-21 → 2028-05-25 (-27d) | 2028-10-24 → 2028-08-15 (-70d) | 90d → 59d | 54d → 114d | resources Contract cost (BOQ x payment milestones) [440861 SAR]; Progress weight (fair EPC distribution) [1092 h] → Contract cost (BOQ x payment milestones) [440861 SAR]; Progress weight (fair EPC distribution, SAR value) [677040 SAR] |
| LOG | **FAT and logistics** | 2028-10-04 → 2028-08-16 (-49d) | 2028-11-28 → 2028-10-12 (-47d) |  |  |  |
| HMD-P1050 | Factory acceptance test at vendor premises - Madinah | 2028-10-25 → 2028-08-16 (-70d) | 2028-11-07 → 2028-08-29 (-70d) |  | 54d → 114d | resources Contract cost (BOQ x payment milestones) [55621 SAR]; Progress weight (fair EPC distribution) [344 h] → Contract cost (BOQ x payment milestones) [55621 SAR]; Progress weight (fair EPC distribution, SAR value) [213280 SAR] |
| HMD-P1060 | Shipping and customs clearance - Madinah | 2028-11-08 → 2028-08-30 (-70d) | 2028-12-26 → 2028-10-05 (-82d) | 35d → 27d | 54d → 114d | resources Contract cost (BOQ x payment milestones) [166864 SAR]; Progress weight (fair EPC distribution) [689 h] → Contract cost (BOQ x payment milestones) [166864 SAR]; Progress weight (fair EPC distribution, SAR value) [427180 SAR] |
| HMD-P1070 | Delivery to station and receiving inspection - Madinah | 2028-12-27 → 2028-10-08 (-80d) | 2029-01-02 → 2028-10-12 (-82d) |  | 54d → 114d | resources Contract cost (BOQ x payment milestones) [55621 SAR]; Progress weight (fair EPC distribution) [344 h] → Contract cost (BOQ x payment milestones) [55621 SAR]; Progress weight (fair EPC distribution, SAR value) [213280 SAR] |
| EAB | **Abqaiq (EWR)** | 2028-06-28 → 2028-07-20 (+22d) | 2028-11-28 → 2028-10-30 (-29d) |  |  |  |
| EAB-P1100 | MS4 Material delivered (20%) - Abqaiq | 2028-11-28 → 2028-10-30 (-29d) | 2028-11-28 → 2028-10-30 (-29d) |  | 138d → 158d |  |
| CCT | **CCTV system** | 2027-07-15 → 2028-07-20 (+371d) | 2027-11-18 → 2028-09-12 (+299d) |  |  |  |
| EAB-P1010 | Manufacture CCTV cameras and analytics - Abqaiq | 2028-06-28 → 2028-07-20 (+22d) | 2028-10-03 → 2028-09-12 (-21d) | 70d → 39d | 138d → 158d | resources Contract cost (BOQ x payment milestones) [36997 SAR]; Progress weight (fair EPC distribution) [92 h] → Contract cost (BOQ x payment milestones) [36997 SAR]; Progress weight (fair EPC distribution, SAR value) [57040 SAR] |
| VMS | **Video management and video wall** | 2027-07-15 → 2028-07-20 (+371d) | 2027-11-18 → 2028-09-12 (+299d) |  |  |  |
| EAB-P1020 | Manufacture video management servers, storage and video wall - Abqaiq | 2028-06-28 → 2028-07-20 (+22d) | 2028-10-03 → 2028-09-12 (-21d) | 70d → 39d | 138d → 158d | resources Contract cost (BOQ x payment milestones) [95266 SAR]; Progress weight (fair EPC distribution) [236 h] → Contract cost (BOQ x payment milestones) [95266 SAR]; Progress weight (fair EPC distribution, SAR value) [146320 SAR] |
| ACC | **Access control and intercom** | 2027-07-15 → 2028-07-20 (+371d) | 2027-11-18 → 2028-09-12 (+299d) |  |  |  |
| EAB-P1030 | Manufacture access control and intercom equipment - Abqaiq | 2028-06-28 → 2028-07-20 (+22d) | 2028-10-03 → 2028-09-12 (-21d) | 70d → 39d | 138d → 158d | resources Contract cost (BOQ x payment milestones) [14683 SAR]; Progress weight (fair EPC distribution) [36 h] → Contract cost (BOQ x payment milestones) [14683 SAR]; Progress weight (fair EPC distribution, SAR value) [22320 SAR] |
| UPN | **UPS, network and cabinets** | 2027-07-15 → 2028-07-20 (+371d) | 2027-11-18 → 2028-09-12 (+299d) |  |  |  |
| EAB-P1040 | Manufacture UPS, network switches and field cabinets - Abqaiq | 2028-06-28 → 2028-07-20 (+22d) | 2028-10-03 → 2028-09-12 (-21d) | 70d → 39d | 138d → 158d | resources Contract cost (BOQ x payment milestones) [153905 SAR]; Progress weight (fair EPC distribution) [381 h] → Contract cost (BOQ x payment milestones) [153905 SAR]; Progress weight (fair EPC distribution, SAR value) [236220 SAR] |
| LOG | **FAT and logistics** | 2027-11-21 → 2028-09-13 (+297d) | 2028-01-27 → 2028-10-30 (+277d) |  |  |  |
| EAB-P1050 | Factory acceptance test at vendor premises - Abqaiq | 2028-10-04 → 2028-09-13 (-21d) | 2028-10-17 → 2028-09-26 (-21d) |  | 138d → 158d | resources Contract cost (BOQ x payment milestones) [20057 SAR]; Progress weight (fair EPC distribution) [124 h] → Contract cost (BOQ x payment milestones) [20057 SAR]; Progress weight (fair EPC distribution, SAR value) [76880 SAR] |
| EAB-P1060 | Shipping and customs clearance - Abqaiq | 2028-10-18 → 2028-09-27 (-21d) | 2028-11-21 → 2028-10-23 (-29d) | 25d → 19d | 138d → 158d | resources Contract cost (BOQ x payment milestones) [60170 SAR]; Progress weight (fair EPC distribution) [248 h] → Contract cost (BOQ x payment milestones) [60170 SAR]; Progress weight (fair EPC distribution, SAR value) [153760 SAR] |
| EAB-P1070 | Delivery to station and receiving inspection - Abqaiq | 2028-11-22 → 2028-10-24 (-29d) | 2028-11-28 → 2028-10-30 (-29d) |  | 138d → 158d | resources Contract cost (BOQ x payment milestones) [20057 SAR]; Progress weight (fair EPC distribution) [124 h] → Contract cost (BOQ x payment milestones) [20057 SAR]; Progress weight (fair EPC distribution, SAR value) [76880 SAR] |
| NHL | **Hail (NSR)** | 2028-07-24 → 2028-08-13 (+20d) | 2028-12-24 → 2028-12-06 (-18d) |  |  |  |

| ID | Task | Start | Finish | Duration | Total float | Predecessors | Other |
| --- | --- | --- | --- | --- | --- | --- | --- |
| NHL-P1100 | MS4 Material delivered (20%) - Hail | 2028-12-24 → 2028-12-06 (-18d) | 2028-12-24 → 2028-12-06 (-18d) |  | 110d → 111d |  |  |
| CCT | **CCTV system** | 2028-02-06 → 2028-08-13 (+189d) | 2028-06-22 → 2028-10-16 (+116d) |  |  |  |  |
| NHL-P1010 | Manufacture CCTV cameras and analytics - Hail | 2028-07-24 → 2028-08-13 (+20d) | 2028-10-29 → 2028-10-16 (-13d) | 70d → 47d | 110d → 111d |  | resources Contract cost (BOQ x payment milestones) [104169 SAR]; Progress weight (fair EPC distribution) [258 h] → Contract cost (BOQ x payment milestones) [104169 SAR]; Progress weight (fair EPC distribution, SAR value) [159960 SAR] |
| VMS | **Video management and video wall** | 2028-02-06 → 2028-08-13 (+189d) | 2028-06-22 → 2028-10-16 (+116d) |  |  |  |  |
| NHL-P1020 | Manufacture video management servers, storage and video wall - Hail | 2028-07-24 → 2028-08-13 (+20d) | 2028-10-29 → 2028-10-16 (-13d) | 70d → 47d | 110d → 111d |  | resources Contract cost (BOQ x payment milestones) [110385 SAR]; Progress weight (fair EPC distribution) [273 h] → Contract cost (BOQ x payment milestones) [110385 SAR]; Progress weight (fair EPC distribution, SAR value) [169260 SAR] |
| ACC | **Access control and intercom** | 2028-02-06 → 2028-08-13 (+189d) | 2028-06-22 → 2028-10-16 (+116d) |  |  |  |  |
| NHL-P1030 | Manufacture access control and intercom equipment - Hail | 2028-07-24 → 2028-08-13 (+20d) | 2028-10-29 → 2028-10-16 (-13d) | 70d → 47d | 110d → 111d |  | resources Contract cost (BOQ x payment milestones) [13547 SAR]; Progress weight (fair EPC distribution) [34 h] → Contract cost (BOQ x payment milestones) [13547 SAR]; Progress weight (fair EPC distribution, SAR value) [21080 SAR] |
| UPN | **UPS, network and cabinets** | 2028-02-06 → 2028-08-13 (+189d) | 2028-06-22 → 2028-10-16 (+116d) |  |  |  |  |
| NHL-P1040 | Manufacture UPS, network switches and field cabinets - Hail | 2028-07-24 → 2028-08-13 (+20d) | 2028-10-29 → 2028-10-16 (-13d) | 70d → 47d | 110d → 111d |  | resources Contract cost (BOQ x payment milestones) [281736 SAR]; Progress weight (fair EPC distribution) [698 h] → Contract cost (BOQ x payment milestones) [281736 SAR]; Progress weight (fair EPC distribution, SAR value) [432760 SAR] |
| LOG | **FAT and logistics** | 2028-06-25 → 2028-10-17 (+114d) | 2028-08-31 → 2028-12-06 (+97d) |  |  |  |  |
| NHL-P1050 | Factory acceptance test at vendor premises - Hail | 2028-10-30 → 2028-10-17 (-13d) | 2028-11-12 → 2028-10-30 (-13d) |  | 110d → 111d |  | resources Contract cost (BOQ x payment milestones) [33989 SAR]; Progress weight (fair EPC distribution) [211 h] → Contract cost (BOQ x payment milestones) [33989 SAR]; Progress weight (fair EPC distribution, SAR value) [130820 SAR] |
| NHL-P1060 | Shipping and customs clearance - Hail | 2028-11-13 → 2028-10-31 (-13d) | 2028-12-17 → 2028-11-29 (-18d) | 25d → 22d | 110d → 111d |  | resources Contract cost (BOQ x payment milestones) [101967 SAR]; Progress weight (fair EPC distribution) [421 h] → Contract cost (BOQ x payment milestones) [101967 SAR]; Progress weight (fair EPC distribution, SAR value) [261020 SAR] |
| NHL-P1070 | Delivery to station and receiving inspection - Hail | 2028-12-18 → 2028-11-30 (-18d) | 2028-12-24 → 2028-12-06 (-18d) |  | 110d → 111d |  | resources Contract cost (BOQ x payment milestones) [33989 SAR]; Progress weight (fair EPC distribution) [211 h] → Contract cost (BOQ x payment milestones) [33989 SAR]; Progress weight (fair EPC distribution, SAR value) [130820 SAR] |
| NJF | **Al Jouf (NSR)** | 2028-10-05 → 2028-10-29 (+24d) | 2029-05-13 → 2029-03-01 (-73d) |  |  |  |  |
| NJF-P1100 | MS4 Material delivered (20%) - Al Jouf | 2029-03-15 → 2029-03-01 (-14d) | 2029-03-15 → 2029-03-01 (-14d) |  | 57d → 56d |  |  |
| CCT | **CCTV system** | 2028-06-21 → 2028-10-29 (+130d) | 2028-10-24 → 2029-01-01 (+69d) |  |  |  |  |
| NJF-P1010 | Manufacture CCTV cameras and analytics - Al Jouf | 2028-10-05 → 2028-10-29 (+24d) | 2029-01-10 → 2029-01-01 (-9d) | 70d → 47d | 57d → 56d |  | resources Contract cost (BOQ x payment milestones) [103843 SAR]; Progress weight (fair EPC distribution) [257 h] → Contract cost (BOQ x payment milestones) [103843 SAR]; Progress weight (fair EPC distribution, SAR value) [159340 SAR] |
| VMS | **Video management and video wall** | 2028-06-21 → 2028-10-29 (+130d) | 2028-10-24 → 2029-01-01 (+69d) |  |  |  |  |
| NJF-P1020 | Manufacture video management servers, storage and video wall - Al Jouf | 2028-10-05 → 2028-10-29 (+24d) | 2029-01-10 → 2029-01-01 (-9d) | 70d → 47d | 57d → 56d |  | resources Contract cost (BOQ x payment milestones) [110039 SAR]; Progress weight (fair EPC distribution) [273 h] → Contract cost (BOQ x payment milestones) [110039 SAR]; Progress weight (fair EPC distribution, SAR value) [169260 SAR] |
| ACC | **Access control and intercom** | 2028-06-21 → 2028-10-29 (+130d) | 2028-10-24 → 2029-01-01 (+69d) |  |  |  |  |
| NJF-P1030 | Manufacture access control and intercom equipment - Al Jouf | 2028-10-05 → 2028-10-29 (+24d) | 2029-01-10 → 2029-01-01 (-9d) | 70d → 47d | 57d → 56d |  | resources Contract cost (BOQ x payment milestones) [13505 SAR]; Progress weight (fair EPC distribution) [33 h] → Contract cost (BOQ x payment milestones) [13505 SAR]; Progress weight (fair EPC distribution, SAR value) [20460 SAR] |
| UPN | **UPS, network and cabinets** | 2028-06-21 → 2028-10-29 (+130d) | 2028-10-24 → 2029-01-01 (+69d) |  |  |  |  |
| NJF-P1040 | Manufacture UPS, network switches and field cabinets - Al Jouf | 2028-10-05 → 2028-10-29 (+24d) | 2029-01-10 → 2029-01-01 (-9d) | 70d → 47d | 57d → 56d |  | resources Contract cost (BOQ x payment milestones) [286040 SAR]; Progress weight (fair EPC distribution) [709 h] → Contract cost (BOQ x payment milestones) [286040 SAR]; Progress weight (fair EPC distribution, SAR value) [439580 SAR] |
| LOG | **FAT and logistics** | 2028-10-25 → 2029-01-02 (+69d) | 2029-01-02 → 2029-03-01 (+58d) |  |  |  |  |
| NJF-P1050 | Factory acceptance test at vendor premises - Al Jouf | 2029-01-11 → 2029-01-02 (-9d) | 2029-01-24 → 2029-01-15 (-9d) |  | 57d → 56d |  | resources Contract cost (BOQ x payment milestones) [34228 SAR]; Progress weight (fair EPC distribution) [212 h] → Contract cost (BOQ x payment milestones) [34228 SAR]; Progress weight (fair EPC distribution, SAR value) [131440 SAR] |
| NJF-P1060 | Shipping and customs clearance - Al Jouf | 2029-01-25 → 2029-01-16 (-9d) | 2029-03-08 → 2029-02-21 (-15d) | 25d → 22d | 57d → 56d |  | resources Contract cost (BOQ x payment milestones) [102685 SAR]; Progress weight (fair EPC distribution) [424 h] → Contract cost (BOQ x payment milestones) [102685 SAR]; Progress weight (fair EPC distribution, SAR value) [262880 SAR] |
| NJF-P1070 | Delivery to station and receiving inspection - Al Jouf | 2029-03-11 → 2029-02-25 (-14d) | 2029-03-15 → 2029-03-01 (-14d) |  | 57d → 56d |  | resources Contract cost (BOQ x payment milestones) [34228 SAR]; Progress weight (fair EPC distribution) [212 h] → Contract cost (BOQ x payment milestones) [34228 SAR]; Progress weight (fair EPC distribution, SAR value) [131440 SAR] |
| NQR | **Al Qurayyat (NSR)** | 2029-07-02 → 2028-12-17 (-197d) | 2029-09-16 → 2029-04-19 (-150d) |  |  |  |  |
| NQR-P1100 | MS4 Material delivered (20%) - Al Qurayyat | 2029-05-10 → 2029-04-19 (-21d) | 2029-05-10 → 2029-04-19 (-21d) |  | 22d → 21d |  |  |
| CCT | **CCTV system** | 2028-06-21 → 2028-12-17 (+179d) | 2028-10-24 → 2029-02-27 (+126d) |  |  |  |  |
| NQR-P1010 | Manufacture CCTV cameras and analytics - Al Qurayyat | 2028-11-23 → 2028-12-17 (+24d) | 2029-03-08 → 2029-02-27 (-9d) | 70d → 47d | 22d → 21d |  | resources Contract cost (BOQ x payment milestones) [104169 SAR]; Progress weight (fair EPC distribution) [258 h] → Contract cost (BOQ x payment milestones) [104169 SAR]; Progress weight (fair EPC distribution, SAR value) [159960 SAR] |
| VMS | **Video management and video wall** | 2028-06-21 → 2028-12-17 (+179d) | 2028-10-24 → 2029-02-27 (+126d) |  |  |  |  |
| NQR-P1020 | Manufacture video management servers, storage and video wall - Al Qurayyat | 2028-11-23 → 2028-12-17 (+24d) | 2029-03-08 → 2029-02-27 (-9d) | 70d → 47d | 22d → 21d |  | resources Contract cost (BOQ x payment milestones) [110385 SAR]; Progress weight (fair EPC distribution) [273 h] → Contract cost (BOQ x payment milestones) [110385 SAR]; Progress weight (fair EPC distribution, SAR value) [169260 SAR] |
| ACC | **Access control and intercom** | 2028-06-21 → 2028-12-17 (+179d) | 2028-10-24 → 2029-02-27 (+126d) |  |  |  |  |
| NQR-P1030 | Manufacture access control and intercom equipment - Al Qurayyat | 2028-11-23 → 2028-12-17 (+24d) | 2029-03-08 → 2029-02-27 (-9d) | 70d → 47d | 22d → 21d |  | resources Contract cost (BOQ x payment milestones) [13547 SAR]; Progress weight (fair EPC distribution) [34 h] → Contract cost (BOQ x payment milestones) [13547 SAR]; Progress weight (fair EPC distribution, SAR value) [21080 SAR] |
| UPN | **UPS, network and cabinets** | 2028-06-21 → 2028-12-17 (+179d) | 2028-10-24 → 2029-02-27 (+126d) |  |  |  |  |
| NQR-P1040 | Manufacture UPS, network switches and field cabinets - Al Qurayyat | 2028-11-23 → 2028-12-17 (+24d) | 2029-03-08 → 2029-02-27 (-9d) | 70d → 47d | 22d → 21d |  | resources Contract cost (BOQ x payment milestones) [281736 SAR]; Progress weight (fair EPC distribution) [698 h] → Contract cost (BOQ x payment milestones) [281736 SAR]; Progress weight (fair EPC distribution, SAR value) [432760 SAR] |
| LOG | **FAT and logistics** | 2028-10-25 → 2029-02-28 (+126d) | 2029-01-02 → 2029-04-19 (+107d) |  |  |  |  |
| NQR-P1050 | Factory acceptance test at vendor premises - Al Qurayyat | 2029-03-11 → 2029-02-28 (-11d) | 2029-03-22 → 2029-03-13 (-9d) |  | 22d → 21d |  | resources Contract cost (BOQ x payment milestones) [33989 SAR]; Progress weight (fair EPC distribution) [211 h] → Contract cost (BOQ x payment milestones) [33989 SAR]; Progress weight (fair EPC distribution, SAR value) [130820 SAR] |
| NQR-P1060 | Shipping and customs clearance - Al Qurayyat | 2029-03-25 → 2029-03-14 (-11d) | 2029-05-03 → 2029-04-12 (-21d) | 25d → 22d | 22d → 21d |  | resources Contract cost (BOQ x payment milestones) [101967 SAR]; Progress weight (fair EPC distribution) [421 h] → Contract cost (BOQ x payment milestones) [101967 SAR]; Progress weight (fair EPC distribution, SAR value) [261020 SAR] |
| NQR-P1070 | Delivery to station and receiving inspection - Al Qurayyat | 2029-05-06 → 2029-04-15 (-21d) | 2029-05-10 → 2029-04-19 (-21d) |  | 22d → 21d |  | resources Contract cost (BOQ x payment milestones) [33989 SAR]; Progress weight (fair EPC distribution) [211 h] → Contract cost (BOQ x payment milestones) [33989 SAR]; Progress weight (fair EPC distribution, SAR value) [130820 SAR] |
| CON | **Construction** |  | 2029-07-01 → 2029-06-27 (-4d) |  |  |  |  |
| NRY | **Riyadh (Thumamah) (NSR)** |  | 2027-09-20 → 2027-11-03 (+44d) |  |  |  |  |
| NRY-C2100 | MS5 Installation complete (20%) - Riyadh (Thumamah) | 2027-09-20 → 2027-11-03 (+44d) | 2027-09-20 → 2027-11-03 (+44d) |  | 464d → 430d |  |  |
| CIV | **Civil works** | 2027-03-01 → 2027-04-12 (+42d) | 2027-07-11 → 2027-08-10 (+30d) |  |  |  |  |
| NRY-C1010 | Civil: platform trenches and duct banks - Riyadh (Thumamah) | 2027-03-01 → 2027-04-12 (+42d) | 2027-06-03 → 2027-07-06 (+33d) | 59d → 57d | 501d → 472d | NRY-E1210 → NRY-X1020 | resources Contract cost (BOQ x payment milestones) [115940 SAR]; Progress weight (fair EPC distribution) [431 h] → Contract cost (BOQ x payment milestones) [105400 SAR]; Progress weight (fair EPC distribution, SAR value) [217000 SAR] |
| NRY-C1020 | Civil: camera and ALPR pole foundations and poles - Riyadh (Thumamah) | 2027-04-29 → 2027-06-09 (+41d) | 2027-07-11 → 2027-08-10 (+30d) | 47d → 45d | 501d → 472d | NRY-C1010 SS+38d → NRY-C1010 SS+37d | resources Contract cost (BOQ x payment milestones) [94860 SAR]; Progress weight (fair EPC distribution) [323 h] → Contract cost (BOQ x payment milestones) [84320 SAR]; Progress weight (fair EPC distribution, SAR value) [166780 SAR] |
| INS | **Installation** | 2027-08-02 → 2027-09-02 (+31d) | 2027-09-20 → 2027-11-03 (+44d) |  |  |  |  |
| NRY-C2010 | Install UPS, network switches and field cabinets - Riyadh (Thumamah) | 2027-08-02 → 2027-09-02 (+31d) | 2027-08-16 → 2027-09-20 (+35d) | 11d → 13d | 464d → 430d |  | resources Contract cost (BOQ x payment milestones) [97072 SAR]; Progress weight (fair EPC distribution) [162 h] → Contract cost (BOQ x payment milestones) [97072 SAR]; Progress weight (fair EPC distribution, SAR value) [100440 SAR] |
| NRY-C2020 | Cabling and termination (power, fibre, data) - Riyadh (Thumamah) | 2027-08-08 → 2027-09-08 (+31d) | 2027-08-31 → 2027-10-10 (+40d) | 18d → 22d | 464d → 430d | NRY-C2010 SS+4d, NRY-C1010 SS+43d → NRY-C2010 SS+4d, NRY-C1010 SS+41d | resources Contract cost (BOQ x payment milestones) [145607 SAR]; Progress weight (fair EPC distribution) [323 h] → Contract cost (BOQ x payment milestones) [145607 SAR]; Progress weight (fair EPC distribution, SAR value) [200260 SAR] |
| NRY-C2040 | Install video management, video wall and control-room equipment - Riyadh (Thumamah) | 2027-08-17 → 2027-09-21 (+35d) | 2027-09-01 → 2027-10-12 (+41d) | 12d → 15d | 477d → 446d |  | resources Contract cost (BOQ x payment milestones) [72804 SAR]; Progress weight (fair EPC distribution) [162 h] → Contract cost (BOQ x payment milestones) [72804 SAR]; Progress weight (fair EPC distribution, SAR value) [100440 SAR] |
| NRY-C2050 | Install access control and intercom - Riyadh (Thumamah) | 2027-08-23 → 2027-09-28 (+36d) | 2027-09-06 → 2027-10-14 (+38d) | 11d → 13d | 474d → 444d |  | resources Contract cost (BOQ x payment milestones) [48536 SAR]; Progress weight (fair EPC distribution) [108 h] → Contract cost (BOQ x payment milestones) [48536 SAR]; Progress weight (fair EPC distribution, SAR value) [66960 SAR] |
| NRY-C2030 | Install and aim CCTV cameras - Riyadh (Thumamah) | 2027-09-01 → 2027-10-11 (+40d) | 2027-09-20 → 2027-11-03 (+44d) | 14d → 18d | 464d → 430d |  | resources Contract cost (BOQ x payment milestones) [121339 SAR]; Progress weight (fair EPC distribution) [269 h] → Contract cost (BOQ x payment milestones) [121339 SAR]; Progress weight (fair EPC distribution, SAR value) [166780 SAR] |
| HMK | **Makkah (HHR)** | 2028-02-06 → 2027-03-01 (-342d) | 2029-01-28 → 2028-03-07 (-327d) |  |  |  |  |
| HMK-C2100 | MS5 Installation complete (20%) - Makkah | 2029-01-28 → 2028-03-07 (-327d) | 2029-01-28 → 2028-03-07 (-327d) |  | 106d → 329d |  |  |
| CIV | **Civil works** | 2027-03-22 → 2027-04-12 (+21d) | 2027-07-18 → 2027-07-21 (+3d) |  |  |  |  |
| HMK-C1010 | Civil: platform trenches and duct banks - Makkah | 2028-02-06 → 2027-04-12 (-300d) | 2028-04-19 → 2027-06-23 (-301d) | 49d → 48d | 222d → 448d | HMK-E1210 → HMK-X1020 | resources Contract cost (BOQ x payment milestones) [108168 SAR]; Progress weight (fair EPC distribution) [1204 h] → Contract cost (BOQ x payment milestones) [98335 SAR]; Progress weight (fair EPC distribution, SAR value) [605740 SAR] |
| HMK-C1020 | Civil: camera and ALPR pole foundations and poles - Makkah | 2028-03-28 → 2027-06-01 (-301d) | 2028-05-28 → 2027-07-21 (-312d) | 39d → 37d | 239d → 455d | HMK-C1010 SS+32d → HMK-C1010 SS+31d | resources Contract cost (BOQ x payment milestones) [88501 SAR]; Progress weight (fair EPC distribution) [902 h] → Contract cost (BOQ x payment milestones) [78668 SAR]; Progress weight (fair EPC distribution, SAR value) [466240 SAR] |
| INS | **Installation** | 2027-08-16 → 2027-11-09 (+85d) | 2027-09-27 → 2028-03-07 (+162d) |  |  |  |  |
| HMK-C2010 | Install UPS, network switches and field cabinets - Makkah | 2028-09-03 → 2027-11-09 (-299d) | 2028-10-16 → 2027-12-12 (-309d) | 32d → 24d | 106d → 329d |  | resources Contract cost (BOQ x payment milestones) [349070 SAR]; Progress weight (fair EPC distribution) [451 h] → Contract cost (BOQ x payment milestones) [349070 SAR]; Progress weight (fair EPC distribution, SAR value) [279620 SAR] |
| HMK-C2020 | Cabling and termination (power, fibre, data) - Makkah | 2028-09-18 → 2027-11-21 (-302d) | 2028-11-29 → 2028-01-16 (-318d) | 53d → 41d | 106d → 329d | HMK-C2010 SS+11d, HMK-C1010 SS+35d → HMK-C2010 SS+8d, HMK-C1010 SS+34d | resources Contract cost (BOQ x payment milestones) [523605 SAR]; Progress weight (fair EPC distribution) [902 h] → Contract cost (BOQ x payment milestones) [523604 SAR]; Progress weight (fair EPC distribution, SAR value) [559240 SAR] |
| HMK-C2040 | Install video management, video wall and control-room equipment - Makkah | 2028-10-17 → 2027-12-13 (-309d) | 2028-12-06 → 2028-01-19 (-322d) | 37d → 28d | 143d → 358d |  | resources Contract cost (BOQ x payment milestones) [261802 SAR]; Progress weight (fair EPC distribution) [451 h] → Contract cost (BOQ x payment milestones) [261802 SAR]; Progress weight (fair EPC distribution, SAR value) [279620 SAR] |
| HMK-C2050 | Install access control and intercom - Makkah | 2028-11-01 → 2027-12-23 (-314d) | 2028-12-14 → 2028-01-25 (-324d) | 32d → 24d | 137d → 354d | HMK-C2010 FS+11d → HMK-C2010 FS+8d | resources Contract cost (BOQ x payment milestones) [174535 SAR]; Progress weight (fair EPC distribution) [301 h] → Contract cost (BOQ x payment milestones) [174535 SAR]; Progress weight (fair EPC distribution, SAR value) [186620 SAR] |
| HMK-C2030 | Install and aim CCTV cameras - Makkah | 2028-11-30 → 2028-01-17 (-318d) | 2029-01-28 → 2028-03-07 (-327d) | 42d → 32d | 106d → 329d |  | resources Contract cost (BOQ x payment milestones) [436337 SAR]; Progress weight (fair EPC distribution) [752 h] → Contract cost (BOQ x payment milestones) [436337 SAR]; Progress weight (fair EPC distribution, SAR value) [466240 SAR] |
| ERY | **Riyadh (Malaz) (EWR)** | 2027-03-22 → 2027-03-01 (-21d) | 2027-09-27 → 2027-10-18 (+21d) |  |  |  |  |
| ERY-C2100 | MS5 Installation complete (20%) - Riyadh (Malaz) | 2027-09-27 → 2027-10-18 (+21d) | 2027-09-27 → 2027-10-18 (+21d) |  | 460d → 443d |  |  |
| CIV | **Civil works** | 2027-11-07 → 2027-03-29 (-223d) | 2028-03-09 → 2027-07-21 (-232d) |  |  |  |  |
| ERY-C1010 | Civil: platform trenches and duct banks - Riyadh (Malaz) | 2027-03-22 → 2027-03-29 (+7d) | 2027-06-14 → 2027-06-20 (+6d) | 56d → 55d | 498d → 490d | ERY-E1210 → ERY-X1020 | resources Contract cost (BOQ x payment milestones) [121042 SAR]; Progress weight (fair EPC distribution) [383 h] → Contract cost (BOQ x payment milestones) [110038 SAR]; Progress weight (fair EPC distribution, SAR value) [192820 SAR] |
| ERY-C1020 | Civil: camera and ALPR pole foundations and poles - Riyadh (Malaz) | 2027-05-11 → 2027-05-24 (+13d) | 2027-07-18 → 2027-07-21 (+3d) | 44d → 43d | 498d → 490d | ERY-C1010 SS+36d → ERY-C1010 SS+35d | resources Contract cost (BOQ x payment milestones) [99034 SAR]; Progress weight (fair EPC distribution) [287 h] → Contract cost (BOQ x payment milestones) [88030 SAR]; Progress weight (fair EPC distribution, SAR value) [148180 SAR] |
| INS | **Installation** | 2028-04-16 → 2027-08-25 (-235d) | 2028-06-11 → 2027-10-18 (-237d) |  |  |  |  |

| ID | Task | Start | Finish | Duration | Total float | Predecessors | Other |
| --- | --- | --- | --- | --- | --- | --- | --- |
| ERY-C2010 | Install UPS, network switches and field cabinets - Riyadh (Malaz) | 2027-08-16 → 2027-08-25 (+9d) | 2027-08-26 → 2027-09-08 (+13d) | 9d → 11d | 460d → 443d |  | resources Contract cost (BOQ x payment milestones) [79646 SAR]; Progress weight (fair EPC distribution) [144 h] → Contract cost (BOQ x payment milestones) [79646 SAR]; Progress weight (fair EPC distribution, SAR value) [89280 SAR] |
| ERY-C2020 | Cabling and termination (power, fibre, data) - Riyadh (Malaz) | 2027-08-19 → 2027-08-31 (+12d) | 2027-09-08 → 2027-09-27 (+19d) | 15d → 19d | 460d → 443d | ERY-C2010 SS+3d, ERY-C1010 SS+40d → ERY-C2010 SS+4d, ERY-C1010 SS+39d | resources Contract cost (BOQ x payment milestones) [119468 SAR]; Progress weight (fair EPC distribution) [287 h] → Contract cost (BOQ x payment milestones) [119468 SAR]; Progress weight (fair EPC distribution, SAR value) [177940 SAR] |
| ERY-C2040 | Install video management, video wall and control-room equipment - Riyadh (Malaz) | 2027-08-29 → 2027-09-09 (+11d) | 2027-09-12 → 2027-09-28 (+16d) | 11d → 13d | 470d → 457d |  | resources Contract cost (BOQ x payment milestones) [59734 SAR]; Progress weight (fair EPC distribution) [144 h] → Contract cost (BOQ x payment milestones) [59734 SAR]; Progress weight (fair EPC distribution, SAR value) [89280 SAR] |
| ERY-C2050 | Install access control and intercom - Riyadh (Malaz) | 2027-09-01 → 2027-09-15 (+14d) | 2027-09-13 → 2027-09-30 (+17d) | 9d → 11d | 469d → 455d | ERY-C2010 FS+3d → ERY-C2010 FS+4d | resources Contract cost (BOQ x payment milestones) [39823 SAR]; Progress weight (fair EPC distribution) [96 h] → Contract cost (BOQ x payment milestones) [39823 SAR]; Progress weight (fair EPC distribution, SAR value) [59520 SAR] |
| ERY-C2030 | Install and aim CCTV cameras - Riyadh (Malaz) | 2027-09-09 → 2027-09-28 (+19d) | 2027-09-27 → 2027-10-18 (+21d) | 12d → 15d | 460d → 443d |  | resources Contract cost (BOQ x payment milestones) [99557 SAR]; Progress weight (fair EPC distribution) [239 h] → Contract cost (BOQ x payment milestones) [99557 SAR]; Progress weight (fair EPC distribution, SAR value) [148180 SAR] |
| HJD | **Jeddah (HHR)** | 2027-07-15 → 2027-06-02 (-43d) | 2028-06-15 → 2028-05-16 (-30d) |  |  |  |  |
| HJD-C2100 | MS5 Installation complete (20%) - Jeddah | 2028-06-15 → 2028-05-16 (-30d) | 2028-06-15 → 2028-05-16 (-30d) |  | 267d → 288d |  |  |
| CIV | **Civil works** | 2027-12-26 → 2027-06-23 (-186d) | 2028-04-27 → 2027-09-19 (-221d) |  |  |  |  |
| HJD-C1010 | Civil: platform trenches and duct banks - Jeddah | 2027-07-15 → 2027-06-23 (-22d) | 2027-09-16 → 2027-08-23 (-24d) | 46d → 44d | 383d → 419d | HJD-E1210 → HJD-X1020 | resources Contract cost (BOQ x payment milestones) [98722 SAR]; Progress weight (fair EPC distribution) [1183 h] → Contract cost (BOQ x payment milestones) [89747 SAR]; Progress weight (fair EPC distribution, SAR value) [595820 SAR] |
| HJD-C1020 | Civil: camera and ALPR pole foundations and poles - Jeddah | 2027-08-25 → 2027-08-02 (-23d) | 2027-10-14 → 2027-09-19 (-25d) | 36d → 35d | 396d → 422d | HJD-C1010 SS+29d → HJD-C1010 SS+28d | resources Contract cost (BOQ x payment milestones) [80772 SAR]; Progress weight (fair EPC distribution) [887 h] → Contract cost (BOQ x payment milestones) [71798 SAR]; Progress weight (fair EPC distribution, SAR value) [458180 SAR] |
| INS | **Installation** | 2028-06-11 → 2028-01-30 (-133d) | 2028-07-30 → 2028-05-16 (-75d) |  |  |  |  |
| HJD-C2010 | Install UPS, network switches and field cabinets - Jeddah |  | 2028-03-13 → 2028-03-02 (-11d) | 27d → 20d | 267d → 288d |  | resources Contract cost (BOQ x payment milestones) [346136 SAR]; Progress weight (fair EPC distribution) [444 h] → Contract cost (BOQ x payment milestones) [346136 SAR]; Progress weight (fair EPC distribution, SAR value) [275280 SAR] |
| HJD-C2020 | Cabling and termination (power, fibre, data) - Jeddah | 2028-02-10 → 2028-02-08 (-2d) | 2028-04-19 → 2028-04-02 (-17d) | 45d → 34d | 267d → 288d | HJD-C2010 SS+9d, HJD-C1010 SS+33d → HJD-C2010 SS+7d, HJD-C1010 SS+32d | resources Contract cost (BOQ x payment milestones) [519205 SAR]; Progress weight (fair EPC distribution) [887 h] → Contract cost (BOQ x payment milestones) [519205 SAR]; Progress weight (fair EPC distribution, SAR value) [549940 SAR] |
| HJD-C2040 | Install video management, video wall and control-room equipment - Jeddah | 2028-03-14 → 2028-03-05 (-9d) | 2028-04-25 → 2028-04-05 (-20d) | 31d → 24d | 299d → 312d |  | resources Contract cost (BOQ x payment milestones) [259602 SAR]; Progress weight (fair EPC distribution) [444 h] → Contract cost (BOQ x payment milestones) [259602 SAR]; Progress weight (fair EPC distribution, SAR value) [275280 SAR] |
| HJD-C2050 | Install access control and intercom - Jeddah | 2028-03-27 → 2028-03-14 (-13d) | 2028-05-09 → 2028-04-10 (-29d) | 27d → 20d | 294d → 309d | HJD-C2010 FS+9d → HJD-C2010 FS+7d | resources Contract cost (BOQ x payment milestones) [173068 SAR]; Progress weight (fair EPC distribution) [296 h] → Contract cost (BOQ x payment milestones) [173068 SAR]; Progress weight (fair EPC distribution, SAR value) [183520 SAR] |
| HJD-C2030 | Install and aim CCTV cameras - Jeddah | 2028-04-20 → 2028-04-03 (-17d) | 2028-06-15 → 2028-05-16 (-30d) | 36d → 27d | 267d → 288d |  | resources Contract cost (BOQ x payment milestones) [432670 SAR]; Progress weight (fair EPC distribution) [739 h] → Contract cost (BOQ x payment milestones) [432670 SAR]; Progress weight (fair EPC distribution, SAR value) [458180 SAR] |
| EDM | **Dammam (EWR)** | 2027-09-09 → 2027-08-16 (-24d) | 2028-03-30 → 2028-04-02 (+3d) |  |  |  |  |
| EDM-C2100 | MS5 Installation complete (20%) - Dammam | 2028-03-30 → 2028-04-02 (+3d) | 2028-03-30 → 2028-04-02 (+3d) |  | 332d → 329d |  |  |
| CIV | **Civil works** | 2028-07-24 → 2027-09-06 (-322d) | 2028-11-19 → 2027-12-23 (-332d) |  |  |  |  |
| EDM-C1010 | Civil: platform trenches and duct banks - Dammam | 2027-09-09 → 2027-09-06 (-3d) | 2027-11-28 → 2027-11-22 (-6d) | 56d → 55d |  | EDM-E1210 → EDM-X1020 | resources Contract cost (BOQ x payment milestones) [121040 SAR]; Progress weight (fair EPC distribution) [395 h] → Contract cost (BOQ x payment milestones) [110036 SAR]; Progress weight (fair EPC distribution, SAR value) [199020 SAR] |
| EDM-C1020 | Civil: camera and ALPR pole foundations and poles - Dammam | 2027-11-01 → 2027-10-26 (-6d) | 2027-12-30 → 2027-12-23 (-7d) | 44d → 43d |  | EDM-C1010 SS+36d → EDM-C1010 SS+35d | resources Contract cost (BOQ x payment milestones) [99032 SAR]; Progress weight (fair EPC distribution) [296 h] → Contract cost (BOQ x payment milestones) [88029 SAR]; Progress weight (fair EPC distribution, SAR value) [153140 SAR] |
| INS | **Installation** | 2028-12-25 → 2028-02-02 (-327d) | 2029-02-19 → 2028-04-02 (-323d) |  |  |  |  |
| EDM-C2010 | Install UPS, network switches and field cabinets - Dammam | 2028-02-13 → 2028-02-02 (-11d) | 2028-03-01 → 2028-02-16 (-14d) | 9d → 11d | 332d → 329d |  | resources Contract cost (BOQ x payment milestones) [83486 SAR]; Progress weight (fair EPC distribution) [148 h] → Contract cost (BOQ x payment milestones) [83486 SAR]; Progress weight (fair EPC distribution, SAR value) [91760 SAR] |
| EDM-C2020 | Cabling and termination (power, fibre, data) - Dammam | 2028-02-16 → 2028-02-08 (-8d) | 2028-03-14 → 2028-03-12 (-2d) | 15d → 19d | 332d → 329d | EDM-C2010 SS+3d, EDM-C1010 SS+40d → EDM-C2010 SS+4d, EDM-C1010 SS+39d | resources Contract cost (BOQ x payment milestones) [125229 SAR]; Progress weight (fair EPC distribution) [296 h] → Contract cost (BOQ x payment milestones) [125229 SAR]; Progress weight (fair EPC distribution, SAR value) [183520 SAR] |
| EDM-C2040 | Install video management, video wall and control-room equipment - Dammam | 2028-03-02 → 2028-02-17 (-14d) | 2028-03-16 → 2028-03-13 (-3d) | 11d → 13d | 342d → 343d |  | resources Contract cost (BOQ x payment milestones) [62615 SAR]; Progress weight (fair EPC distribution) [148 h] → Contract cost (BOQ x payment milestones) [62615 SAR]; Progress weight (fair EPC distribution, SAR value) [91760 SAR] |
| EDM-C2050 | Install access control and intercom - Dammam | 2028-03-07 → 2028-03-01 (-6d) | 2028-03-19 → 2028-03-15 (-4d) | 9d → 11d |  | EDM-C2010 FS+3d → EDM-C2010 FS+4d | resources Contract cost (BOQ x payment milestones) [41743 SAR]; Progress weight (fair EPC distribution) [99 h] → Contract cost (BOQ x payment milestones) [41743 SAR]; Progress weight (fair EPC distribution, SAR value) [61380 SAR] |
| EDM-C2030 | Install and aim CCTV cameras - Dammam | 2028-03-15 → 2028-03-13 (-2d) | 2028-03-30 → 2028-04-02 (+3d) | 12d → 15d | 332d → 329d |  | resources Contract cost (BOQ x payment milestones) [104358 SAR]; Progress weight (fair EPC distribution) [247 h] → Contract cost (BOQ x payment milestones) [104358 SAR]; Progress weight (fair EPC distribution, SAR value) [153140 SAR] |
| NQS | **Al Qassim (NSR)** | 2027-11-07 → 2027-10-10 (-28d) | 2028-06-11 → 2028-06-20 (+9d) |  |  |  |  |
| NQS-C2100 | MS5 Installation complete (20%) - Al Qassim | 2028-06-11 → 2028-06-20 (+9d) | 2028-06-11 → 2028-06-20 (+9d) |  | 286d → 276d |  |  |
| CIV | **Civil works** | 2028-10-05 → 2027-10-31 (-340d) | 2029-01-31 → 2028-02-28 (-338d) |  |  |  |  |
| NQS-C1010 | Civil: platform trenches and duct banks - Al Qassim | 2027-11-07 → 2027-10-31 (-7d) | 2028-01-26 → 2028-01-17 (-9d) | 59d → 57d | 333d → 334d | NQS-E1210 → NQS-X1020 | resources Contract cost (BOQ x payment milestones) [115940 SAR]; Progress weight (fair EPC distribution) [421 h] → Contract cost (BOQ x payment milestones) [105400 SAR]; Progress weight (fair EPC distribution, SAR value) [212040 SAR] |
| NQS-C1020 | Civil: camera and ALPR pole foundations and poles - Al Qassim | 2027-12-29 → 2027-12-21 (-8d) | 2028-03-09 → 2028-02-28 (-10d) | 47d → 45d | 333d → 334d | NQS-C1010 SS+38d → NQS-C1010 SS+37d | resources Contract cost (BOQ x payment milestones) [94860 SAR]; Progress weight (fair EPC distribution) [316 h] → Contract cost (BOQ x payment milestones) [84320 SAR]; Progress weight (fair EPC distribution, SAR value) [163060 SAR] |
| INS | **Installation** | 2029-03-18 → 2028-04-13 (-339d) | 2029-05-13 → 2028-06-20 (-327d) |  |  |  |  |
| NQS-C2010 | Install UPS, network switches and field cabinets - Al Qassim | 2028-04-16 → 2028-04-13 (-3d) | 2028-05-07 → 2028-05-08 (+1d) | 11d → 13d | 286d → 276d |  | resources Contract cost (BOQ x payment milestones) [93797 SAR]; Progress weight (fair EPC distribution) [158 h] → Contract cost (BOQ x payment milestones) [93797 SAR]; Progress weight (fair EPC distribution, SAR value) [97960 SAR] |
| NQS-C2020 | Cabling and termination (power, fibre, data) - Al Qassim | 2028-04-20 → 2028-04-19 (-1d) | 2028-05-22 → 2028-05-25 (+3d) | 18d → 22d | 286d → 276d | NQS-C2010 SS+4d, NQS-C1010 SS+43d → NQS-C2010 SS+4d, NQS-C1010 SS+41d | resources Contract cost (BOQ x payment milestones) [140695 SAR]; Progress weight (fair EPC distribution) [316 h] → Contract cost (BOQ x payment milestones) [140695 SAR]; Progress weight (fair EPC distribution, SAR value) [195920 SAR] |
| NQS-C2040 | Install video management, video wall and control-room equipment - Al Qassim | 2028-05-08 → 2028-05-09 (+1d) | 2028-05-23 → 2028-05-29 (+6d) | 12d → 15d | 299d → 292d |  | resources Contract cost (BOQ x payment milestones) [70348 SAR]; Progress weight (fair EPC distribution) [158 h] → Contract cost (BOQ x payment milestones) [70348 SAR]; Progress weight (fair EPC distribution, SAR value) [97960 SAR] |
| NQS-C2050 | Install access control and intercom - Al Qassim | 2028-05-14 → 2028-05-15 (+1d) | 2028-05-28 → 2028-05-31 (+3d) | 11d → 13d | 296d → 290d |  | resources Contract cost (BOQ x payment milestones) [46898 SAR]; Progress weight (fair EPC distribution) [105 h] → Contract cost (BOQ x payment milestones) [46898 SAR]; Progress weight (fair EPC distribution, SAR value) [65100 SAR] |
| NQS-C2030 | Install and aim CCTV cameras - Al Qassim | 2028-05-23 → 2028-05-28 (+5d) | 2028-06-11 → 2028-06-20 (+9d) | 14d → 18d | 286d → 276d |  | resources Contract cost (BOQ x payment milestones) [117246 SAR]; Progress weight (fair EPC distribution) [263 h] → Contract cost (BOQ x payment milestones) [117246 SAR]; Progress weight (fair EPC distribution, SAR value) [163060 SAR] |
| EHF | **Hufuf (EWR)** | 2027-11-07 → 2027-10-10 (-28d) | 2028-06-01 → 2028-05-29 (-3d) |  |  |  |  |
| EHF-C2100 | MS5 Installation complete (20%) - Hufuf | 2028-06-01 → 2028-05-29 (-3d) | 2028-06-01 → 2028-05-29 (-3d) |  | 292d → 293d |  |  |
| CIV | **Civil works** | 2028-11-23 → 2027-10-31 (-389d) | 2029-03-29 → 2028-02-10 (-413d) |  |  |  |  |
| EHF-C1010 | Civil: platform trenches and duct banks - Hufuf | 2027-11-07 → 2027-10-31 (-7d) | 2028-01-18 → 2028-01-11 (-7d) |  | 345d → 346d | EHF-E1210 → EHF-X1020 | resources Contract cost (BOQ x payment milestones) [113805 SAR]; Progress weight (fair EPC distribution) [350 h] → Contract cost (BOQ x payment milestones) [103459 SAR]; Progress weight (fair EPC distribution, SAR value) [176700 SAR] |
| EHF-C1020 | Civil: camera and ALPR pole foundations and poles - Hufuf | 2027-12-23 → 2027-12-16 (-7d) | 2028-02-17 → 2028-02-10 (-7d) |  | 345d → 346d |  | resources Contract cost (BOQ x payment milestones) [93113 SAR]; Progress weight (fair EPC distribution) [263 h] → Contract cost (BOQ x payment milestones) [82767 SAR]; Progress weight (fair EPC distribution, SAR value) [135780 SAR] |
| INS | **Installation** | 2029-05-13 → 2028-04-03 (-405d) | 2029-07-01 → 2028-05-29 (-398d) |  |  |  |  |
| EHF-C2010 | Install UPS, network switches and field cabinets - Hufuf | 2028-04-16 → 2028-04-03 (-13d) | 2028-04-26 → 2028-04-17 (-9d) | 9d → 11d | 292d → 293d |  | resources Contract cost (BOQ x payment milestones) [71756 SAR]; Progress weight (fair EPC distribution) [131 h] → Contract cost (BOQ x payment milestones) [71756 SAR]; Progress weight (fair EPC distribution, SAR value) [81220 SAR] |
| EHF-C2020 | Cabling and termination (power, fibre, data) - Hufuf | 2028-04-19 → 2028-04-09 (-10d) | 2028-05-16 → 2028-05-09 (-7d) | 15d → 18d | 292d → 293d | EHF-C2010 SS+3d, EHF-C1010 SS+38d → EHF-C2010 SS+4d, EHF-C1010 SS+38d | resources Contract cost (BOQ x payment milestones) [107635 SAR]; Progress weight (fair EPC distribution) [263 h] → Contract cost (BOQ x payment milestones) [107635 SAR]; Progress weight (fair EPC distribution, SAR value) [163060 SAR] |
| EHF-C2040 | Install video management, video wall and control-room equipment - Hufuf | 2028-04-27 → 2028-04-18 (-9d) | 2028-05-18 → 2028-05-10 (-8d) | 11d → 12d | 302d → 306d |  | resources Contract cost (BOQ x payment milestones) [53817 SAR]; Progress weight (fair EPC distribution) [131 h] → Contract cost (BOQ x payment milestones) [53817 SAR]; Progress weight (fair EPC distribution, SAR value) [81220 SAR] |
| EHF-C2050 | Install access control and intercom - Hufuf | 2028-05-09 → 2028-04-24 (-15d) | 2028-05-21 → 2028-05-15 (-6d) | 9d → 11d | 301d → 303d | EHF-C2010 FS+3d → EHF-C2010 FS+4d | resources Contract cost (BOQ x payment milestones) [35878 SAR]; Progress weight (fair EPC distribution) [88 h] → Contract cost (BOQ x payment milestones) [35878 SAR]; Progress weight (fair EPC distribution, SAR value) [54560 SAR] |
| EHF-C2030 | Install and aim CCTV cameras - Hufuf | 2028-05-17 → 2028-05-10 (-7d) | 2028-06-01 → 2028-05-29 (-3d) | 12d → 14d | 292d → 293d |  | resources Contract cost (BOQ x payment milestones) [89695 SAR]; Progress weight (fair EPC distribution) [219 h] → Contract cost (BOQ x payment milestones) [89695 SAR]; Progress weight (fair EPC distribution, SAR value) [135780 SAR] |
| NMJ | **Al Majma'ah (NSR)** | 2027-12-26 → 2027-11-25 (-31d) | 2028-07-30 → 2028-08-08 (+9d) |  |  |  |  |
| NMJ-C2100 | MS5 Installation complete (20%) - Al Majma'ah | 2028-07-30 → 2028-08-08 (+9d) | 2028-07-30 → 2028-08-08 (+9d) |  | 251d → 241d |  |  |
| CIV | **Civil works** | 2027-09-09 → 2027-12-16 (+98d) | 2027-12-30 → 2028-04-16 (+108d) |  |  |  |  |
| NMJ-C1010 | Civil: platform trenches and duct banks - Al Majma'ah | 2027-12-26 → 2027-12-16 (-10d) | 2028-03-22 → 2028-03-12 (-10d) | 59d → 57d | 298d → 300d | NMJ-E1210 → NMJ-X1020 | resources Contract cost (BOQ x payment milestones) [115940 SAR]; Progress weight (fair EPC distribution) [421 h] → Contract cost (BOQ x payment milestones) [105400 SAR]; Progress weight (fair EPC distribution, SAR value) [212040 SAR] |
| NMJ-C1020 | Civil: camera and ALPR pole foundations and poles - Al Majma'ah | 2028-02-16 → 2028-02-07 (-9d) | 2028-04-27 → 2028-04-16 (-11d) | 47d → 45d | 298d → 300d | NMJ-C1010 SS+38d → NMJ-C1010 SS+37d | resources Contract cost (BOQ x payment milestones) [94860 SAR]; Progress weight (fair EPC distribution) [316 h] → Contract cost (BOQ x payment milestones) [84320 SAR]; Progress weight (fair EPC distribution, SAR value) [163060 SAR] |
| INS | **Installation** | 2028-02-13 → 2028-06-08 (+116d) | 2028-03-30 → 2028-08-08 (+131d) |  |  |  |  |
| NMJ-C2010 | Install UPS, network switches and field cabinets - Al Majma'ah | 2028-06-11 → 2028-06-08 (-3d) | 2028-06-25 → 2028-06-26 (+1d) | 11d → 13d | 251d → 241d |  | resources Contract cost (BOQ x payment milestones) [93797 SAR]; Progress weight (fair EPC distribution) [158 h] → Contract cost (BOQ x payment milestones) [93797 SAR]; Progress weight (fair EPC distribution, SAR value) [97960 SAR] |
| NMJ-C2020 | Cabling and termination (power, fibre, data) - Al Majma'ah | 2028-06-15 → 2028-06-14 (-1d) | 2028-07-10 → 2028-07-13 (+3d) | 18d → 22d | 251d → 241d | NMJ-C2010 SS+4d, NMJ-C1010 SS+43d → NMJ-C2010 SS+4d, NMJ-C1010 SS+41d | resources Contract cost (BOQ x payment milestones) [140695 SAR]; Progress weight (fair EPC distribution) [316 h] → Contract cost (BOQ x payment milestones) [140695 SAR]; Progress weight (fair EPC distribution, SAR value) [195920 SAR] |
| NMJ-C2040 | Install video management, video wall and control-room equipment - Al Majma'ah | 2028-06-26 → 2028-06-27 (+1d) | 2028-07-11 → 2028-07-17 (+6d) | 12d → 15d | 264d → 257d |  | resources Contract cost (BOQ x payment milestones) [70348 SAR]; Progress weight (fair EPC distribution) [158 h] → Contract cost (BOQ x payment milestones) [70348 SAR]; Progress weight (fair EPC distribution, SAR value) [97960 SAR] |
| NMJ-C2050 | Install access control and intercom - Al Majma'ah | 2028-07-02 → 2028-07-03 (+1d) | 2028-07-16 → 2028-07-19 (+3d) | 11d → 13d | 261d → 255d |  | resources Contract cost (BOQ x payment milestones) [46898 SAR]; Progress weight (fair EPC distribution) [105 h] → Contract cost (BOQ x payment milestones) [46898 SAR]; Progress weight (fair EPC distribution, SAR value) [65100 SAR] |
| NMJ-C2030 | Install and aim CCTV cameras - Al Majma'ah | 2028-07-11 → 2028-07-16 (+5d) | 2028-07-30 → 2028-08-08 (+9d) | 14d → 18d | 251d → 241d |  | resources Contract cost (BOQ x payment milestones) [117246 SAR]; Progress weight (fair EPC distribution) [263 h] → Contract cost (BOQ x payment milestones) [117246 SAR]; Progress weight (fair EPC distribution, SAR value) [163060 SAR] |
| HKA | **KAEC (HHR)** | 2028-06-21 → 2028-03-30 (-83d) | 2029-04-12 → 2029-01-17 (-85d) |  |  |  |  |
| HKA-C2100 | MS5 Installation complete (20%) - KAEC | 2029-04-12 → 2029-01-17 (-85d) | 2029-04-12 → 2029-01-17 (-85d) |  | 58d → 118d |  |  |
| CIV | **Civil works** | 2027-11-07 → 2028-04-20 (+165d) | 2028-02-17 → 2028-06-15 (+119d) |  |  |  |  |
| HKA-C1010 | Civil: platform trenches and duct banks - KAEC | 2028-06-21 → 2028-04-20 (-62d) | 2028-08-02 → 2028-05-31 (-63d) | 31d → 25d | 182d → 229d | HKA-E1210 → HKA-X1020 | resources Contract cost (BOQ x payment milestones) [35395 SAR]; Progress weight (fair EPC distribution) [689 h] → Contract cost (BOQ x payment milestones) [32177 SAR]; Progress weight (fair EPC distribution, SAR value) [347200 SAR] |
| HKA-C1020 | Civil: camera and ALPR pole foundations and poles - KAEC | 2028-07-19 → 2028-05-21 (-59d) | 2028-08-22 → 2028-06-15 (-68d) | 25d → 20d | 193d → 245d | HKA-C1010 SS+20d → HKA-C1010 SS+16d | resources Contract cost (BOQ x payment milestones) [28960 SAR]; Progress weight (fair EPC distribution) [517 h] → Contract cost (BOQ x payment milestones) [25742 SAR]; Progress weight (fair EPC distribution, SAR value) [267220 SAR] |
| INS | **Installation** | 2028-04-16 → 2028-10-16 (+183d) | 2028-06-01 → 2029-01-17 (+230d) |  |  |  |  |
| HKA-C2010 | Install UPS, network switches and field cabinets - KAEC | 2029-01-03 → 2028-10-16 (-79d) | 2029-01-30 → 2028-11-12 (-79d) |  | 58d → 118d |  | resources Contract cost (BOQ x payment milestones) [209704 SAR]; Progress weight (fair EPC distribution) [258 h] → Contract cost (BOQ x payment milestones) [209704 SAR]; Progress weight (fair EPC distribution, SAR value) [159960 SAR] |
| HKA-C2020 | Cabling and termination (power, fibre, data) - KAEC | 2029-01-14 → 2028-10-25 (-81d) | 2029-03-07 → 2028-12-11 (-86d) | 33d → 34d | 58d → 118d | HKA-C2010 SS+7d, HKA-C1010 SS+23d → HKA-C2010 SS+7d, HKA-C1010 SS+18d | resources Contract cost (BOQ x payment milestones) [314556 SAR]; Progress weight (fair EPC distribution) [517 h] → Contract cost (BOQ x payment milestones) [314556 SAR]; Progress weight (fair EPC distribution, SAR value) [320540 SAR] |
| HKA-C2040 | Install video management, video wall and control-room equipment - KAEC | 2029-01-31 → 2028-11-13 (-79d) | 2029-03-12 → 2028-12-13 (-89d) |  | 81d → 143d |  | resources Contract cost (BOQ x payment milestones) [157278 SAR]; Progress weight (fair EPC distribution) [258 h] → Contract cost (BOQ x payment milestones) [157278 SAR]; Progress weight (fair EPC distribution, SAR value) [159960 SAR] |
| HKA-C2050 | Install access control and intercom - KAEC | 2029-02-18 → 2028-11-22 (-88d) | 2029-03-18 → 2028-12-19 (-89d) |  | 77d → 139d |  | resources Contract cost (BOQ x payment milestones) [104852 SAR]; Progress weight (fair EPC distribution) [172 h] → Contract cost (BOQ x payment milestones) [104852 SAR]; Progress weight (fair EPC distribution, SAR value) [106640 SAR] |

| ID | Task | Start | Finish | Duration | Total float | Predecessors | Other |
| --- | --- | --- | --- | --- | --- | --- | --- |
| HKA-C2030 | Install and aim CCTV cameras - KAEC | 2029-03-08 → 2028-12-12 (-86d) | 2029-04-12 → 2029-01-17 (-85d) | 26d → 27d | 58d → 118d |  | resources Contract cost (BOQ x payment milestones) [262130 SAR]; Progress weight (fair EPC distribution) [431 h] → Contract cost (BOQ x payment milestones) [262130 SAR]; Progress weight (fair EPC distribution, SAR value) [267220 SAR] |
| HMD | **Madinah (HHR)** | 2028-06-21 → 2028-03-30 (-83d) | 2029-04-18 → 2029-01-22 (-86d) |  |  |  |  |
| HMD-C2100 | MS5 Installation complete (20%) - Madinah | 2029-04-18 → 2029-01-22 (-86d) | 2029-04-18 → 2029-01-22 (-86d) |  | 54d → 114d |  |  |
| CIV | **Civil works** | 2028-06-28 → 2028-04-20 (-69d) | 2028-09-12 → 2028-06-27 (-77d) |  |  |  |  |
| HMD-C1010 | Civil: platform trenches and duct banks - Madinah | 2028-06-21 → 2028-04-20 (-62d) | 2028-08-08 → 2028-06-08 (-61d) | 35d → 31d | 176d → 220d | HMD-E1210 → HMD-X1020 | resources Contract cost (BOQ x payment milestones) [55071 SAR]; Progress weight (fair EPC distribution) [689 h] → Contract cost (BOQ x payment milestones) [50065 SAR]; Progress weight (fair EPC distribution, SAR value) [347200 SAR] |
| HMD-C1020 | Civil: camera and ALPR pole foundations and poles - Madinah | 2028-07-24 → 2028-05-25 (-60d) | 2028-08-30 → 2028-06-27 (-64d) | 28d → 24d | 185d → 234d | HMD-C1010 SS+23d → HMD-C1010 SS+20d | resources Contract cost (BOQ x payment milestones) [45058 SAR]; Progress weight (fair EPC distribution) [517 h] → Contract cost (BOQ x payment milestones) [40052 SAR]; Progress weight (fair EPC distribution, SAR value) [267220 SAR] |
| INS | **Installation** | 2028-11-29 → 2028-10-15 (-45d) | 2029-01-03 → 2029-01-22 (+19d) |  |  |  |  |
| HMD-C2010 | Install UPS, network switches and field cabinets - Madinah | 2029-01-03 → 2028-10-15 (-80d) | 2029-01-31 → 2028-11-13 (-79d) | 21d → 22d | 54d → 114d |  | resources Contract cost (BOQ x payment milestones) [202459 SAR]; Progress weight (fair EPC distribution) [258 h] → Contract cost (BOQ x payment milestones) [202459 SAR]; Progress weight (fair EPC distribution, SAR value) [159960 SAR] |
| HMD-C2020 | Cabling and termination (power, fibre, data) - Madinah | 2029-01-14 → 2028-10-24 (-82d) | 2029-03-11 → 2028-12-12 (-89d) | 35d → 36d | 54d → 114d | HMD-C2010 SS+7d, HMD-C1010 SS+25d → HMD-C2010 SS+7d, HMD-C1010 SS+22d | resources Contract cost (BOQ x payment milestones) [303689 SAR]; Progress weight (fair EPC distribution) [517 h] → Contract cost (BOQ x payment milestones) [303689 SAR]; Progress weight (fair EPC distribution, SAR value) [320540 SAR] |
| HMD-C2040 | Install video management, video wall and control-room equipment - Madinah | 2029-02-01 → 2028-11-14 (-79d) | 2029-03-15 → 2028-12-18 (-87d) |  | 78d → 139d |  | resources Contract cost (BOQ x payment milestones) [151845 SAR]; Progress weight (fair EPC distribution) [258 h] → Contract cost (BOQ x payment milestones) [151845 SAR]; Progress weight (fair EPC distribution, SAR value) [159960 SAR] |
| HMD-C2050 | Install access control and intercom - Madinah | 2029-02-19 → 2028-11-23 (-88d) | 2029-03-20 → 2028-12-24 (-86d) | 21d → 22d | 75d → 135d |  | resources Contract cost (BOQ x payment milestones) [101230 SAR]; Progress weight (fair EPC distribution) [172 h] → Contract cost (BOQ x payment milestones) [101230 SAR]; Progress weight (fair EPC distribution, SAR value) [106640 SAR] |
| HMD-C2030 | Install and aim CCTV cameras - Madinah | 2029-03-12 → 2028-12-13 (-89d) | 2029-04-18 → 2029-01-22 (-86d) | 28d → 29d | 54d → 114d |  | resources Contract cost (BOQ x payment milestones) [253074 SAR]; Progress weight (fair EPC distribution) [431 h] → Contract cost (BOQ x payment milestones) [253074 SAR]; Progress weight (fair EPC distribution, SAR value) [267220 SAR] |
| EAB | **Abqaiq (EWR)** | 2028-06-28 → 2028-05-24 (-35d) | 2029-01-03 → 2028-12-05 (-29d) |  |  |  |  |
| EAB-C2100 | MS5 Installation complete (20%) - Abqaiq | 2029-01-03 → 2028-12-05 (-29d) | 2029-01-03 → 2028-12-05 (-29d) |  | 138d → 158d |  |  |
| CIV | **Civil works** | 2027-07-15 → 2028-06-14 (+335d) | 2027-10-14 → 2028-08-23 (+314d) |  |  |  |  |
| EAB-C1010 | Civil: platform trenches and duct banks - Abqaiq | 2028-06-28 → 2028-06-14 (-14d) | 2028-08-21 → 2028-08-02 (-19d) | 39d → 36d | 209d → 222d | EAB-E1210 → EAB-X1020 | resources Contract cost (BOQ x payment milestones) [64837 SAR]; Progress weight (fair EPC distribution) [248 h] → Contract cost (BOQ x payment milestones) [58942 SAR]; Progress weight (fair EPC distribution, SAR value) [125240 SAR] |
| EAB-C1020 | Civil: camera and ALPR pole foundations and poles - Abqaiq | 2028-08-02 → 2028-07-17 (-16d) | 2028-09-12 → 2028-08-23 (-20d) | 30d → 28d | 209d → 222d | EAB-C1010 SS+25d → EAB-C1010 SS+23d | resources Contract cost (BOQ x payment milestones) [53048 SAR]; Progress weight (fair EPC distribution) [186 h] → Contract cost (BOQ x payment milestones) [47154 SAR]; Progress weight (fair EPC distribution, SAR value) [96100 SAR] |
| INS | **Installation** | 2028-01-30 → 2028-10-31 (+275d) | 2028-06-15 → 2028-12-05 (+173d) |  |  |  |  |
| EAB-C2010 | Install UPS, network switches and field cabinets - Abqaiq | 2028-11-29 → 2028-10-31 (-29d) | 2028-12-10 → 2028-11-09 (-31d) |  | 138d → 158d |  | resources Contract cost (BOQ x payment milestones) [56650 SAR]; Progress weight (fair EPC distribution) [93 h] → Contract cost (BOQ x payment milestones) [56650 SAR]; Progress weight (fair EPC distribution, SAR value) [57660 SAR] |
| EAB-C2020 | Cabling and termination (power, fibre, data) - Abqaiq | 2028-12-04 → 2028-11-05 (-29d) | 2028-12-20 → 2028-11-21 (-29d) |  | 138d → 158d | EAB-C2010 SS+3d, EAB-C1010 SS+28d → EAB-C2010 SS+3d, EAB-C1010 SS+26d | resources Contract cost (BOQ x payment milestones) [84975 SAR]; Progress weight (fair EPC distribution) [186 h] → Contract cost (BOQ x payment milestones) [84975 SAR]; Progress weight (fair EPC distribution, SAR value) [115320 SAR] |
| EAB-C2040 | Install video management, video wall and control-room equipment - Abqaiq | 2028-12-11 → 2028-11-12 (-29d) | 2028-12-21 → 2028-11-22 (-29d) |  | 147d → 167d |  | resources Contract cost (BOQ x payment milestones) [42488 SAR]; Progress weight (fair EPC distribution) [93 h] → Contract cost (BOQ x payment milestones) [42488 SAR]; Progress weight (fair EPC distribution, SAR value) [57660 SAR] |
| EAB-C2050 | Install access control and intercom - Abqaiq | 2028-12-14 → 2028-11-15 (-29d) | 2028-12-25 → 2028-11-26 (-29d) |  | 145d → 165d |  | resources Contract cost (BOQ x payment milestones) [28325 SAR]; Progress weight (fair EPC distribution) [62 h] → Contract cost (BOQ x payment milestones) [28325 SAR]; Progress weight (fair EPC distribution, SAR value) [38440 SAR] |
| EAB-C2030 | Install and aim CCTV cameras - Abqaiq | 2028-12-21 → 2028-11-22 (-29d) | 2029-01-03 → 2028-12-05 (-29d) |  | 138d → 158d |  | resources Contract cost (BOQ x payment milestones) [70813 SAR]; Progress weight (fair EPC distribution) [155 h] → Contract cost (BOQ x payment milestones) [70813 SAR]; Progress weight (fair EPC distribution, SAR value) [96100 SAR] |
| NHL | **Hail (NSR)** | 2028-07-24 → 2028-06-18 (-36d) | 2029-02-19 → 2029-02-06 (-13d) |  |  |  |  |
| NHL-C2100 | MS5 Installation complete (20%) - Hail | 2029-02-19 → 2029-02-06 (-13d) | 2029-02-19 → 2029-02-06 (-13d) |  | 110d → 111d |  |  |
| CIV | **Civil works** | 2028-02-06 → 2028-07-09 (+154d) | 2028-05-28 → 2028-10-30 (+155d) |  |  |  |  |
| NHL-C1010 | Civil: platform trenches and duct banks - Hail | 2028-07-24 → 2028-07-09 (-15d) | 2028-10-12 → 2028-09-25 (-17d) | 59d → 57d | 157d → 164d | NHL-E1210 → NHL-X1020 | resources Contract cost (BOQ x payment milestones) [115940 SAR]; Progress weight (fair EPC distribution) [421 h] → Contract cost (BOQ x payment milestones) [105400 SAR]; Progress weight (fair EPC distribution, SAR value) [212040 SAR] |
| NHL-C1020 | Civil: camera and ALPR pole foundations and poles - Hail | 2028-09-14 → 2028-08-29 (-16d) | 2028-11-19 → 2028-10-30 (-20d) | 47d → 45d | 157d → 164d | NHL-C1010 SS+38d → NHL-C1010 SS+37d | resources Contract cost (BOQ x payment milestones) [94860 SAR]; Progress weight (fair EPC distribution) [316 h] → Contract cost (BOQ x payment milestones) [84320 SAR]; Progress weight (fair EPC distribution, SAR value) [163060 SAR] |
| INS | **Installation** | 2028-09-03 → 2028-12-07 (+95d) | 2029-01-28 → 2029-02-06 (+9d) |  |  |  |  |
| NHL-C2010 | Install UPS, network switches and field cabinets - Hail | 2028-12-25 → 2028-12-07 (-18d) | 2029-01-08 → 2028-12-25 (-14d) | 11d → 13d | 110d → 111d |  | resources Contract cost (BOQ x payment milestones) [93797 SAR]; Progress weight (fair EPC distribution) [158 h] → Contract cost (BOQ x payment milestones) [93797 SAR]; Progress weight (fair EPC distribution, SAR value) [97960 SAR] |
| NHL-C2020 | Cabling and termination (power, fibre, data) - Hail | 2028-12-31 → 2028-12-13 (-18d) | 2029-01-23 → 2029-01-11 (-12d) | 18d → 22d | 110d → 111d | NHL-C2010 SS+4d, NHL-C1010 SS+43d → NHL-C2010 SS+4d, NHL-C1010 SS+41d | resources Contract cost (BOQ x payment milestones) [140695 SAR]; Progress weight (fair EPC distribution) [316 h] → Contract cost (BOQ x payment milestones) [140695 SAR]; Progress weight (fair EPC distribution, SAR value) [195920 SAR] |
| NHL-C2040 | Install video management, video wall and control-room equipment - Hail | 2029-01-09 → 2028-12-26 (-14d) | 2029-01-24 → 2029-01-15 (-9d) | 12d → 15d | 123d → 127d |  | resources Contract cost (BOQ x payment milestones) [70348 SAR]; Progress weight (fair EPC distribution) [158 h] → Contract cost (BOQ x payment milestones) [70348 SAR]; Progress weight (fair EPC distribution, SAR value) [97960 SAR] |
| NHL-C2050 | Install access control and intercom - Hail | 2029-01-15 → 2029-01-01 (-14d) | 2029-01-29 → 2029-01-17 (-12d) | 11d → 13d | 120d → 125d |  | resources Contract cost (BOQ x payment milestones) [46898 SAR]; Progress weight (fair EPC distribution) [105 h] → Contract cost (BOQ x payment milestones) [46898 SAR]; Progress weight (fair EPC distribution, SAR value) [65100 SAR] |
| NHL-C2030 | Install and aim CCTV cameras - Hail | 2029-01-24 → 2029-01-14 (-10d) | 2029-02-19 → 2029-02-06 (-13d) | 14d → 18d | 110d → 111d |  | resources Contract cost (BOQ x payment milestones) [117246 SAR]; Progress weight (fair EPC distribution) [263 h] → Contract cost (BOQ x payment milestones) [117246 SAR]; Progress weight (fair EPC distribution, SAR value) [163060 SAR] |
| NJF | **Al Jouf (NSR)** | 2029-05-14 → 2028-08-28 (-259d) | 2029-07-29 → 2029-05-09 (-81d) |  |  |  |  |
| NJF-C2100 | MS5 Installation complete (20%) - Al Jouf | 2029-05-13 → 2029-05-09 (-4d) | 2029-05-13 → 2029-05-09 (-4d) |  | 57d → 56d |  |  |
| CIV | **Civil works** | 2028-06-21 → 2028-09-18 (+89d) | 2028-08-22 → 2029-01-09 (+140d) |  |  |  |  |
| NJF-C1010 | Civil: platform trenches and duct banks - Al Jouf | 2028-10-05 → 2028-09-18 (-17d) | 2028-12-26 → 2028-12-05 (-21d) | 59d → 57d | 104d → 113d | NJF-E1210 → NJF-X1020 | resources Contract cost (BOQ x payment milestones) [115940 SAR]; Progress weight (fair EPC distribution) [424 h] → Contract cost (BOQ x payment milestones) [105400 SAR]; Progress weight (fair EPC distribution, SAR value) [213280 SAR] |
| NJF-C1020 | Civil: camera and ALPR pole foundations and poles - Al Jouf | 2028-11-28 → 2028-11-08 (-20d) | 2029-01-31 → 2029-01-09 (-22d) | 47d → 45d | 104d → 113d | NJF-C1010 SS+38d → NJF-C1010 SS+37d | resources Contract cost (BOQ x payment milestones) [94860 SAR]; Progress weight (fair EPC distribution) [318 h] → Contract cost (BOQ x payment milestones) [84320 SAR]; Progress weight (fair EPC distribution, SAR value) [164300 SAR] |
| INS | **Installation** | 2029-01-03 → 2029-03-04 (+60d) | 2029-04-12 → 2029-05-09 (+27d) |  |  |  |  |
| NJF-C2010 | Install UPS, network switches and field cabinets - Al Jouf | 2029-03-18 → 2029-03-04 (-14d) | 2029-04-01 → 2029-03-20 (-12d) | 11d → 13d | 57d → 56d |  | resources Contract cost (BOQ x payment milestones) [94754 SAR]; Progress weight (fair EPC distribution) [159 h] → Contract cost (BOQ x payment milestones) [94754 SAR]; Progress weight (fair EPC distribution, SAR value) [98580 SAR] |
| NJF-C2020 | Cabling and termination (power, fibre, data) - Al Jouf | 2029-03-22 → 2029-03-08 (-14d) | 2029-04-16 → 2029-04-08 (-8d) | 18d → 22d | 57d → 56d | NJF-C2010 SS+4d, NJF-C1010 SS+43d → NJF-C2010 SS+4d, NJF-C1010 SS+41d | resources Contract cost (BOQ x payment milestones) [142131 SAR]; Progress weight (fair EPC distribution) [318 h] → Contract cost (BOQ x payment milestones) [142131 SAR]; Progress weight (fair EPC distribution, SAR value) [197160 SAR] |
| NJF-C2040 | Install video management, video wall and control-room equipment - Al Jouf | 2029-04-02 → 2029-03-21 (-12d) | 2029-04-17 → 2029-04-10 (-7d) | 12d → 15d | 70d → 72d |  | resources Contract cost (BOQ x payment milestones) [71065 SAR]; Progress weight (fair EPC distribution) [159 h] → Contract cost (BOQ x payment milestones) [71065 SAR]; Progress weight (fair EPC distribution, SAR value) [98580 SAR] |
| NJF-C2050 | Install access control and intercom - Al Jouf | 2029-04-08 → 2029-03-27 (-12d) | 2029-04-29 → 2029-04-12 (-17d) | 11d → 13d | 67d → 70d |  | resources Contract cost (BOQ x payment milestones) [47377 SAR]; Progress weight (fair EPC distribution) [106 h] → Contract cost (BOQ x payment milestones) [47377 SAR]; Progress weight (fair EPC distribution, SAR value) [65720 SAR] |
| NJF-C2030 | Install and aim CCTV cameras - Al Jouf | 2029-04-17 → 2029-04-09 (-8d) | 2029-05-13 → 2029-05-09 (-4d) | 14d → 18d | 57d → 56d |  | resources Contract cost (BOQ x payment milestones) [118442 SAR]; Progress weight (fair EPC distribution) [265 h] → Contract cost (BOQ x payment milestones) [118442 SAR]; Progress weight (fair EPC distribution, SAR value) [164300 SAR] |
| NQR | **Al Qurayyat (NSR)** | 2028-09-07 → 2028-10-15 (+38d) | 2029-09-02 → 2029-06-27 (-67d) |  |  |  |  |
| NQR-C2100 | MS5 Installation complete (20%) - Al Qurayyat | 2029-07-01 → 2029-06-27 (-4d) | 2029-07-01 → 2029-06-27 (-4d) |  | 22d → 21d |  |  |
| CIV | **Civil works** | 2028-06-21 → 2028-11-05 (+137d) | 2028-08-30 → 2029-03-06 (+188d) |  |  |  |  |
| NQR-C1010 | Civil: platform trenches and duct banks - Al Qurayyat | 2028-11-23 → 2028-11-05 (-18d) | 2029-02-20 → 2029-01-22 (-29d) | 59d → 57d | 69d → 79d | NQR-E1210 → NQR-X1020 | resources Contract cost (BOQ x payment milestones) [115940 SAR]; Progress weight (fair EPC distribution) [421 h] → Contract cost (BOQ x payment milestones) [105400 SAR]; Progress weight (fair EPC distribution, SAR value) [212040 SAR] |
| NQR-C1020 | Civil: camera and ALPR pole foundations and poles - Al Qurayyat | 2029-01-16 → 2028-12-26 (-21d) | 2029-03-29 → 2029-03-06 (-23d) | 47d → 45d | 69d → 79d | NQR-C1010 SS+38d → NQR-C1010 SS+37d | resources Contract cost (BOQ x payment milestones) [94860 SAR]; Progress weight (fair EPC distribution) [316 h] → Contract cost (BOQ x payment milestones) [84320 SAR]; Progress weight (fair EPC distribution, SAR value) [163060 SAR] |
| INS | **Installation** | 2029-01-03 → 2029-04-29 (+116d) | 2029-04-18 → 2029-06-27 (+70d) |  |  |  |  |
| NQR-C2010 | Install UPS, network switches and field cabinets - Al Qurayyat | 2029-05-13 → 2029-04-29 (-14d) | 2029-05-27 → 2029-05-15 (-12d) | 11d → 13d | 22d → 21d |  | resources Contract cost (BOQ x payment milestones) [93797 SAR]; Progress weight (fair EPC distribution) [158 h] → Contract cost (BOQ x payment milestones) [93797 SAR]; Progress weight (fair EPC distribution, SAR value) [97960 SAR] |
| NQR-C2020 | Cabling and termination (power, fibre, data) - Al Qurayyat | 2029-05-17 → 2029-05-03 (-14d) | 2029-06-11 → 2029-06-03 (-8d) | 18d → 22d | 22d → 21d | NQR-C2010 SS+4d, NQR-C1010 SS+43d → NQR-C2010 SS+4d, NQR-C1010 SS+41d | resources Contract cost (BOQ x payment milestones) [140695 SAR]; Progress weight (fair EPC distribution) [316 h] → Contract cost (BOQ x payment milestones) [140695 SAR]; Progress weight (fair EPC distribution, SAR value) [195920 SAR] |
| NQR-C2040 | Install video management, video wall and control-room equipment - Al Qurayyat | 2029-05-28 → 2029-05-16 (-12d) | 2029-06-12 → 2029-06-05 (-7d) | 12d → 15d | 35d → 37d |  | resources Contract cost (BOQ x payment milestones) [70348 SAR]; Progress weight (fair EPC distribution) [158 h] → Contract cost (BOQ x payment milestones) [70348 SAR]; Progress weight (fair EPC distribution, SAR value) [97960 SAR] |
| NQR-C2050 | Install access control and intercom - Al Qurayyat | 2029-06-03 → 2029-05-22 (-12d) | 2029-06-17 → 2029-06-07 (-10d) | 11d → 13d | 32d → 35d |  | resources Contract cost (BOQ x payment milestones) [46898 SAR]; Progress weight (fair EPC distribution) [105 h] → Contract cost (BOQ x payment milestones) [46898 SAR]; Progress weight (fair EPC distribution, SAR value) [65100 SAR] |
| NQR-C2030 | Install and aim CCTV cameras - Al Qurayyat | 2029-06-12 → 2029-06-04 (-8d) | 2029-07-01 → 2029-06-27 (-4d) | 14d → 18d | 22d → 21d |  | resources Contract cost (BOQ x payment milestones) [117246 SAR]; Progress weight (fair EPC distribution) [263 h] → Contract cost (BOQ x payment milestones) [117246 SAR]; Progress weight (fair EPC distribution, SAR value) [163060 SAR] |
| COM | **Commissioning and Handover** | 2027-09-21 → 2027-10-19 (+28d) | 2029-09-16 → 2029-09-17 (+1d) |  |  |  |  |
| NRY | **Riyadh (Thumamah) (NSR)** | 2027-09-21 → 2027-11-04 (+44d) | 2027-12-07 → 2028-01-24 (+48d) |  |  |  |  |
| NRY-T1100 | MS6 SAT complete (10%) - Riyadh (Thumamah) | 2027-10-12 → 2027-12-05 (+54d) | 2027-10-12 → 2027-12-05 (+54d) |  | 494d → 451d | NRY-T1020 → NRY-T1020, NRY-T1130 |  |
| NRY-T3100 | MS7 Station accepted - final acceptance and handover (10%) - Riyadh (Thumamah) | 2027-12-07 → 2028-01-24 (+48d) | 2027-12-07 → 2028-01-24 (+48d) |  | 464d → 430d |  |  |
| TST | **Testing and commissioning** | 2027-09-21 → 2027-11-04 (+44d) | 2027-10-12 → 2027-11-22 (+41d) |  |  |  |  |
| NRY-T1010 | Pre-commissioning and loop checks - Riyadh (Thumamah) | 2027-09-21 → 2027-11-04 (+44d) | 2027-09-29 → 2027-11-10 (+42d) | 6d → 5d | 464d → 430d |  | resources Contract cost (BOQ x payment milestones) [139231 SAR]; Progress weight (fair EPC distribution) [162 h] → Contract cost (BOQ x payment milestones) [135054 SAR]; Progress weight (fair EPC distribution, SAR value) [100440 SAR] |
| NRY-T1020 | Site acceptance test (SAT) and commissioning - Riyadh (Thumamah) | 2027-09-30 → 2027-11-11 (+42d) | 2027-10-12 → 2027-11-22 (+41d) | 9d → 8d | 464d → 430d |  | resources Contract cost (BOQ x payment milestones) [208847 SAR]; Progress weight (fair EPC distribution) [216 h] → Contract cost (BOQ x payment milestones) [202582 SAR]; Progress weight (fair EPC distribution, SAR value) [117180 SAR] |
| TRN | **Training** | 2027-10-13 → 2027-11-23 (+41d) | 2027-10-26 → 2027-12-06 (+41d) |  |  |  |  |
| NRY-T2010 | Operator and maintenance training - Riyadh (Thumamah) | 2027-10-13 → 2027-11-23 (+41d) | 2027-10-26 → 2027-12-06 (+41d) |  | 484d → 450d |  | resources Contract cost (BOQ x payment milestones) [52212 SAR]; Progress weight (fair EPC distribution) [108 h] → Contract cost (BOQ x payment milestones) [52212 SAR]; Progress weight (fair EPC distribution, SAR value) [66960 SAR] |
| TOA | **Trial operation and acceptance** | 2027-10-13 → 2027-11-23 (+41d) | 2027-12-07 → 2028-01-24 (+48d) |  |  |  |  |
| NRY-T2020 | Trial operation (maximum 45 days) - Riyadh (Thumamah) | 2027-10-13 → 2027-11-23 (+41d) | 2027-11-23 → 2028-01-03 (+41d) |  | 464d → 430d |  | resources Contract cost (BOQ x payment milestones) [121828 SAR]; Progress weight (fair EPC distribution) [162 h] → Contract cost (BOQ x payment milestones) [121828 SAR]; Progress weight (fair EPC distribution, SAR value) [100440 SAR] |
| NRY-T3010 | Taking-over application, SAR review and handover - Riyadh (Thumamah) | 2027-11-24 → 2028-01-04 (+41d) | 2027-12-07 → 2028-01-24 (+48d) | 10d → 15d | 464d → 430d | NRY-T1100, NRY-T2010, NRY-T2020, NRY-E1140 → NRY-T1100, NRY-T2010, NRY-T2020, NRY-E1140, NRY-T1130 | resources Contract cost (BOQ x payment milestones) [104424 SAR]; Progress weight (fair EPC distribution) [162 h] → Contract cost (BOQ x payment milestones) [104424 SAR]; Progress weight (fair EPC distribution, SAR value) [100440 SAR] |
| HMK | **Makkah (HHR)** | 2029-01-29 → 2028-03-08 (-327d) | 2029-05-21 → 2028-06-27 (-328d) |  |  |  |  |
| HMK-T1100 | MS6 SAT complete (10%) - Makkah | 2029-03-12 → 2028-04-18 (-328d) | 2029-03-12 → 2028-04-18 (-328d) |  | 136d → 359d |  |  |

| ID | Task | Start | Finish | Duration | Total float | Other |
| --- | --- | --- | --- | --- | --- | --- |
| HMK-T3100 | MS7 Station accepted - final acceptance and handover (10%) - Makkah | 2029-05-21 → 2028-06-27 (-328d) | 2029-05-21 → 2028-06-27 (-328d) |  | 106d → 329d |  |
| TST | **Testing and commissioning** | 2027-09-28 → 2028-03-08 (+162d) | 2027-10-18 → 2028-04-18 (+183d) |  |  |  |
| HMK-T1010 | Pre-commissioning and loop checks - Makkah | 2029-01-29 → 2028-03-08 (-327d) | 2029-02-18 → 2028-03-23 (-332d) | 10d → 12d | 106d → 329d | resources Contract cost (BOQ x payment milestones) [388404 SAR]; Progress weight (fair EPC distribution) [451 h] → Contract cost (BOQ x payment milestones) [388404 SAR]; Progress weight (fair EPC distribution, SAR value) [279620 SAR] |
| HMK-T1020 | Site acceptance test (SAT) and commissioning - Makkah | 2029-02-19 → 2028-03-26 (-330d) | 2029-03-12 → 2028-04-18 (-328d) | 15d → 18d | 106d → 329d | resources Contract cost (BOQ x payment milestones) [582606 SAR]; Progress weight (fair EPC distribution) [601 h] → Contract cost (BOQ x payment milestones) [582605 SAR]; Progress weight (fair EPC distribution, SAR value) [372620 SAR] |
| TRN | **Training** | 2027-10-19 → 2028-04-19 (+183d) | 2027-11-01 → 2028-05-09 (+190d) |  |  |  |
| HMK-T2010 | Operator and maintenance training - Makkah | 2029-03-13 → 2028-04-19 (-328d) | 2029-03-26 → 2028-05-09 (-321d) |  | 126d → 349d | resources Contract cost (BOQ x payment milestones) [145651 SAR]; Progress weight (fair EPC distribution) [301 h] → Contract cost (BOQ x payment milestones) [145651 SAR]; Progress weight (fair EPC distribution, SAR value) [186620 SAR] |
| TOA | **Trial operation and acceptance** | 2027-10-19 → 2028-04-19 (+183d) | 2027-12-13 → 2028-06-27 (+197d) |  |  |  |
| HMK-T2020 | Trial operation (maximum 45 days) - Makkah | 2029-03-13 → 2028-04-19 (-328d) | 2029-04-30 → 2028-06-06 (-328d) |  | 106d → 329d | resources Contract cost (BOQ x payment milestones) [339853 SAR]; Progress weight (fair EPC distribution) [451 h] → Contract cost (BOQ x payment milestones) [339853 SAR]; Progress weight (fair EPC distribution, SAR value) [279620 SAR] |
| HMK-T3010 | Taking-over application, SAR review and handover - Makkah | 2029-05-01 → 2028-06-07 (-328d) | 2029-05-21 → 2028-06-27 (-328d) |  | 106d → 329d | resources Contract cost (BOQ x payment milestones) [291303 SAR]; Progress weight (fair EPC distribution) [451 h] → Contract cost (BOQ x payment milestones) [291303 SAR]; Progress weight (fair EPC distribution, SAR value) [279620 SAR] |
| ERY | **Riyadh (Malaz) (EWR)** | 2027-09-28 → 2027-10-19 (+21d) | 2027-12-13 → 2028-01-05 (+23d) |  |  |  |
| ERY-T1100 | MS6 SAT complete (10%) - Riyadh (Malaz) | 2027-10-18 → 2027-11-03 (+16d) | 2027-10-18 → 2027-11-03 (+16d) |  | 490d → 473d |  |
| ERY-T3100 | MS7 Station accepted - final acceptance and handover (10%) - Riyadh (Malaz) | 2027-12-13 → 2028-01-05 (+23d) | 2027-12-13 → 2028-01-05 (+23d) |  | 460d → 443d |  |
| TST | **Testing and commissioning** | 2028-06-12 → 2027-10-19 (-237d) | 2028-07-02 → 2027-11-03 (-242d) |  |  |  |
| ERY-T1010 | Pre-commissioning and loop checks - Riyadh (Malaz) | 2027-09-28 → 2027-10-19 (+21d) | 2027-10-05 → 2027-10-25 (+20d) | 6d → 5d | 460d → 443d | resources Contract cost (BOQ x payment milestones) [123661 SAR]; Progress weight (fair EPC distribution) [144 h] → Contract cost (BOQ x payment milestones) [123661 SAR]; Progress weight (fair EPC distribution, SAR value) [89280 SAR] |
| ERY-T1020 | Site acceptance test (SAT) and commissioning - Riyadh (Malaz) | 2027-10-06 → 2027-10-26 (+20d) | 2027-10-18 → 2027-11-03 (+16d) | 9d → 7d | 460d → 443d | resources Contract cost (BOQ x payment milestones) [185491 SAR]; Progress weight (fair EPC distribution) [191 h] → Contract cost (BOQ x payment milestones) [185491 SAR]; Progress weight (fair EPC distribution, SAR value) [118420 SAR] |
| TRN | **Training** | 2028-07-03 → 2027-11-04 (-242d) | 2028-07-16 → 2027-11-17 (-242d) |  |  |  |
| ERY-T2010 | Operator and maintenance training - Riyadh (Malaz) | 2027-10-19 → 2027-11-04 (+16d) | 2027-11-01 → 2027-11-17 (+16d) |  | 480d → 463d | resources Contract cost (BOQ x payment milestones) [46373 SAR]; Progress weight (fair EPC distribution) [96 h] → Contract cost (BOQ x payment milestones) [46373 SAR]; Progress weight (fair EPC distribution, SAR value) [59520 SAR] |
| TOA | **Trial operation and acceptance** | 2028-07-03 → 2027-11-04 (-242d) | 2028-08-27 → 2028-01-05 (-235d) |  |  |  |
| ERY-T2020 | Trial operation (maximum 45 days) - Riyadh (Malaz) | 2027-10-19 → 2027-11-04 (+16d) | 2027-11-29 → 2027-12-15 (+16d) |  | 460d → 443d | resources Contract cost (BOQ x payment milestones) [108203 SAR]; Progress weight (fair EPC distribution) [144 h] → Contract cost (BOQ x payment milestones) [108203 SAR]; Progress weight (fair EPC distribution, SAR value) [89280 SAR] |
| ERY-T3010 | Taking-over application, SAR review and handover - Riyadh (Malaz) | 2027-11-30 → 2027-12-16 (+16d) | 2027-12-13 → 2028-01-05 (+23d) | 10d → 15d | 460d → 443d | resources Contract cost (BOQ x payment milestones) [92746 SAR]; Progress weight (fair EPC distribution) [144 h] → Contract cost (BOQ x payment milestones) [92746 SAR]; Progress weight (fair EPC distribution, SAR value) [89280 SAR] |
| HJD | **Jeddah (HHR)** | 2028-06-18 → 2028-05-17 (-32d) | 2028-09-21 → 2028-08-23 (-29d) |  |  |  |
| HJD-T1100 | MS6 SAT complete (10%) - Jeddah | 2028-07-20 → 2028-06-21 (-29d) | 2028-07-20 → 2028-06-21 (-29d) |  | 297d → 318d |  |
| HJD-T3100 | MS7 Station accepted - final acceptance and handover (10%) - Jeddah | 2028-09-21 → 2028-08-23 (-29d) | 2028-09-21 → 2028-08-23 (-29d) |  | 267d → 288d |  |
| TST | **Testing and commissioning** | 2028-07-31 → 2028-05-17 (-75d) | 2028-08-20 → 2028-06-21 (-60d) |  |  |  |
| HJD-T1010 | Pre-commissioning and loop checks - Jeddah | 2028-06-18 → 2028-05-17 (-32d) | 2028-06-29 → 2028-05-30 (-30d) |  | 267d → 288d | resources Contract cost (BOQ x payment milestones) [382035 SAR]; Progress weight (fair EPC distribution) [444 h] → Contract cost (BOQ x payment milestones) [382035 SAR]; Progress weight (fair EPC distribution, SAR value) [275280 SAR] |
| HJD-T1020 | Site acceptance test (SAT) and commissioning - Jeddah | 2028-07-02 → 2028-05-31 (-32d) | 2028-07-20 → 2028-06-21 (-29d) | 15d → 16d | 267d → 288d | resources Contract cost (BOQ x payment milestones) [573053 SAR]; Progress weight (fair EPC distribution) [592 h] → Contract cost (BOQ x payment milestones) [573052 SAR]; Progress weight (fair EPC distribution, SAR value) [367040 SAR] |
| TRN | **Training** | 2028-08-21 → 2028-06-22 (-60d) | 2028-09-03 → 2028-07-05 (-60d) |  |  |  |
| HJD-T2010 | Operator and maintenance training - Jeddah | 2028-07-23 → 2028-06-22 (-31d) | 2028-08-03 → 2028-07-05 (-29d) |  | 287d → 308d | resources Contract cost (BOQ x payment milestones) [143263 SAR]; Progress weight (fair EPC distribution) [296 h] → Contract cost (BOQ x payment milestones) [143263 SAR]; Progress weight (fair EPC distribution, SAR value) [183520 SAR] |
| TOA | **Trial operation and acceptance** | 2028-08-21 → 2028-06-22 (-60d) | 2028-10-15 → 2028-08-23 (-53d) |  |  |  |
| HJD-T2020 | Trial operation (maximum 45 days) - Jeddah | 2028-07-23 → 2028-06-22 (-31d) | 2028-08-31 → 2028-08-02 (-29d) |  | 267d → 288d | resources Contract cost (BOQ x payment milestones) [334281 SAR]; Progress weight (fair EPC distribution) [444 h] → Contract cost (BOQ x payment milestones) [334281 SAR]; Progress weight (fair EPC distribution, SAR value) [275280 SAR] |
| HJD-T3010 | Taking-over application, SAR review and handover - Jeddah | 2028-09-03 → 2028-08-03 (-31d) | 2028-09-21 → 2028-08-23 (-29d) |  | 267d → 288d | resources Contract cost (BOQ x payment milestones) [286526 SAR]; Progress weight (fair EPC distribution) [444 h] → Contract cost (BOQ x payment milestones) [286526 SAR]; Progress weight (fair EPC distribution, SAR value) [275280 SAR] |
| EDM | **Dammam (EWR)** | 2028-04-02 → 2028-04-03 (+1d) | 2028-06-22 → 2028-06-27 (+5d) |  |  |  |
| EDM-T1100 | MS6 SAT complete (10%) - Dammam | 2028-04-20 → 2028-04-18 (-2d) | 2028-04-20 → 2028-04-18 (-2d) |  | 362d → 359d |  |
| EDM-T3100 | MS7 Station accepted - final acceptance and handover (10%) - Dammam | 2028-06-22 → 2028-06-27 (+5d) | 2028-06-22 → 2028-06-27 (+5d) |  | 332d → 329d |  |
| TST | **Testing and commissioning** | 2029-02-20 → 2028-04-03 (-323d) | 2029-03-13 → 2028-04-18 (-329d) |  |  |  |
| EDM-T1010 | Pre-commissioning and loop checks - Dammam | 2028-04-02 → 2028-04-03 (+1d) |  | 6d → 5d | 332d → 329d | resources Contract cost (BOQ x payment milestones) [127500 SAR]; Progress weight (fair EPC distribution) [148 h] → Contract cost (BOQ x payment milestones) [127500 SAR]; Progress weight (fair EPC distribution, SAR value) [91760 SAR] |
| EDM-T1020 | Site acceptance test (SAT) and commissioning - Dammam |  | 2028-04-20 → 2028-04-18 (-2d) | 9d → 7d | 332d → 329d | resources Contract cost (BOQ x payment milestones) [191251 SAR]; Progress weight (fair EPC distribution) [197 h] → Contract cost (BOQ x payment milestones) [191251 SAR]; Progress weight (fair EPC distribution, SAR value) [122140 SAR] |
| TRN | **Training** | 2029-03-14 → 2028-04-19 (-329d) | 2029-03-27 → 2028-05-09 (-322d) |  |  |  |
| EDM-T2010 | Operator and maintenance training - Dammam | 2028-04-23 → 2028-04-19 (-4d) | 2028-05-11 → 2028-05-09 (-2d) |  | 352d → 349d | resources Contract cost (BOQ x payment milestones) [47813 SAR]; Progress weight (fair EPC distribution) [99 h] → Contract cost (BOQ x payment milestones) [47813 SAR]; Progress weight (fair EPC distribution, SAR value) [61380 SAR] |
| TOA | **Trial operation and acceptance** | 2029-03-14 → 2028-04-19 (-329d) | 2029-05-15 → 2028-06-27 (-322d) |  |  |  |
| EDM-T2020 | Trial operation (maximum 45 days) - Dammam | 2028-04-23 → 2028-04-19 (-4d) | 2028-06-08 → 2028-06-06 (-2d) |  | 332d → 329d | resources Contract cost (BOQ x payment milestones) [111563 SAR]; Progress weight (fair EPC distribution) [148 h] → Contract cost (BOQ x payment milestones) [111563 SAR]; Progress weight (fair EPC distribution, SAR value) [91760 SAR] |
| EDM-T3010 | Taking-over application, SAR review and handover - Dammam | 2028-06-11 → 2028-06-07 (-4d) | 2028-06-22 → 2028-06-27 (+5d) | 10d → 15d | 332d → 329d | resources Contract cost (BOQ x payment milestones) [95625 SAR]; Progress weight (fair EPC distribution) [148 h] → Contract cost (BOQ x payment milestones) [95625 SAR]; Progress weight (fair EPC distribution, SAR value) [91760 SAR] |
| NQS | **Al Qassim (NSR)** | 2028-06-12 → 2028-06-21 (+9d) | 2028-08-27 → 2028-09-10 (+14d) |  |  |  |
| NQS-T1100 | MS6 SAT complete (10%) - Al Qassim | 2028-07-02 → 2028-07-09 (+7d) | 2028-07-02 → 2028-07-09 (+7d) |  | 316d → 306d |  |
| NQS-T3100 | MS7 Station accepted - final acceptance and handover (10%) - Al Qassim | 2028-08-27 → 2028-09-10 (+14d) | 2028-08-27 → 2028-09-10 (+14d) |  | 286d → 276d |  |
| TST | **Testing and commissioning** | 2029-05-14 → 2028-06-21 (-327d) | 2029-06-03 → 2028-07-09 (-329d) |  |  |  |
| NQS-T1010 | Pre-commissioning and loop checks - Al Qassim | 2028-06-12 → 2028-06-21 (+9d) | 2028-06-19 → 2028-06-27 (+8d) | 6d → 5d | 286d → 276d | resources Contract cost (BOQ x payment milestones) [135957 SAR]; Progress weight (fair EPC distribution) [158 h] → Contract cost (BOQ x payment milestones) [135957 SAR]; Progress weight (fair EPC distribution, SAR value) [97960 SAR] |
| NQS-T1020 | Site acceptance test (SAT) and commissioning - Al Qassim | 2028-06-20 → 2028-06-28 (+8d) | 2028-07-02 → 2028-07-09 (+7d) | 9d → 8d | 286d → 276d | resources Contract cost (BOQ x payment milestones) [203935 SAR]; Progress weight (fair EPC distribution) [211 h] → Contract cost (BOQ x payment milestones) [203935 SAR]; Progress weight (fair EPC distribution, SAR value) [130820 SAR] |
| TRN | **Training** | 2029-06-04 → 2028-07-10 (-329d) | 2029-06-17 → 2028-07-23 (-329d) |  |  |  |
| NQS-T2010 | Operator and maintenance training - Al Qassim | 2028-07-03 → 2028-07-10 (+7d) | 2028-07-16 → 2028-07-23 (+7d) |  | 306d → 296d | resources Contract cost (BOQ x payment milestones) [50984 SAR]; Progress weight (fair EPC distribution) [105 h] → Contract cost (BOQ x payment milestones) [50984 SAR]; Progress weight (fair EPC distribution, SAR value) [65100 SAR] |
| TOA | **Trial operation and acceptance** | 2029-06-04 → 2028-07-10 (-329d) | 2029-07-29 → 2028-09-10 (-322d) |  |  |  |
| NQS-T2020 | Trial operation (maximum 45 days) - Al Qassim | 2028-07-03 → 2028-07-10 (+7d) | 2028-08-13 → 2028-08-20 (+7d) |  | 286d → 276d | resources Contract cost (BOQ x payment milestones) [118962 SAR]; Progress weight (fair EPC distribution) [158 h] → Contract cost (BOQ x payment milestones) [118962 SAR]; Progress weight (fair EPC distribution, SAR value) [97960 SAR] |
| NQS-T3010 | Taking-over application, SAR review and handover - Al Qassim | 2028-08-14 → 2028-08-21 (+7d) | 2028-08-27 → 2028-09-10 (+14d) | 10d → 15d | 286d → 276d | resources Contract cost (BOQ x payment milestones) [101967 SAR]; Progress weight (fair EPC distribution) [158 h] → Contract cost (BOQ x payment milestones) [101967 SAR]; Progress weight (fair EPC distribution, SAR value) [97960 SAR] |
| EHF | **Hufuf (EWR)** | 2028-06-04 → 2028-05-30 (-5d) | 2028-08-17 → 2028-08-16 (-1d) |  |  |  |
| EHF-T1100 | MS6 SAT complete (10%) - Hufuf | 2028-06-22 → 2028-06-14 (-8d) | 2028-06-22 → 2028-06-14 (-8d) |  | 322d → 323d |  |
| EHF-T3100 | MS7 Station accepted - final acceptance and handover (10%) - Hufuf | 2028-08-17 → 2028-08-16 (-1d) | 2028-08-17 → 2028-08-16 (-1d) |  | 292d → 293d |  |
| TST | **Testing and commissioning** | 2029-07-02 → 2028-05-30 (-398d) | 2029-07-22 → 2028-06-14 (-403d) |  |  |  |
| EHF-T1010 | Pre-commissioning and loop checks - Hufuf | 2028-06-04 → 2028-05-30 (-5d) | 2028-06-11 → 2028-06-05 (-6d) | 6d → 5d | 292d → 293d | resources Contract cost (BOQ x payment milestones) [113140 SAR]; Progress weight (fair EPC distribution) [131 h] → Contract cost (BOQ x payment milestones) [113140 SAR]; Progress weight (fair EPC distribution, SAR value) [81220 SAR] |
| EHF-T1020 | Site acceptance test (SAT) and commissioning - Hufuf | 2028-06-12 → 2028-06-06 (-6d) | 2028-06-22 → 2028-06-14 (-8d) | 9d → 7d | 292d → 293d | resources Contract cost (BOQ x payment milestones) [169710 SAR]; Progress weight (fair EPC distribution) [175 h] → Contract cost (BOQ x payment milestones) [169710 SAR]; Progress weight (fair EPC distribution, SAR value) [108500 SAR] |
| TRN | **Training** | 2029-07-23 → 2028-06-15 (-403d) | 2029-08-05 → 2028-06-28 (-403d) |  |  |  |
| EHF-T2010 | Operator and maintenance training - Hufuf | 2028-06-25 → 2028-06-15 (-10d) | 2028-07-06 → 2028-06-28 (-8d) |  | 312d → 313d | resources Contract cost (BOQ x payment milestones) [42428 SAR]; Progress weight (fair EPC distribution) [88 h] → Contract cost (BOQ x payment milestones) [42428 SAR]; Progress weight (fair EPC distribution, SAR value) [54560 SAR] |
| TOA | **Trial operation and acceptance** | 2029-07-23 → 2028-06-15 (-403d) | 2029-09-16 → 2028-08-16 (-396d) |  |  |  |
| EHF-T2020 | Trial operation (maximum 45 days) - Hufuf | 2028-06-25 → 2028-06-15 (-10d) | 2028-08-03 → 2028-07-26 (-8d) |  | 292d → 293d | resources Contract cost (BOQ x payment milestones) [98998 SAR]; Progress weight (fair EPC distribution) [131 h] → Contract cost (BOQ x payment milestones) [98998 SAR]; Progress weight (fair EPC distribution, SAR value) [81220 SAR] |
| EHF-T3010 | Taking-over application, SAR review and handover - Hufuf | 2028-08-06 → 2028-07-27 (-10d) | 2028-08-17 → 2028-08-16 (-1d) | 10d → 15d | 292d → 293d | resources Contract cost (BOQ x payment milestones) [84855 SAR]; Progress weight (fair EPC distribution) [131 h] → Contract cost (BOQ x payment milestones) [84855 SAR]; Progress weight (fair EPC distribution, SAR value) [81220 SAR] |
| NMJ | **Al Majma'ah (NSR)** | 2028-07-31 → 2028-08-09 (+9d) | 2028-10-15 → 2028-10-29 (+14d) |  |  |  |
| NMJ-T1100 | MS6 SAT complete (10%) - Al Majma'ah | 2028-08-20 → 2028-08-27 (+7d) | 2028-08-20 → 2028-08-27 (+7d) |  | 281d → 271d |  |
| NMJ-T3100 | MS7 Station accepted - final acceptance and handover (10%) - Al Majma'ah | 2028-10-15 → 2028-10-29 (+14d) | 2028-10-15 → 2028-10-29 (+14d) |  | 251d → 241d |  |
| TST | **Testing and commissioning** | 2028-04-02 → 2028-08-09 (+129d) | 2028-04-20 → 2028-08-27 (+129d) |  |  |  |
| NMJ-T1010 | Pre-commissioning and loop checks - Al Majma'ah | 2028-07-31 → 2028-08-09 (+9d) | 2028-08-07 → 2028-08-15 (+8d) | 6d → 5d | 251d → 241d | resources Contract cost (BOQ x payment milestones) [135957 SAR]; Progress weight (fair EPC distribution) [158 h] → Contract cost (BOQ x payment milestones) [135957 SAR]; Progress weight (fair EPC distribution, SAR value) [97960 SAR] |
| NMJ-T1020 | Site acceptance test (SAT) and commissioning - Al Majma'ah | 2028-08-08 → 2028-08-16 (+8d) | 2028-08-20 → 2028-08-27 (+7d) | 9d → 8d | 251d → 241d | resources Contract cost (BOQ x payment milestones) [203935 SAR]; Progress weight (fair EPC distribution) [211 h] → Contract cost (BOQ x payment milestones) [203935 SAR]; Progress weight (fair EPC distribution, SAR value) [130820 SAR] |

| ID | Task | Start | Finish | Duration | Total float | Other |
| --- | --- | --- | --- | --- | --- | --- |
| TRN | **Training** | 2028-04-23 → 2028-08-28 (+127d) | 2028-05-11 → 2028-09-10 (+122d) |  |  |  |
| NMJ-T2010 | Operator and maintenance training - Al Majma'ah | 2028-08-21 → 2028-08-28 (+7d) | 2028-09-03 → 2028-09-10 (+7d) |  | 271d → 261d | resources Contract cost (BOQ x payment milestones) [50984 SAR]; Progress weight (fair EPC distribution) [105 h] → Contract cost (BOQ x payment milestones) [50984 SAR]; Progress weight (fair EPC distribution, SAR value) [65100 SAR] |
| TOA | **Trial operation and acceptance** | 2028-04-23 → 2028-08-28 (+127d) | 2028-06-22 → 2028-10-29 (+129d) |  |  |  |
| NMJ-T2020 | Trial operation (maximum 45 days) - Al Majma'ah | 2028-08-21 → 2028-08-28 (+7d) | 2028-10-01 → 2028-10-08 (+7d) |  | 251d → 241d | resources Contract cost (BOQ x payment milestones) [118962 SAR]; Progress weight (fair EPC distribution) [158 h] → Contract cost (BOQ x payment milestones) [118962 SAR]; Progress weight (fair EPC distribution, SAR value) [97960 SAR] |
| NMJ-T3010 | Taking-over application, SAR review and handover - Al Majma'ah | 2028-10-02 → 2028-10-09 (+7d) | 2028-10-15 → 2028-10-29 (+14d) | 10d → 15d | 251d → 241d | resources Contract cost (BOQ x payment milestones) [101967 SAR]; Progress weight (fair EPC distribution) [158 h] → Contract cost (BOQ x payment milestones) [101967 SAR]; Progress weight (fair EPC distribution, SAR value) [97960 SAR] |
| HKA | **KAEC (HHR)** | 2029-04-15 → 2029-01-18 (-87d) | 2029-07-26 → 2029-05-03 (-84d) |  |  |  |
| HKA-T1100 | MS6 SAT complete (10%) - KAEC | 2029-05-24 → 2029-02-21 (-92d) | 2029-05-24 → 2029-02-21 (-92d) |  | 88d → 148d |  |
| HKA-T3100 | MS7 Station accepted - final acceptance and handover (10%) - KAEC | 2029-07-26 → 2029-05-03 (-84d) | 2029-07-26 → 2029-05-03 (-84d) |  | 58d → 118d |  |
| TST | **Testing and commissioning** | 2028-06-04 → 2029-01-18 (+228d) | 2028-06-22 → 2029-02-21 (+244d) |  |  |  |
| HKA-T1010 | Pre-commissioning and loop checks - KAEC | 2029-04-15 → 2029-01-18 (-87d) | 2029-05-03 → 2029-01-29 (-94d) | 10d → 8d | 58d → 118d | resources Contract cost (BOQ x payment milestones) [222575 SAR]; Progress weight (fair EPC distribution) [258 h] → Contract cost (BOQ x payment milestones) [222575 SAR]; Progress weight (fair EPC distribution, SAR value) [159960 SAR] |
| HKA-T1020 | Site acceptance test (SAT) and commissioning - KAEC | 2029-05-06 → 2029-01-30 (-96d) | 2029-05-24 → 2029-02-21 (-92d) | 15d → 12d | 58d → 118d | resources Contract cost (BOQ x payment milestones) [333863 SAR]; Progress weight (fair EPC distribution) [345 h] → Contract cost (BOQ x payment milestones) [333863 SAR]; Progress weight (fair EPC distribution, SAR value) [213900 SAR] |
| TRN | **Training** | 2028-06-25 → 2029-02-25 (+245d) | 2028-07-06 → 2029-03-08 (+245d) |  |  |  |
| HKA-T2010 | Operator and maintenance training - KAEC | 2029-05-27 → 2029-02-25 (-91d) | 2029-06-07 → 2029-03-08 (-91d) |  | 78d → 138d | resources Contract cost (BOQ x payment milestones) [83466 SAR]; Progress weight (fair EPC distribution) [172 h] → Contract cost (BOQ x payment milestones) [83466 SAR]; Progress weight (fair EPC distribution, SAR value) [106640 SAR] |
| TOA | **Trial operation and acceptance** | 2028-06-25 → 2029-02-25 (+245d) | 2028-08-17 → 2029-05-03 (+259d) |  |  |  |
| HKA-T2020 | Trial operation (maximum 45 days) - KAEC | 2029-05-27 → 2029-02-25 (-91d) | 2029-07-05 → 2029-04-05 (-91d) |  | 58d → 118d | resources Contract cost (BOQ x payment milestones) [194753 SAR]; Progress weight (fair EPC distribution) [258 h] → Contract cost (BOQ x payment milestones) [194753 SAR]; Progress weight (fair EPC distribution, SAR value) [159960 SAR] |
| HKA-T3010 | Taking-over application, SAR review and handover - KAEC | 2029-07-08 → 2029-04-08 (-91d) | 2029-07-26 → 2029-05-03 (-84d) |  | 58d → 118d | resources Contract cost (BOQ x payment milestones) [166931 SAR]; Progress weight (fair EPC distribution) [258 h] → Contract cost (BOQ x payment milestones) [166931 SAR]; Progress weight (fair EPC distribution, SAR value) [159960 SAR] |
| HMD | **Madinah (HHR)** | 2029-04-19 → 2029-01-23 (-86d) | 2029-08-01 → 2029-05-09 (-84d) |  |  |  |
| HMD-T1100 | MS6 SAT complete (10%) - Madinah | 2029-05-30 → 2029-02-28 (-91d) | 2029-05-30 → 2029-02-28 (-91d) |  | 84d → 144d |  |
| HMD-T3100 | MS7 Station accepted - final acceptance and handover (10%) - Madinah | 2029-08-01 → 2029-05-09 (-84d) | 2029-08-01 → 2029-05-09 (-84d) |  | 54d → 114d |  |
| TST | **Testing and commissioning** | 2029-01-04 → 2029-01-23 (+19d) | 2029-01-24 → 2029-02-28 (+35d) |  |  |  |
| HMD-T1010 | Pre-commissioning and loop checks - Madinah | 2029-04-19 → 2029-01-23 (-86d) | 2029-05-09 → 2029-02-01 (-97d) | 10d → 8d | 54d → 114d | resources Contract cost (BOQ x payment milestones) [222485 SAR]; Progress weight (fair EPC distribution) [258 h] → Contract cost (BOQ x payment milestones) [222485 SAR]; Progress weight (fair EPC distribution, SAR value) [159960 SAR] |
| HMD-T1020 | Site acceptance test (SAT) and commissioning - Madinah | 2029-05-10 → 2029-02-04 (-95d) | 2029-05-30 → 2029-02-28 (-91d) | 15d → 13d | 54d → 114d | resources Contract cost (BOQ x payment milestones) [333728 SAR]; Progress weight (fair EPC distribution) [344 h] → Contract cost (BOQ x payment milestones) [333728 SAR]; Progress weight (fair EPC distribution, SAR value) [213280 SAR] |
| TRN | **Training** | 2029-01-25 → 2029-03-01 (+35d) | 2029-02-07 → 2029-03-14 (+35d) |  |  |  |
| HMD-T2010 | Operator and maintenance training - Madinah | 2029-05-31 → 2029-03-01 (-91d) | 2029-06-13 → 2029-03-14 (-91d) |  | 74d → 134d | resources Contract cost (BOQ x payment milestones) [83432 SAR]; Progress weight (fair EPC distribution) [172 h] → Contract cost (BOQ x payment milestones) [83432 SAR]; Progress weight (fair EPC distribution, SAR value) [106640 SAR] |
| TOA | **Trial operation and acceptance** | 2029-01-25 → 2029-03-01 (+35d) | 2029-03-29 → 2029-05-09 (+41d) |  |  |  |
| HMD-T2020 | Trial operation (maximum 45 days) - Madinah | 2029-05-31 → 2029-03-01 (-91d) | 2029-07-11 → 2029-04-11 (-91d) |  | 54d → 114d | resources Contract cost (BOQ x payment milestones) [194675 SAR]; Progress weight (fair EPC distribution) [258 h] → Contract cost (BOQ x payment milestones) [194675 SAR]; Progress weight (fair EPC distribution, SAR value) [159960 SAR] |
| HMD-T3010 | Taking-over application, SAR review and handover - Madinah | 2029-07-12 → 2029-04-12 (-91d) | 2029-08-01 → 2029-05-09 (-84d) |  | 54d → 114d | resources Contract cost (BOQ x payment milestones) [166864 SAR]; Progress weight (fair EPC distribution) [258 h] → Contract cost (BOQ x payment milestones) [166864 SAR]; Progress weight (fair EPC distribution, SAR value) [159960 SAR] |
| EAB | **Abqaiq (EWR)** | 2029-01-04 → 2028-12-06 (-29d) | 2029-03-29 → 2029-03-01 (-28d) |  |  |  |
| EAB-T1100 | MS6 SAT complete (10%) - Abqaiq | 2029-01-24 → 2028-12-20 (-35d) | 2029-01-24 → 2028-12-20 (-35d) |  | 168d → 188d |  |
| EAB-T3100 | MS7 Station accepted - final acceptance and handover (10%) - Abqaiq | 2029-03-29 → 2029-03-01 (-28d) | 2029-03-29 → 2029-03-01 (-28d) |  | 138d → 158d |  |
| TST | **Testing and commissioning** | 2028-06-18 → 2028-12-06 (+171d) | 2028-07-20 → 2028-12-20 (+153d) |  |  |  |
| EAB-T1010 | Pre-commissioning and loop checks - Abqaiq | 2029-01-04 → 2028-12-06 (-29d) | 2029-01-11 → 2028-12-11 (-31d) | 6d → 4d | 138d → 158d | resources Contract cost (BOQ x payment milestones) [80227 SAR]; Progress weight (fair EPC distribution) [93 h] → Contract cost (BOQ x payment milestones) [80227 SAR]; Progress weight (fair EPC distribution, SAR value) [57660 SAR] |
| EAB-T1020 | Site acceptance test (SAT) and commissioning - Abqaiq | 2029-01-14 → 2028-12-12 (-33d) | 2029-01-24 → 2028-12-20 (-35d) | 9d → 7d | 138d → 158d | resources Contract cost (BOQ x payment milestones) [120341 SAR]; Progress weight (fair EPC distribution) [124 h] → Contract cost (BOQ x payment milestones) [120341 SAR]; Progress weight (fair EPC distribution, SAR value) [76880 SAR] |
| TRN | **Training** | 2028-07-23 → 2028-12-21 (+151d) | 2028-08-03 → 2029-01-03 (+153d) |  |  |  |
| EAB-T2010 | Operator and maintenance training - Abqaiq | 2029-01-25 → 2028-12-21 (-35d) | 2029-02-07 → 2029-01-03 (-35d) |  | 158d → 178d | resources Contract cost (BOQ x payment milestones) [30085 SAR]; Progress weight (fair EPC distribution) [62 h] → Contract cost (BOQ x payment milestones) [30085 SAR]; Progress weight (fair EPC distribution, SAR value) [38440 SAR] |
| TOA | **Trial operation and acceptance** | 2028-07-23 → 2028-12-21 (+151d) | 2028-09-21 → 2029-03-01 (+161d) |  |  |  |
| EAB-T2020 | Trial operation (maximum 45 days) - Abqaiq | 2029-01-25 → 2028-12-21 (-35d) | 2029-03-15 → 2029-01-31 (-43d) |  | 138d → 158d | resources Contract cost (BOQ x payment milestones) [70199 SAR]; Progress weight (fair EPC distribution) [93 h] → Contract cost (BOQ x payment milestones) [70199 SAR]; Progress weight (fair EPC distribution, SAR value) [57660 SAR] |
| EAB-T3010 | Taking-over application, SAR review and handover - Abqaiq | 2029-03-18 → 2029-02-01 (-45d) | 2029-03-29 → 2029-03-01 (-28d) | 10d → 15d | 138d → 158d | resources Contract cost (BOQ x payment milestones) [60170 SAR]; Progress weight (fair EPC distribution) [93 h] → Contract cost (BOQ x payment milestones) [60170 SAR]; Progress weight (fair EPC distribution, SAR value) [57660 SAR] |
| NHL | **Hail (NSR)** | 2029-02-20 → 2029-02-07 (-13d) | 2029-05-15 → 2029-05-14 (-1d) |  |  |  |
| NHL-T1100 | MS6 SAT complete (10%) - Hail | 2029-03-13 → 2029-03-05 (-8d) | 2029-03-13 → 2029-03-05 (-8d) |  | 140d → 141d |  |
| NHL-T3100 | MS7 Station accepted - final acceptance and handover (10%) - Hail | 2029-05-15 → 2029-05-14 (-1d) | 2029-05-15 → 2029-05-14 (-1d) |  | 110d → 111d |  |
| TST | **Testing and commissioning** | 2029-01-29 → 2029-02-07 (+9d) | 2029-03-12 → 2029-03-05 (-7d) |  |  |  |
| NHL-T1010 | Pre-commissioning and loop checks - Hail | 2029-02-20 → 2029-02-07 (-13d) | 2029-02-28 → 2029-02-20 (-8d) | 6d → 5d | 110d → 111d | resources Contract cost (BOQ x payment milestones) [135957 SAR]; Progress weight (fair EPC distribution) [158 h] → Contract cost (BOQ x payment milestones) [135957 SAR]; Progress weight (fair EPC distribution, SAR value) [97960 SAR] |
| NHL-T1020 | Site acceptance test (SAT) and commissioning - Hail | 2029-03-01 → 2029-02-21 (-8d) | 2029-03-13 → 2029-03-05 (-8d) | 9d → 8d | 110d → 111d | resources Contract cost (BOQ x payment milestones) [203935 SAR]; Progress weight (fair EPC distribution) [211 h] → Contract cost (BOQ x payment milestones) [203935 SAR]; Progress weight (fair EPC distribution, SAR value) [130820 SAR] |
| TRN | **Training** | 2029-03-13 → 2029-03-06 (-7d) | 2029-03-26 → 2029-03-19 (-7d) |  |  |  |
| NHL-T2010 | Operator and maintenance training - Hail | 2029-03-14 → 2029-03-06 (-8d) | 2029-03-27 → 2029-03-19 (-8d) |  | 130d → 131d | resources Contract cost (BOQ x payment milestones) [50984 SAR]; Progress weight (fair EPC distribution) [105 h] → Contract cost (BOQ x payment milestones) [50984 SAR]; Progress weight (fair EPC distribution, SAR value) [65100 SAR] |
| TOA | **Trial operation and acceptance** | 2029-03-13 → 2029-03-06 (-7d) | 2029-05-21 → 2029-05-14 (-7d) |  |  |  |
| NHL-T2020 | Trial operation (maximum 45 days) - Hail | 2029-03-14 → 2029-03-06 (-8d) | 2029-05-01 → 2029-04-16 (-15d) |  | 110d → 111d | resources Contract cost (BOQ x payment milestones) [118962 SAR]; Progress weight (fair EPC distribution) [158 h] → Contract cost (BOQ x payment milestones) [118962 SAR]; Progress weight (fair EPC distribution, SAR value) [97960 SAR] |
| NHL-T3010 | Taking-over application, SAR review and handover - Hail | 2029-05-02 → 2029-04-17 (-15d) | 2029-05-15 → 2029-05-14 (-1d) | 10d → 15d | 110d → 111d | resources Contract cost (BOQ x payment milestones) [101967 SAR]; Progress weight (fair EPC distribution) [158 h] → Contract cost (BOQ x payment milestones) [101967 SAR]; Progress weight (fair EPC distribution, SAR value) [97960 SAR] |
| NJF | **Al Jouf (NSR)** | 2028-07-20 → 2029-05-10 (+294d) | 2029-07-15 → 2029-07-30 (+15d) |  |  |  |
| NJF-T1100 | MS6 SAT complete (10%) - Al Jouf | 2029-06-03 → 2029-05-28 (-6d) | 2029-06-03 → 2029-05-28 (-6d) |  | 87d → 86d |  |
| NJF-T3100 | MS7 Station accepted - final acceptance and handover (10%) - Al Jouf | 2029-07-29 → 2029-07-30 (+1d) | 2029-07-29 → 2029-07-30 (+1d) |  | 57d → 56d |  |
| TST | **Testing and commissioning** | 2029-04-15 → 2029-05-10 (+25d) | 2029-05-24 → 2029-05-28 (+4d) |  |  |  |
| NJF-T1010 | Pre-commissioning and loop checks - Al Jouf | 2029-05-14 → 2029-05-10 (-4d) | 2029-05-21 → 2029-05-16 (-5d) | 6d → 5d | 57d → 56d | resources Contract cost (BOQ x payment milestones) [136914 SAR]; Progress weight (fair EPC distribution) [159 h] → Contract cost (BOQ x payment milestones) [136914 SAR]; Progress weight (fair EPC distribution, SAR value) [98580 SAR] |
| NJF-T1020 | Site acceptance test (SAT) and commissioning - Al Jouf | 2029-05-22 → 2029-05-17 (-5d) | 2029-06-03 → 2029-05-28 (-6d) | 9d → 8d | 57d → 56d | resources Contract cost (BOQ x payment milestones) [205371 SAR]; Progress weight (fair EPC distribution) [212 h] → Contract cost (BOQ x payment milestones) [205371 SAR]; Progress weight (fair EPC distribution, SAR value) [131440 SAR] |
| TRN | **Training** | 2029-05-27 → 2029-05-29 (+2d) | 2029-06-07 → 2029-06-11 (+4d) |  |  |  |
| NJF-T2010 | Operator and maintenance training - Al Jouf | 2029-06-04 → 2029-05-29 (-6d) | 2029-06-17 → 2029-06-11 (-6d) |  | 77d → 76d | resources Contract cost (BOQ x payment milestones) [51343 SAR]; Progress weight (fair EPC distribution) [106 h] → Contract cost (BOQ x payment milestones) [51343 SAR]; Progress weight (fair EPC distribution, SAR value) [65720 SAR] |
| TOA | **Trial operation and acceptance** | 2029-05-27 → 2029-05-29 (+2d) | 2029-07-26 → 2029-07-30 (+4d) |  |  |  |
| NJF-T2020 | Trial operation (maximum 45 days) - Al Jouf | 2029-06-04 → 2029-05-29 (-6d) | 2029-07-15 → 2029-07-09 (-6d) |  | 57d → 56d | resources Contract cost (BOQ x payment milestones) [119800 SAR]; Progress weight (fair EPC distribution) [159 h] → Contract cost (BOQ x payment milestones) [119800 SAR]; Progress weight (fair EPC distribution, SAR value) [98580 SAR] |
| NJF-T3010 | Taking-over application, SAR review and handover - Al Jouf | 2029-07-16 → 2029-07-10 (-6d) | 2029-07-29 → 2029-07-30 (+1d) | 10d → 15d | 57d → 56d | resources Contract cost (BOQ x payment milestones) [102685 SAR]; Progress weight (fair EPC distribution) [159 h] → Contract cost (BOQ x payment milestones) [102685 SAR]; Progress weight (fair EPC distribution, SAR value) [98580 SAR] |
| NQR | **Al Qurayyat (NSR)** | 2028-11-23 → 2029-06-28 (+217d) | 2029-05-10 → 2029-09-17 (+130d) |  |  |  |
| NQR-T1100 | MS6 SAT complete (10%) - Al Qurayyat | 2029-07-22 → 2029-07-16 (-6d) | 2029-07-22 → 2029-07-16 (-6d) |  | 52d → 51d |  |
| NQR-T3100 | MS7 Station accepted - final acceptance and handover (10%) - Al Qurayyat | 2029-09-16 → 2029-09-17 (+1d) | 2029-09-16 → 2029-09-17 (+1d) |  | 22d → 21d |  |
| TST | **Testing and commissioning** | 2029-04-19 → 2029-06-28 (+70d) | 2029-05-30 → 2029-07-16 (+47d) |  |  |  |
| NQR-T1010 | Pre-commissioning and loop checks - Al Qurayyat | 2029-07-02 → 2029-06-28 (-4d) | 2029-07-09 → 2029-07-04 (-5d) | 6d → 5d | 22d → 21d | resources Contract cost (BOQ x payment milestones) [135957 SAR]; Progress weight (fair EPC distribution) [158 h] → Contract cost (BOQ x payment milestones) [135957 SAR]; Progress weight (fair EPC distribution, SAR value) [97960 SAR] |
| NQR-T1020 | Site acceptance test (SAT) and commissioning - Al Qurayyat | 2029-07-10 → 2029-07-05 (-5d) | 2029-07-22 → 2029-07-16 (-6d) | 9d → 8d | 22d → 21d | resources Contract cost (BOQ x payment milestones) [203935 SAR]; Progress weight (fair EPC distribution) [211 h] → Contract cost (BOQ x payment milestones) [203935 SAR]; Progress weight (fair EPC distribution, SAR value) [130820 SAR] |
| TRN | **Training** | 2029-05-31 → 2029-07-17 (+47d) | 2029-06-13 → 2029-07-30 (+47d) |  |  |  |
| NQR-T2010 | Operator and maintenance training - Al Qurayyat | 2029-07-23 → 2029-07-17 (-6d) | 2029-08-05 → 2029-07-30 (-6d) |  | 42d → 41d | resources Contract cost (BOQ x payment milestones) [50984 SAR]; Progress weight (fair EPC distribution) [105 h] → Contract cost (BOQ x payment milestones) [50984 SAR]; Progress weight (fair EPC distribution, SAR value) [65100 SAR] |
| TOA | **Trial operation and acceptance** | 2029-05-31 → 2029-07-17 (+47d) | 2029-08-01 → 2029-09-17 (+47d) |  |  |  |
| NQR-T2020 | Trial operation (maximum 45 days) - Al Qurayyat | 2029-07-23 → 2029-07-17 (-6d) | 2029-09-02 → 2029-08-27 (-6d) |  | 22d → 21d | resources Contract cost (BOQ x payment milestones) [118962 SAR]; Progress weight (fair EPC distribution) [158 h] → Contract cost (BOQ x payment milestones) [118962 SAR]; Progress weight (fair EPC distribution, SAR value) [97960 SAR] |

| ID | Task | Start | Finish | Duration | Total float | Other |
| --- | --- | --- | --- | --- | --- | --- |
| NQR-T3010 | Taking-over application, SAR review and handover - Al Qurayyat | 2029-09-03 → 2029-08-28 (-6d) | 2029-09-16 → 2029-09-17 (+1d) | 10d → 15d | 22d → 21d | resources Contract cost (BOQ x payment milestones) [101967 SAR]; Progress weight (fair EPC distribution) [158 h] → Contract cost (BOQ x payment milestones) [101967 SAR]; Progress weight (fair EPC distribution, SAR value) [97960 SAR] |

## Version 3 (data date 2026-11-01, saved 2026-10-08, file 0580_Schedule_Baseline_Rev1.xer)

Note of the change: Logic: enabling works start after the HCIS documents (FS) at every station; construction follows enabling

Last finish stays 2029-10-31.

Changed:

| ID | Task | Start | Finish | Duration | Total float | Predecessors | Other |
| --- | --- | --- | --- | --- | --- | --- | --- |
| MOB | **Mobilization and baseline programme** |  | 2027-03-28 → 2027-02-11 (-45d) |  |  |  |  |
| PRJ-A2010 | Detailed baseline programme (after mobilization) | 2027-02-07 → 2027-01-03 (-35d) | 2027-02-28 → 2027-01-21 (-38d) |  | 21d → 675d | NRY-E1010, HMK-E1010, ERY-E1010 → PRJ-M1150 | was named Detailed baseline programme (within 21 days after survey) |
| PRJ-A2020 | SAR review and approval of detailed baseline | 2027-03-01 → 2027-01-24 (-36d) | 2027-03-28 → 2027-02-11 (-45d) |  | 21d → 675d |  |  |
| PRJ-M2100 | Detailed baseline programme approved | 2027-03-28 → 2027-02-11 (-45d) | 2027-03-28 → 2027-02-11 (-45d) |  | 21d → 675d |  |  |
| PRJ-MX99 | Contract completion - end of 36-month term |  |  |  |  | PRJ-C1010, PRJ-M1250, PRJ-M0000 FS+750d → PRJ-C1010, PRJ-M1250, PRJ-M2100, PRJ-M0000 FS+750d |  |
| HJD | **Jeddah (HHR)** | 2027-03-29 → 2027-03-01 (-28d) | 2028-08-02 → 2028-07-05 (-28d) |  |  |  |  |
| HJD-E1200 | MS2 Engineering submittal complete (10%) - Jeddah | 2027-07-07 → 2027-06-09 (-28d) | 2027-07-07 → 2027-06-09 (-28d) |  | 303d → 323d |  |  |
| HJD-E1210 | MS3 Engineering approved by SAR (10%) - Jeddah | 2027-07-28 → 2027-06-30 (-28d) | 2027-07-28 → 2027-06-30 (-28d) |  | 288d → 308d |  |  |
| SRV | **Site survey and as-found verification** | 2027-03-29 → 2027-03-01 (-28d) | 2027-05-24 → 2027-04-26 (-28d) |  |  |  |  |
| SUB | **Submittal** | 2027-03-29 → 2027-03-01 (-28d) | 2027-04-26 → 2027-04-05 (-21d) |  |  |  |  |
| HJD-E1010 | Survey: submittal of site survey and as-found report - Jeddah | 2027-03-29 → 2027-03-01 (-28d) | 2027-04-26 → 2027-04-05 (-21d) |  | 288d → 308d | PRJ-A1060, PRJ-M2100 → PRJ-A1060, PRJ-M1150 FS+40d |  |
| APR | **Approval** | 2027-04-27 → 2027-04-06 (-21d) | 2027-05-24 → 2027-04-26 (-28d) |  |  |  |  |
| HJD-E1020 | Survey: SAR approval of survey report - Jeddah | 2027-04-27 → 2027-04-06 (-21d) | 2027-05-24 → 2027-04-26 (-28d) |  | 335d → 350d |  |  |
| CNC | **Concept design** | 2027-04-27 → 2027-04-06 (-21d) | 2027-06-02 → 2027-05-04 (-29d) |  |  |  |  |
| SUB | **Submittal** | 2027-04-27 → 2027-04-06 (-21d) | 2027-05-05 → 2027-04-13 (-22d) |  |  |  |  |
| HJD-E1030 | Concept design: submittal - Jeddah | 2027-04-27 → 2027-04-06 (-21d) | 2027-05-05 → 2027-04-13 (-22d) | 7d → 6d | 288d → 308d |  | resources Contract cost (BOQ x payment milestones) [93599 SAR]; Progress weight (fair EPC distribution, SAR value) [34100 SAR] → Contract cost (BOQ x payment milestones) [93599 SAR]; Progress weight (fair EPC distribution, SAR value) [31000 SAR] |
| APR | **Approval** | 2027-05-06 → 2027-04-14 (-22d) | 2027-06-02 → 2027-05-04 (-29d) |  |  |  |  |
| HJD-E1040 | Concept design: SAR review and approval - Jeddah | 2027-05-06 → 2027-04-14 (-22d) | 2027-06-02 → 2027-05-04 (-29d) |  | 328d → 344d |  | resources Contract cost (BOQ x payment milestones) [95509 SAR]; Progress weight (fair EPC distribution, SAR value) [73780 SAR] → Contract cost (BOQ x payment milestones) [95509 SAR]; Progress weight (fair EPC distribution, SAR value) [76880 SAR] |
| PRE | **Preliminary (schematic) design** | 2027-05-06 → 2027-04-14 (-22d) | 2027-06-20 → 2027-05-26 (-25d) |  |  |  |  |
| SUB | **Submittal** | 2027-05-06 → 2027-04-14 (-22d) | 2027-05-30 → 2027-04-28 (-32d) |  |  |  |  |
| HJD-E1050 | Preliminary design: submittal - Jeddah | 2027-05-06 → 2027-04-14 (-22d) | 2027-05-30 → 2027-04-28 (-32d) | 12d → 11d | 288d → 308d |  | resources Contract cost (BOQ x payment milestones) [187197 SAR]; Progress weight (fair EPC distribution, SAR value) [86180 SAR] → Contract cost (BOQ x payment milestones) [187197 SAR]; Progress weight (fair EPC distribution, SAR value) [81840 SAR] |
| APR | **Approval** | 2027-05-31 → 2027-04-29 (-32d) | 2027-06-20 → 2027-05-26 (-25d) |  |  |  |  |
| HJD-E1060 | Preliminary design: SAR review and approval - Jeddah | 2027-05-31 → 2027-04-29 (-32d) | 2027-06-20 → 2027-05-26 (-25d) |  | 316d → 333d |  | resources Contract cost (BOQ x payment milestones) [191018 SAR]; Progress weight (fair EPC distribution, SAR value) [107880 SAR] → Contract cost (BOQ x payment milestones) [191018 SAR]; Progress weight (fair EPC distribution, SAR value) [112220 SAR] |
| DET | **Detailed design** | 2027-05-31 → 2027-04-29 (-32d) | 2027-07-15 → 2027-06-20 (-25d) |  |  |  |  |
| SUB | **Submittal** | 2027-05-31 → 2027-04-29 (-32d) | 2027-06-24 → 2027-05-30 (-25d) |  |  |  |  |
| HJD-E1070 | Detailed design: submittal (drawings, BOQ, data sheets) - Jeddah | 2027-05-31 → 2027-04-29 (-32d) | 2027-06-24 → 2027-05-30 (-25d) | 19d → 17d | 288d → 308d |  | resources Contract cost (BOQ x payment milestones) [374395 SAR]; Progress weight (fair EPC distribution, SAR value) [181040 SAR] → Contract cost (BOQ x payment milestones) [374395 SAR]; Progress weight (fair EPC distribution, SAR value) [171740 SAR] |
| APR | **Approval** | 2027-06-27 → 2027-05-31 (-27d) | 2027-07-15 → 2027-06-20 (-25d) |  |  |  |  |
| HJD-E1080 | Detailed design: SAR review and approval - Jeddah | 2027-06-27 → 2027-05-31 (-27d) | 2027-07-15 → 2027-06-20 (-25d) |  | 297d → 316d |  | resources Contract cost (BOQ x payment milestones) [382035 SAR]; Progress weight (fair EPC distribution, SAR value) [142600 SAR] → Contract cost (BOQ x payment milestones) [382035 SAR]; Progress weight (fair EPC distribution, SAR value) [151900 SAR] |
| IFC | **IFC and shop drawings** | 2027-06-27 → 2027-05-31 (-27d) | 2027-07-28 → 2027-06-30 (-28d) |  |  |  |  |
| SUB | **Submittal** | 2027-06-27 → 2027-05-31 (-27d) | 2027-07-07 → 2027-06-09 (-28d) |  |  |  |  |
| HJD-E1090 | IFC and shop drawings: submittal - Jeddah | 2027-06-27 → 2027-05-31 (-27d) | 2027-07-07 → 2027-06-09 (-28d) | 9d → 8d | 288d → 308d |  | resources Contract cost (BOQ x payment milestones) [187197 SAR]; Progress weight (fair EPC distribution, SAR value) [72540 SAR] → Contract cost (BOQ x payment milestones) [187197 SAR]; Progress weight (fair EPC distribution, SAR value) [67580 SAR] |
| APR | **Approval** | 2027-07-08 → 2027-06-10 (-28d) | 2027-07-28 → 2027-06-30 (-28d) |  |  |  |  |
| HJD-E1100 | IFC and shop drawings: SAR approval and release - Jeddah | 2027-07-08 → 2027-06-10 (-28d) | 2027-07-28 → 2027-06-30 (-28d) |  | 288d → 308d |  | resources Contract cost (BOQ x payment milestones) [191018 SAR]; Progress weight (fair EPC distribution, SAR value) [121520 SAR] → Contract cost (BOQ x payment milestones) [191018 SAR]; Progress weight (fair EPC distribution, SAR value) [126480 SAR] |
| HCS | **HCIS documentation (Stage 3 and 4)** | 2027-06-09 → 2027-05-09 (-31d) | 2027-07-28 → 2027-06-30 (-28d) |  |  |  |  |
| SUB | **Submittal** | 2027-06-09 → 2027-05-09 (-31d) | 2027-07-07 → 2027-06-09 (-28d) |  |  |  |  |
| HJD-E1110 | HCIS Stage 3 and 4 documents: preparation - Jeddah | 2027-06-09 → 2027-05-09 (-31d) | 2027-07-07 → 2027-06-09 (-28d) | 21d → 19d | 288d → 308d | HJD-E1050 FS+7d, HJD-E1090 FF → HJD-E1050 FS+6d, HJD-E1090 FF | resources Contract cost (BOQ x payment milestones) [46799 SAR]; Progress weight (fair EPC distribution, SAR value) [37820 SAR] → Contract cost (BOQ x payment milestones) [46799 SAR]; Progress weight (fair EPC distribution, SAR value) [35960 SAR] |
| APR | **Approval** | 2027-07-08 → 2027-06-10 (-28d) | 2027-07-28 → 2027-06-30 (-28d) |  |  |  |  |
| HJD-E1120 | HCIS Stage 3 and 4 documents: SAR final review and HCIS submission - Jeddah | 2027-07-08 → 2027-06-10 (-28d) | 2027-07-28 → 2027-06-30 (-28d) |  | 288d → 308d |  | resources Contract cost (BOQ x payment milestones) [47754 SAR]; Progress weight (fair EPC distribution, SAR value) [26660 SAR] → Contract cost (BOQ x payment milestones) [47754 SAR]; Progress weight (fair EPC distribution, SAR value) [28520 SAR] |
| ASB | **As-built and O&M documentation** | 2028-05-17 → 2028-04-12 (-35d) | 2028-08-02 → 2028-07-05 (-28d) |  |  |  |  |
| SUB | **Submittal** | 2028-05-17 → 2028-04-12 (-35d) | 2028-07-12 → 2028-06-14 (-28d) |  |  |  |  |
| HJD-E1130 | As-built and O&M documentation: submittal - Jeddah | 2028-05-17 → 2028-04-12 (-35d) | 2028-07-12 → 2028-06-14 (-28d) |  | 288d → 308d |  |  |
| APR | **Approval** | 2028-07-13 → 2028-06-15 (-28d) | 2028-08-02 → 2028-07-05 (-28d) |  |  |  |  |
| HJD-E1140 | As-built and O&M documentation: SAR review and approval - Jeddah | 2028-07-13 → 2028-06-15 (-28d) | 2028-08-02 → 2028-07-05 (-28d) |  | 288d → 308d |  |  |
| EDM-E1010 | Survey: submittal of site survey and as-found report - Dammam |  |  |  |  | PRJ-A1060, PRJ-M2100 FS+53d → PRJ-A1060, PRJ-M1150 FS+108d |  |
| NQS-E1010 | Survey: submittal of site survey and as-found report - Al Qassim |  |  |  |  | PRJ-A1060, PRJ-M2100 FS+91d → PRJ-A1060, PRJ-M1150 FS+146d |  |
| EHF-E1010 | Survey: submittal of site survey and as-found report - Hufuf |  |  |  |  | PRJ-A1060, PRJ-M2100 FS+91d → PRJ-A1060, PRJ-M1150 FS+146d |  |
| NMJ-E1010 | Survey: submittal of site survey and as-found report - Al Majma'ah |  |  |  |  | PRJ-A1060, PRJ-M2100 FS+125d → PRJ-A1060, PRJ-M1150 FS+180d |  |
| HKA-E1010 | Survey: submittal of site survey and as-found report - KAEC |  |  |  |  | PRJ-A1060, PRJ-M2100 FS+210d → PRJ-A1060, PRJ-M1150 FS+265d |  |
| HMD-E1010 | Survey: submittal of site survey and as-found report - Madinah |  |  |  |  | PRJ-A1060, PRJ-M2100 FS+210d → PRJ-A1060, PRJ-M1150 FS+265d |  |
| EAB-E1010 | Survey: submittal of site survey and as-found report - Abqaiq |  |  |  |  | PRJ-A1060, PRJ-M2100 FS+244d → PRJ-A1060, PRJ-M1150 FS+299d |  |
| NHL-E1010 | Survey: submittal of site survey and as-found report - Hail |  |  |  |  | PRJ-A1060, PRJ-M2100 FS+261d → PRJ-A1060, PRJ-M1150 FS+316d |  |
| NJF-E1010 | Survey: submittal of site survey and as-found report - Al Jouf |  |  |  |  | PRJ-A1060, PRJ-M2100 FS+312d → PRJ-A1060, PRJ-M1150 FS+367d |  |
| NQR-E1010 | Survey: submittal of site survey and as-found report - Al Qurayyat |  |  |  |  | PRJ-A1060, PRJ-M2100 FS+346d → PRJ-A1060, PRJ-M1150 FS+401d |  |
| HJD | **Jeddah (HHR)** | 2027-07-29 → 2027-07-01 (-28d) | 2028-01-27 → 2027-12-30 (-28d) |  |  |  |  |
| HJD-P1100 | MS4 Material delivered (20%) - Jeddah | 2028-01-27 → 2027-12-30 (-28d) | 2028-01-27 → 2027-12-30 (-28d) |  | 288d → 308d |  |  |
| CCT | **CCTV system** | 2027-07-29 → 2027-07-01 (-28d) | 2027-11-18 → 2027-10-21 (-28d) |  |  |  |  |
| HJD-P1010 | Manufacture CCTV cameras and analytics - Jeddah | 2027-07-29 → 2027-07-01 (-28d) | 2027-11-18 → 2027-10-21 (-28d) |  | 288d → 308d |  |  |
| VMS | **Video management and video wall** | 2027-07-29 → 2027-07-01 (-28d) | 2027-11-18 → 2027-10-21 (-28d) |  |  |  |  |
| HJD-P1020 | Manufacture video management servers, storage and video wall - Jeddah | 2027-07-29 → 2027-07-01 (-28d) | 2027-11-18 → 2027-10-21 (-28d) |  | 288d → 308d |  |  |
| ACC | **Access control and intercom** | 2027-07-29 → 2027-07-01 (-28d) | 2027-11-18 → 2027-10-21 (-28d) |  |  |  |  |
| HJD-P1030 | Manufacture access control and intercom equipment - Jeddah | 2027-07-29 → 2027-07-01 (-28d) | 2027-11-18 → 2027-10-21 (-28d) |  | 288d → 308d |  |  |
| UPN | **UPS, network and cabinets** | 2027-07-29 → 2027-07-01 (-28d) | 2027-11-18 → 2027-10-21 (-28d) |  |  |  |  |
| HJD-P1040 | Manufacture UPS, network switches and field cabinets - Jeddah | 2027-07-29 → 2027-07-01 (-28d) | 2027-11-18 → 2027-10-21 (-28d) |  | 288d → 308d |  |  |
| LOG | **FAT and logistics** | 2027-11-21 → 2027-10-24 (-28d) | 2028-01-27 → 2027-12-30 (-28d) |  |  |  |  |
| HJD-P1050 | Factory acceptance test at vendor premises - Jeddah | 2027-11-21 → 2027-10-24 (-28d) | 2027-12-02 → 2027-11-04 (-28d) |  | 288d → 308d |  |  |
| HJD-P1060 | Shipping and customs clearance - Jeddah | 2027-12-05 → 2027-11-07 (-28d) | 2028-01-20 → 2027-12-23 (-28d) |  | 288d → 308d |  |  |
| HJD-P1070 | Delivery to station and receiving inspection - Jeddah | 2028-01-23 → 2027-12-26 (-28d) | 2028-01-27 → 2027-12-30 (-28d) |  | 288d → 308d |  |  |
| CON | **Construction** | 2027-03-01 → 2027-05-02 (+62d) |  |  |  |  |  |
| NRY | **Riyadh (Thumamah) (NSR)** | 2027-03-01 → 2027-05-02 (+62d) |  |  |  |  |  |
| ENA | **Enabling works** | 2027-03-01 → 2027-05-02 (+62d) | 2027-04-11 → 2027-06-10 (+60d) |  |  |  |  |

| ID | Task | Start | Finish | Total float | Predecessors |
| --- | --- | --- | --- | --- | --- |
| NRY-X1010 | Enabling works: site preparation, setting out, temporary works and utilities clearance - Riyadh (Thumamah) | 2027-03-01 → 2027-05-02 (+62d) | 2027-03-21 → 2027-05-13 (+53d) | 472d → 433d | PRJ-M1150 FS+40d → NRY-E1120 |
| NRY-X1020 | Enabling works: cable routes, duct-bank and cabinet plinth preparation - Riyadh (Thumamah) | 2027-03-22 → 2027-05-23 (+62d) | 2027-04-11 → 2027-06-10 (+60d) | 472d → 433d |  |
| CIV | **Civil works** | 2027-04-12 → 2027-06-13 (+62d) | 2027-08-10 → 2027-10-05 (+56d) |  |  |
| NRY-C1010 | Civil: platform trenches and duct banks - Riyadh (Thumamah) | 2027-04-12 → 2027-06-13 (+62d) | 2027-07-06 → 2027-08-30 (+55d) | 472d → 433d |  |
| NRY-C1020 | Civil: camera and ALPR pole foundations and poles - Riyadh (Thumamah) | 2027-06-09 → 2027-08-03 (+55d) | 2027-08-10 → 2027-10-05 (+56d) | 472d → 433d |  |
| HMK | **Makkah (HHR)** | 2027-03-01 → 2027-05-02 (+62d) |  |  |  |
| ENA | **Enabling works** | 2027-03-01 → 2027-05-02 (+62d) | 2027-04-11 → 2027-06-10 (+60d) |  |  |
| HMK-X1010 | Enabling works: site preparation, setting out, temporary works and utilities clearance - Makkah | 2027-03-01 → 2027-05-02 (+62d) | 2027-03-21 → 2027-05-13 (+53d) | 448d → 409d | PRJ-M1150 FS+40d → HMK-E1120 |
| HMK-X1020 | Enabling works: cable routes, duct-bank and cabinet plinth preparation - Makkah | 2027-03-22 → 2027-05-23 (+62d) | 2027-04-11 → 2027-06-10 (+60d) | 448d → 409d |  |
| CIV | **Civil works** | 2027-04-12 → 2027-06-13 (+62d) | 2027-07-21 → 2027-09-14 (+55d) |  |  |
| HMK-C1010 | Civil: platform trenches and duct banks - Makkah | 2027-04-12 → 2027-06-13 (+62d) | 2027-06-23 → 2027-08-17 (+55d) | 448d → 409d |  |
| HMK-C1020 | Civil: camera and ALPR pole foundations and poles - Makkah | 2027-06-01 → 2027-07-26 (+55d) | 2027-07-21 → 2027-09-14 (+55d) | 455d → 416d |  |
| ERY | **Riyadh (Malaz) (EWR)** | 2027-03-01 → 2027-05-02 (+62d) |  |  |  |
| ENA | **Enabling works** | 2027-03-01 → 2027-05-02 (+62d) | 2027-03-28 → 2027-05-27 (+60d) |  |  |
| ERY-X1010 | Enabling works: site preparation, setting out, temporary works and utilities clearance - Riyadh (Malaz) | 2027-03-01 → 2027-05-02 (+62d) | 2027-03-14 → 2027-05-06 (+53d) | 490d → 451d | ERY-E1010 SS+40d → ERY-E1120 |
| ERY-X1020 | Enabling works: cable routes, duct-bank and cabinet plinth preparation - Riyadh (Malaz) | 2027-03-15 → 2027-05-09 (+55d) | 2027-03-28 → 2027-05-27 (+60d) | 490d → 451d |  |
| CIV | **Civil works** | 2027-03-29 → 2027-05-30 (+62d) | 2027-07-21 → 2027-09-14 (+55d) |  |  |
| ERY-C1010 | Civil: platform trenches and duct banks - Riyadh (Malaz) | 2027-03-29 → 2027-05-30 (+62d) | 2027-06-20 → 2027-08-12 (+53d) | 490d → 451d |  |
| ERY-C1020 | Civil: camera and ALPR pole foundations and poles - Riyadh (Malaz) | 2027-05-24 → 2027-07-18 (+55d) | 2027-07-21 → 2027-09-14 (+55d) | 490d → 451d |  |
| HJD | **Jeddah (HHR)** | 2027-06-02 → 2027-07-01 (+29d) | 2028-05-16 → 2028-04-11 (-35d) |  |  |
| HJD-C2100 | MS5 Installation complete (20%) - Jeddah | 2028-05-16 → 2028-04-11 (-35d) | 2028-05-16 → 2028-04-11 (-35d) | 288d → 308d |  |
| ENA | **Enabling works** | 2027-06-02 → 2027-07-01 (+29d) | 2027-06-22 → 2027-07-21 (+29d) |  |  |
| HJD-X1010 | Enabling works: site preparation, setting out, temporary works and utilities clearance - Jeddah | 2027-06-02 → 2027-07-01 (+29d) | 2027-06-08 → 2027-07-07 (+29d) | 419d → 398d | HJD-E1010 SS+42d → HJD-E1120 |
| HJD-X1020 | Enabling works: cable routes, duct-bank and cabinet plinth preparation - Jeddah | 2027-06-09 → 2027-07-08 (+29d) | 2027-06-22 → 2027-07-21 (+29d) | 419d → 398d |  |
| CIV | **Civil works** | 2027-06-23 → 2027-07-22 (+29d) | 2027-09-19 → 2027-10-19 (+30d) |  |  |
| HJD-C1010 | Civil: platform trenches and duct banks - Jeddah | 2027-06-23 → 2027-07-22 (+29d) | 2027-08-23 → 2027-09-21 (+29d) | 419d → 398d |  |
| HJD-C1020 | Civil: camera and ALPR pole foundations and poles - Jeddah | 2027-08-02 → 2027-08-31 (+29d) | 2027-09-19 → 2027-10-19 (+30d) | 422d → 401d |  |
| INS | **Installation** | 2028-01-30 → 2028-01-02 (-28d) | 2028-05-16 → 2028-04-11 (-35d) |  |  |
| HJD-C2010 | Install UPS, network switches and field cabinets - Jeddah | 2028-01-30 → 2028-01-02 (-28d) | 2028-03-02 → 2028-01-27 (-35d) | 288d → 308d |  |
| HJD-C2020 | Cabling and termination (power, fibre, data) - Jeddah | 2028-02-08 → 2028-01-11 (-28d) | 2028-04-02 → 2028-03-05 (-28d) | 288d → 308d |  |
| HJD-C2040 | Install video management, video wall and control-room equipment - Jeddah | 2028-03-05 → 2028-01-30 (-35d) | 2028-04-05 → 2028-03-08 (-28d) | 312d → 332d |  |
| HJD-C2050 | Install access control and intercom - Jeddah | 2028-03-14 → 2028-02-08 (-35d) | 2028-04-10 → 2028-03-13 (-28d) | 309d → 329d |  |
| HJD-C2030 | Install and aim CCTV cameras - Jeddah | 2028-04-03 → 2028-03-06 (-28d) | 2028-05-16 → 2028-04-11 (-35d) | 288d → 308d |  |
| EDM | **Dammam (EWR)** | 2027-08-16 → 2027-10-17 (+62d) |  |  |  |
| ENA | **Enabling works** | 2027-08-16 → 2027-10-17 (+62d) | 2027-09-05 → 2027-11-04 (+60d) |  |  |
| EDM-X1010 | Enabling works: site preparation, setting out, temporary works and utilities clearance - Dammam | 2027-08-16 → 2027-10-17 (+62d) | 2027-08-22 → 2027-10-21 (+60d) | 380d → 337d | EDM-E1010 SS+42d → EDM-E1120 |
| EDM-X1020 | Enabling works: cable routes, duct-bank and cabinet plinth preparation - Dammam | 2027-08-23 → 2027-10-24 (+62d) | 2027-09-05 → 2027-11-04 (+60d) | 380d → 337d |  |
| CIV | **Civil works** | 2027-09-06 → 2027-11-07 (+62d) | 2027-12-23 → 2028-02-29 (+68d) |  |  |
| EDM-C1010 | Civil: platform trenches and duct banks - Dammam | 2027-09-06 → 2027-11-07 (+62d) | 2027-11-22 → 2028-01-20 (+59d) | 380d → 337d |  |
| EDM-C1020 | Civil: camera and ALPR pole foundations and poles - Dammam | 2027-10-26 → 2027-12-26 (+61d) | 2027-12-23 → 2028-02-29 (+68d) | 380d → 337d |  |
| NQS | **Al Qassim (NSR)** | 2027-10-10 → 2027-12-12 (+63d) |  |  |  |
| ENA | **Enabling works** | 2027-10-10 → 2027-12-12 (+63d) | 2027-10-28 → 2027-12-30 (+63d) |  |  |
| NQS-X1010 | Enabling works: site preparation, setting out, temporary works and utilities clearance - Al Qassim | 2027-10-10 → 2027-12-12 (+63d) | 2027-10-14 → 2027-12-16 (+63d) | 334d → 289d | NQS-E1010 SS+42d → NQS-E1120 |
| NQS-X1020 | Enabling works: cable routes, duct-bank and cabinet plinth preparation - Al Qassim | 2027-10-17 → 2027-12-19 (+63d) | 2027-10-28 → 2027-12-30 (+63d) | 334d → 289d |  |
| CIV | **Civil works** | 2027-10-31 → 2028-01-02 (+63d) | 2028-02-28 → 2028-05-08 (+70d) |  |  |
| NQS-C1010 | Civil: platform trenches and duct banks - Al Qassim | 2027-10-31 → 2028-01-02 (+63d) | 2028-01-17 → 2028-03-27 (+70d) | 334d → 289d |  |
| NQS-C1020 | Civil: camera and ALPR pole foundations and poles - Al Qassim | 2027-12-21 → 2028-02-29 (+70d) | 2028-02-28 → 2028-05-08 (+70d) | 334d → 289d |  |
| EHF | **Hufuf (EWR)** | 2027-10-10 → 2027-12-12 (+63d) |  |  |  |
| ENA | **Enabling works** | 2027-10-10 → 2027-12-12 (+63d) | 2027-10-28 → 2027-12-30 (+63d) |  |  |
| EHF-X1010 | Enabling works: site preparation, setting out, temporary works and utilities clearance - Hufuf | 2027-10-10 → 2027-12-12 (+63d) | 2027-10-14 → 2027-12-16 (+63d) | 346d → 301d | EHF-E1010 SS+42d → EHF-E1120 |
| EHF-X1020 | Enabling works: cable routes, duct-bank and cabinet plinth preparation - Hufuf | 2027-10-17 → 2027-12-19 (+63d) | 2027-10-28 → 2027-12-30 (+63d) | 346d → 301d |  |
| CIV | **Civil works** | 2027-10-31 → 2028-01-02 (+63d) | 2028-02-10 → 2028-04-20 (+70d) |  |  |
| EHF-C1010 | Civil: platform trenches and duct banks - Hufuf | 2027-10-31 → 2028-01-02 (+63d) | 2028-01-11 → 2028-03-21 (+70d) | 346d → 301d |  |
| EHF-C1020 | Civil: camera and ALPR pole foundations and poles - Hufuf | 2027-12-16 → 2028-02-17 (+63d) | 2028-02-10 → 2028-04-20 (+70d) | 346d → 301d |  |
| NMJ | **Al Majma'ah (NSR)** | 2027-11-25 → 2028-01-30 (+66d) |  |  |  |
| ENA | **Enabling works** | 2027-11-25 → 2028-01-30 (+66d) | 2027-12-15 → 2028-02-17 (+64d) |  |  |
| NMJ-X1010 | Enabling works: site preparation, setting out, temporary works and utilities clearance - Al Majma'ah | 2027-11-25 → 2028-01-30 (+66d) | 2027-12-01 → 2028-02-03 (+64d) | 300d → 254d | NMJ-E1010 SS+42d → NMJ-E1120 |
| NMJ-X1020 | Enabling works: cable routes, duct-bank and cabinet plinth preparation - Al Majma'ah | 2027-12-02 → 2028-02-06 (+66d) | 2027-12-15 → 2028-02-17 (+64d) | 300d → 254d |  |
| CIV | **Civil works** | 2027-12-16 → 2028-02-27 (+73d) | 2028-04-16 → 2028-06-26 (+71d) |  |  |
| NMJ-C1010 | Civil: platform trenches and duct banks - Al Majma'ah | 2027-12-16 → 2028-02-27 (+73d) | 2028-03-12 → 2028-05-22 (+71d) | 300d → 254d |  |
| NMJ-C1020 | Civil: camera and ALPR pole foundations and poles - Al Majma'ah | 2028-02-07 → 2028-04-18 (+71d) | 2028-04-16 → 2028-06-26 (+71d) | 300d → 254d |  |
| HKA | **KAEC (HHR)** | 2028-03-30 → 2028-05-25 (+56d) |  |  |  |
| ENA | **Enabling works** | 2028-03-30 → 2028-05-25 (+56d) | 2028-04-19 → 2028-06-14 (+56d) |  |  |
| HKA-X1010 | Enabling works: site preparation, setting out, temporary works and utilities clearance - KAEC | 2028-03-30 → 2028-05-25 (+56d) | 2028-04-05 → 2028-05-31 (+56d) | 229d → 194d | HKA-E1010 SS+42d → HKA-E1120 |
| HKA-X1020 | Enabling works: cable routes, duct-bank and cabinet plinth preparation - KAEC | 2028-04-06 → 2028-06-01 (+56d) | 2028-04-19 → 2028-06-14 (+56d) | 229d → 194d |  |
| CIV | **Civil works** | 2028-04-20 → 2028-06-15 (+56d) | 2028-06-15 → 2028-08-03 (+49d) |  |  |
| HKA-C1010 | Civil: platform trenches and duct banks - KAEC | 2028-04-20 → 2028-06-15 (+56d) | 2028-05-31 → 2028-07-19 (+49d) | 229d → 194d |  |
| HKA-C1020 | Civil: camera and ALPR pole foundations and poles - KAEC | 2028-05-21 → 2028-07-09 (+49d) | 2028-06-15 → 2028-08-03 (+49d) | 245d → 210d |  |
| HMD | **Madinah (HHR)** | 2028-03-30 → 2028-05-25 (+56d) |  |  |  |
| ENA | **Enabling works** | 2028-03-30 → 2028-05-25 (+56d) | 2028-04-19 → 2028-06-14 (+56d) |  |  |

| ID | Task | Start | Finish | Total float | Predecessors |
| --- | --- | --- | --- | --- | --- |
| HMD-X1010 | Enabling works: site preparation, setting out, temporary works and utilities clearance - Madinah | 2028-03-30 → 2028-05-25 (+56d) | 2028-04-05 → 2028-05-31 (+56d) | 220d → 185d | HMD-E1010 SS+42d → HMD-E1120 |
| HMD-X1020 | Enabling works: cable routes, duct-bank and cabinet plinth preparation - Madinah | 2028-04-06 → 2028-06-01 (+56d) | 2028-04-19 → 2028-06-14 (+56d) | 220d → 185d |  |
| CIV | **Civil works** | 2028-04-20 → 2028-06-15 (+56d) | 2028-06-27 → 2028-08-15 (+49d) |  |  |
| HMD-C1010 | Civil: platform trenches and duct banks - Madinah | 2028-04-20 → 2028-06-15 (+56d) | 2028-06-08 → 2028-07-27 (+49d) | 220d → 185d |  |
| HMD-C1020 | Civil: camera and ALPR pole foundations and poles - Madinah | 2028-05-25 → 2028-07-13 (+49d) | 2028-06-27 → 2028-08-15 (+49d) | 234d → 199d |  |
| EAB | **Abqaiq (EWR)** | 2028-05-24 → 2028-07-20 (+57d) |  |  |  |
| ENA | **Enabling works** | 2028-05-24 → 2028-07-20 (+57d) | 2028-06-13 → 2028-08-09 (+57d) |  |  |
| EAB-X1010 | Enabling works: site preparation, setting out, temporary works and utilities clearance - Abqaiq | 2028-05-24 → 2028-07-20 (+57d) | 2028-05-30 → 2028-07-26 (+57d) | 222d → 181d | EAB-E1010 SS+42d → EAB-E1120 |
| EAB-X1020 | Enabling works: cable routes, duct-bank and cabinet plinth preparation - Abqaiq | 2028-05-31 → 2028-07-27 (+57d) | 2028-06-13 → 2028-08-09 (+57d) | 222d → 181d |  |
| CIV | **Civil works** | 2028-06-14 → 2028-08-10 (+57d) | 2028-08-23 → 2028-10-19 (+57d) |  |  |
| EAB-C1010 | Civil: platform trenches and duct banks - Abqaiq | 2028-06-14 → 2028-08-10 (+57d) | 2028-08-02 → 2028-09-28 (+57d) | 222d → 181d |  |
| EAB-C1020 | Civil: camera and ALPR pole foundations and poles - Abqaiq | 2028-07-17 → 2028-09-12 (+57d) | 2028-08-23 → 2028-10-19 (+57d) | 222d → 181d |  |
| NHL | **Hail (NSR)** | 2028-06-18 → 2028-08-13 (+56d) |  |  |  |
| ENA | **Enabling works** | 2028-06-18 → 2028-08-13 (+56d) | 2028-07-06 → 2028-08-31 (+56d) |  |  |
| NHL-X1010 | Enabling works: site preparation, setting out, temporary works and utilities clearance - Hail | 2028-06-18 → 2028-08-13 (+56d) | 2028-06-22 → 2028-08-17 (+56d) | 164d → 124d | NHL-E1010 SS+42d → NHL-E1120 |
| NHL-X1020 | Enabling works: cable routes, duct-bank and cabinet plinth preparation - Hail | 2028-06-25 → 2028-08-20 (+56d) | 2028-07-06 → 2028-08-31 (+56d) | 164d → 124d |  |
| CIV | **Civil works** | 2028-07-09 → 2028-09-03 (+56d) | 2028-10-30 → 2028-12-25 (+56d) |  |  |
| NHL-C1010 | Civil: platform trenches and duct banks - Hail | 2028-07-09 → 2028-09-03 (+56d) | 2028-09-25 → 2028-11-20 (+56d) | 164d → 124d |  |
| NHL-C1020 | Civil: camera and ALPR pole foundations and poles - Hail | 2028-08-29 → 2028-10-24 (+56d) | 2028-10-30 → 2028-12-25 (+56d) | 164d → 124d |  |
| NJF | **Al Jouf (NSR)** | 2028-08-28 → 2028-10-29 (+62d) |  |  |  |
| ENA | **Enabling works** | 2028-08-28 → 2028-10-29 (+62d) | 2028-09-17 → 2028-11-16 (+60d) |  |  |
| NJF-X1010 | Enabling works: site preparation, setting out, temporary works and utilities clearance - Al Jouf | 2028-08-28 → 2028-10-29 (+62d) | 2028-09-03 → 2028-11-02 (+60d) | 113d → 69d | NJF-E1010 SS+42d → NJF-E1120 |
| NJF-X1020 | Enabling works: cable routes, duct-bank and cabinet plinth preparation - Al Jouf | 2028-09-04 → 2028-11-05 (+62d) | 2028-09-17 → 2028-11-16 (+60d) | 113d → 69d |  |
| CIV | **Civil works** | 2028-09-18 → 2028-11-19 (+62d) | 2029-01-09 → 2029-03-20 (+70d) |  |  |
| NJF-C1010 | Civil: platform trenches and duct banks - Al Jouf | 2028-09-18 → 2028-11-19 (+62d) | 2028-12-05 → 2029-02-05 (+62d) | 113d → 69d |  |
| NJF-C1020 | Civil: camera and ALPR pole foundations and poles - Al Jouf | 2028-11-08 → 2029-01-09 (+62d) | 2029-01-09 → 2029-03-20 (+70d) | 113d → 69d |  |
| NQR | **Al Qurayyat (NSR)** | 2028-10-15 → 2028-12-17 (+63d) |  |  |  |
| ENA | **Enabling works** | 2028-10-15 → 2028-12-17 (+63d) | 2028-11-02 → 2029-01-04 (+63d) |  |  |
| NQR-X1010 | Enabling works: site preparation, setting out, temporary works and utilities clearance - Al Qurayyat | 2028-10-15 → 2028-12-17 (+63d) | 2028-10-19 → 2028-12-21 (+63d) | 79d → 34d | NQR-E1010 SS+42d → NQR-E1120 |
| NQR-X1020 | Enabling works: cable routes, duct-bank and cabinet plinth preparation - Al Qurayyat | 2028-10-22 → 2028-12-24 (+63d) | 2028-11-02 → 2029-01-04 (+63d) | 79d → 34d |  |
| CIV | **Civil works** | 2028-11-05 → 2029-01-07 (+63d) | 2029-03-06 → 2029-05-15 (+70d) |  |  |
| NQR-C1010 | Civil: platform trenches and duct banks - Al Qurayyat | 2028-11-05 → 2029-01-07 (+63d) | 2029-01-22 → 2029-04-03 (+71d) | 79d → 34d |  |
| NQR-C1020 | Civil: camera and ALPR pole foundations and poles - Al Qurayyat | 2028-12-26 → 2029-03-07 (+71d) | 2029-03-06 → 2029-05-15 (+70d) | 79d → 34d |  |
| HJD | **Jeddah (HHR)** | 2028-05-17 → 2028-04-12 (-35d) | 2028-08-23 → 2028-07-26 (-28d) |  |  |
| HJD-T1100 | MS6 SAT complete (10%) - Jeddah | 2028-06-21 → 2028-05-24 (-28d) | 2028-06-21 → 2028-05-24 (-28d) | 318d → 338d |  |
| HJD-T3100 | MS7 Station accepted - final acceptance and handover (10%) - Jeddah | 2028-08-23 → 2028-07-26 (-28d) | 2028-08-23 → 2028-07-26 (-28d) | 288d → 308d |  |
| TST | **Testing and commissioning** | 2028-05-17 → 2028-04-12 (-35d) | 2028-06-21 → 2028-05-24 (-28d) |  |  |
| HJD-T1010 | Pre-commissioning and loop checks - Jeddah | 2028-05-17 → 2028-04-12 (-35d) | 2028-05-30 → 2028-04-25 (-35d) | 288d → 308d |  |
| HJD-T1020 | Site acceptance test (SAT) and commissioning - Jeddah | 2028-05-31 → 2028-04-26 (-35d) | 2028-06-21 → 2028-05-24 (-28d) | 288d → 308d |  |
| TRN | **Training** | 2028-06-22 → 2028-05-25 (-28d) | 2028-07-05 → 2028-06-07 (-28d) |  |  |
| HJD-T2010 | Operator and maintenance training - Jeddah | 2028-06-22 → 2028-05-25 (-28d) | 2028-07-05 → 2028-06-07 (-28d) | 308d → 328d |  |
| TOA | **Trial operation and acceptance** | 2028-06-22 → 2028-05-25 (-28d) | 2028-08-23 → 2028-07-26 (-28d) |  |  |
| HJD-T2020 | Trial operation (maximum 45 days) - Jeddah | 2028-06-22 → 2028-05-25 (-28d) | 2028-08-02 → 2028-07-05 (-28d) | 288d → 308d |  |
| HJD-T3010 | Taking-over application, SAR review and handover - Jeddah | 2028-08-03 → 2028-07-06 (-28d) | 2028-08-23 → 2028-07-26 (-28d) | 288d → 308d |  |

## Version 4 (data date 2026-11-01, saved 2026-10-20, file 0580_Schedule_Baseline_Rev1.xer)

Note of the change: Reflect the signed contract (1 Nov 2026): performance security 10%, taking-over 30 days, signed-contract terms on site and presentation

Last finish stays 2029-10-31.

Changed:

| ID | Task | Start | Finish | Duration | Total float | Predecessors | Other |
| --- | --- | --- | --- | --- | --- | --- | --- |
| CLO | **Closeout** | 2029-09-18 → 2029-09-13 (-5d) | 2029-10-02 → 2029-09-27 (-5d) |  |  |  |  |
| PRJ-C1010 | Contract closeout pack and handover documentation | 2029-09-18 → 2029-09-13 (-5d) | 2029-10-02 → 2029-09-27 (-5d) |  | 21d → 24d |  |  |
| ENG | **Engineering** |  | 2029-08-27 → 2029-08-13 (-14d) |  |  |  |  |
| HJD | **Jeddah (HHR)** | 2027-03-01 → 2027-02-25 (-4d) | 2028-07-05 → 2028-06-29 (-6d) |  |  |  |  |
| HJD-E1200 | MS2 Engineering submittal complete (10%) - Jeddah | 2027-06-09 → 2027-06-03 (-6d) | 2027-06-09 → 2027-06-03 (-6d) |  | 323d → 320d |  |  |
| HJD-E1210 | MS3 Engineering approved by SAR (10%) - Jeddah | 2027-06-30 → 2027-06-24 (-6d) | 2027-06-30 → 2027-06-24 (-6d) |  | 308d → 305d |  |  |
| SRV | **Site survey and as-found verification** | 2027-03-01 → 2027-02-25 (-4d) | 2027-04-26 → 2027-04-22 (-4d) |  |  |  |  |
| SUB | **Submittal** | 2027-03-01 → 2027-02-25 (-4d) | 2027-04-05 → 2027-04-01 (-4d) |  |  |  |  |
| HJD-E1010 | Survey: submittal of site survey and as-found report - Jeddah | 2027-03-01 → 2027-02-25 (-4d) | 2027-04-05 → 2027-04-01 (-4d) |  | 308d → 305d | PRJ-A1060, PRJ-M1150 FS+40d → PRJ-A1060, PRJ-M1150 FS+38d |  |
| APR | **Approval** | 2027-04-06 → 2027-04-04 (-2d) | 2027-04-26 → 2027-04-22 (-4d) |  |  |  |  |
| HJD-E1020 | Survey: SAR approval of survey report - Jeddah | 2027-04-06 → 2027-04-04 (-2d) | 2027-04-26 → 2027-04-22 (-4d) |  | 350d → 345d |  |  |
| CNC | **Concept design** | 2027-04-06 → 2027-04-04 (-2d) | 2027-05-04 → 2027-05-02 (-2d) |  |  |  |  |
| SUB | **Submittal** | 2027-04-06 → 2027-04-04 (-2d) | 2027-04-13 → 2027-04-11 (-2d) |  |  |  |  |
| HJD-E1030 | Concept design: submittal - Jeddah | 2027-04-06 → 2027-04-04 (-2d) | 2027-04-13 → 2027-04-11 (-2d) |  | 308d → 305d |  |  |
| APR | **Approval** | 2027-04-14 → 2027-04-12 (-2d) | 2027-05-04 → 2027-05-02 (-2d) |  |  |  |  |
| HJD-E1040 | Concept design: SAR review and approval - Jeddah | 2027-04-14 → 2027-04-12 (-2d) | 2027-05-04 → 2027-05-02 (-2d) |  | 344d → 339d |  |  |
| PRE | **Preliminary (schematic) design** | 2027-04-14 → 2027-04-12 (-2d) | 2027-05-26 → 2027-05-23 (-3d) |  |  |  |  |
| SUB | **Submittal** | 2027-04-14 → 2027-04-12 (-2d) | 2027-04-28 → 2027-04-25 (-3d) |  |  |  |  |
| HJD-E1050 | Preliminary design: submittal - Jeddah | 2027-04-14 → 2027-04-12 (-2d) | 2027-04-28 → 2027-04-25 (-3d) | 11d → 10d | 308d → 305d |  | resources Contract cost (BOQ x payment milestones) [187197 SAR]; Progress weight (fair EPC distribution, SAR value) [81840 SAR] → Contract cost (BOQ x payment milestones) [187197 SAR]; Progress weight (fair EPC distribution, SAR value) [77500 SAR] |
| APR | **Approval** | 2027-04-29 → 2027-04-26 (-3d) | 2027-05-26 → 2027-05-23 (-3d) |  |  |  |  |
| HJD-E1060 | Preliminary design: SAR review and approval - Jeddah | 2027-04-29 → 2027-04-26 (-3d) | 2027-05-26 → 2027-05-23 (-3d) |  | 333d → 329d |  | resources Contract cost (BOQ x payment milestones) [191018 SAR]; Progress weight (fair EPC distribution, SAR value) [112220 SAR] → Contract cost (BOQ x payment milestones) [191018 SAR]; Progress weight (fair EPC distribution, SAR value) [116560 SAR] |
| DET | **Detailed design** | 2027-04-29 → 2027-04-26 (-3d) | 2027-06-20 → 2027-06-14 (-6d) |  |  |  |  |
| SUB | **Submittal** | 2027-04-29 → 2027-04-26 (-3d) | 2027-05-30 → 2027-05-24 (-6d) |  |  |  |  |
| HJD-E1070 | Detailed design: submittal (drawings, BOQ, data sheets) - Jeddah | 2027-04-29 → 2027-04-26 (-3d) | 2027-05-30 → 2027-05-24 (-6d) | 17d → 16d | 308d → 305d |  | resources Contract cost (BOQ x payment milestones) [374395 SAR]; Progress weight (fair EPC distribution, SAR value) [171740 SAR] → Contract cost (BOQ x payment milestones) [374395 SAR]; Progress weight (fair EPC distribution, SAR value) [166780 SAR] |
| APR | **Approval** | 2027-05-31 → 2027-05-25 (-6d) | 2027-06-20 → 2027-06-14 (-6d) |  |  |  |  |
| HJD-E1080 | Detailed design: SAR review and approval - Jeddah | 2027-05-31 → 2027-05-25 (-6d) | 2027-06-20 → 2027-06-14 (-6d) |  | 316d → 313d |  | resources Contract cost (BOQ x payment milestones) [382035 SAR]; Progress weight (fair EPC distribution, SAR value) [151900 SAR] → Contract cost (BOQ x payment milestones) [382035 SAR]; Progress weight (fair EPC distribution, SAR value) [156240 SAR] |
| IFC | **IFC and shop drawings** | 2027-05-31 → 2027-05-25 (-6d) | 2027-06-30 → 2027-06-24 (-6d) |  |  |  |  |
| SUB | **Submittal** | 2027-05-31 → 2027-05-25 (-6d) | 2027-06-09 → 2027-06-03 (-6d) |  |  |  |  |
| HJD-E1090 | IFC and shop drawings: submittal - Jeddah | 2027-05-31 → 2027-05-25 (-6d) | 2027-06-09 → 2027-06-03 (-6d) |  | 308d → 305d |  |  |
| APR | **Approval** | 2027-06-10 → 2027-06-06 (-4d) | 2027-06-30 → 2027-06-24 (-6d) |  |  |  |  |
| HJD-E1100 | IFC and shop drawings: SAR approval and release - Jeddah | 2027-06-10 → 2027-06-06 (-4d) | 2027-06-30 → 2027-06-24 (-6d) |  | 308d → 305d |  |  |
| HCS | **HCIS documentation (Stage 3 and 4)** | 2027-05-09 → 2027-05-04 (-5d) | 2027-06-30 → 2027-06-24 (-6d) |  |  |  |  |
| SUB | **Submittal** | 2027-05-09 → 2027-05-04 (-5d) | 2027-06-09 → 2027-06-03 (-6d) |  |  |  |  |
| HJD-E1110 | HCIS Stage 3 and 4 documents: preparation - Jeddah | 2027-05-09 → 2027-05-04 (-5d) | 2027-06-09 → 2027-06-03 (-6d) | 19d → 18d | 308d → 305d |  | resources Contract cost (BOQ x payment milestones) [46799 SAR]; Progress weight (fair EPC distribution, SAR value) [35960 SAR] → Contract cost (BOQ x payment milestones) [46799 SAR]; Progress weight (fair EPC distribution, SAR value) [35340 SAR] |
| APR | **Approval** | 2027-06-10 → 2027-06-06 (-4d) | 2027-06-30 → 2027-06-24 (-6d) |  |  |  |  |
| HJD-E1120 | HCIS Stage 3 and 4 documents: SAR final review and HCIS submission - Jeddah | 2027-06-10 → 2027-06-06 (-4d) | 2027-06-30 → 2027-06-24 (-6d) |  | 308d → 305d |  | resources Contract cost (BOQ x payment milestones) [47754 SAR]; Progress weight (fair EPC distribution, SAR value) [28520 SAR] → Contract cost (BOQ x payment milestones) [47754 SAR]; Progress weight (fair EPC distribution, SAR value) [29140 SAR] |
| ASB | **As-built and O&M documentation** | 2028-04-12 → 2028-04-06 (-6d) | 2028-07-05 → 2028-06-29 (-6d) |  |  |  |  |
| SUB | **Submittal** | 2028-04-12 → 2028-04-06 (-6d) | 2028-06-14 → 2028-06-08 (-6d) |  |  |  |  |
| HJD-E1130 | As-built and O&M documentation: submittal - Jeddah | 2028-04-12 → 2028-04-06 (-6d) | 2028-06-14 → 2028-06-08 (-6d) |  | 308d → 305d |  |  |
| APR | **Approval** | 2028-06-15 → 2028-06-11 (-4d) | 2028-07-05 → 2028-06-29 (-6d) |  |  |  |  |
| HJD-E1140 | As-built and O&M documentation: SAR review and approval - Jeddah | 2028-06-15 → 2028-06-11 (-4d) | 2028-07-05 → 2028-06-29 (-6d) |  | 308d → 305d |  |  |
| EDM | **Dammam (EWR)** | 2027-06-17 → 2027-06-13 (-4d) | 2028-06-06 → 2028-06-04 (-2d) |  |  |  |  |
| EDM-E1200 | MS2 Engineering submittal complete (10%) - Dammam | 2027-09-22 → 2027-09-20 (-2d) | 2027-09-22 → 2027-09-20 (-2d) |  | 344d → 339d |  |  |
| EDM-E1210 | MS3 Engineering approved by SAR (10%) - Dammam | 2027-10-14 → 2027-10-12 (-2d) | 2027-10-14 → 2027-10-12 (-2d) |  | 329d → 324d |  |  |
| SRV | **Site survey and as-found verification** | 2027-06-17 → 2027-06-13 (-4d) | 2027-07-19 → 2027-07-13 (-6d) |  |  |  |  |
| SUB | **Submittal** | 2027-06-17 → 2027-06-13 (-4d) | 2027-06-28 → 2027-06-22 (-6d) |  |  |  |  |
| EDM-E1010 | Survey: submittal of site survey and as-found report - Dammam | 2027-06-17 → 2027-06-13 (-4d) | 2027-06-28 → 2027-06-22 (-6d) |  | 329d → 324d | PRJ-A1060, PRJ-M1150 FS+108d → PRJ-A1060, PRJ-M1150 FS+104d |  |
| APR | **Approval** | 2027-06-29 → 2027-06-23 (-6d) | 2027-07-19 → 2027-07-13 (-6d) |  |  |  |  |
| EDM-E1020 | Survey: SAR approval of survey report - Dammam | 2027-06-29 → 2027-06-23 (-6d) | 2027-07-19 → 2027-07-13 (-6d) |  | 391d → 388d |  |  |
| CNC | **Concept design** | 2027-06-29 → 2027-06-23 (-6d) | 2027-08-01 → 2027-07-27 (-5d) |  |  |  |  |
| SUB | **Submittal** | 2027-06-29 → 2027-06-23 (-6d) | 2027-07-11 → 2027-07-06 (-5d) |  |  |  |  |
| EDM-E1030 | Concept design: submittal - Dammam | 2027-06-29 → 2027-06-23 (-6d) | 2027-07-11 → 2027-07-06 (-5d) | 9d → 10d | 329d → 324d |  | resources Contract cost (BOQ x payment milestones) [31238 SAR]; Progress weight (fair EPC distribution, SAR value) [13640 SAR] → Contract cost (BOQ x payment milestones) [31238 SAR]; Progress weight (fair EPC distribution, SAR value) [14260 SAR] |
| APR | **Approval** | 2027-07-12 → 2027-07-07 (-5d) | 2027-08-01 → 2027-07-27 (-5d) |  |  |  |  |
| EDM-E1040 | Concept design: SAR review and approval - Dammam | 2027-07-12 → 2027-07-07 (-5d) | 2027-08-01 → 2027-07-27 (-5d) |  | 382d → 378d |  | resources Contract cost (BOQ x payment milestones) [31875 SAR]; Progress weight (fair EPC distribution, SAR value) [22320 SAR] → Contract cost (BOQ x payment milestones) [31875 SAR]; Progress weight (fair EPC distribution, SAR value) [21700 SAR] |
| PRE | **Preliminary (schematic) design** | 2027-07-12 → 2027-07-07 (-5d) | 2027-08-23 → 2027-08-18 (-5d) |  |  |  |  |
| SUB | **Submittal** | 2027-07-12 → 2027-07-07 (-5d) | 2027-08-02 → 2027-07-28 (-5d) |  |  |  |  |
| EDM-E1050 | Preliminary design: submittal - Dammam | 2027-07-12 → 2027-07-07 (-5d) | 2027-08-02 → 2027-07-28 (-5d) |  | 329d → 324d |  |  |
| APR | **Approval** | 2027-08-03 → 2027-07-29 (-5d) | 2027-08-23 → 2027-08-18 (-5d) |  |  |  |  |
| EDM-E1060 | Preliminary design: SAR review and approval - Dammam | 2027-08-03 → 2027-07-29 (-5d) | 2027-08-23 → 2027-08-18 (-5d) |  | 366d → 362d |  |  |
| DET | **Detailed design** | 2027-08-03 → 2027-07-29 (-5d) | 2027-09-28 → 2027-09-26 (-2d) |  |  |  |  |
| SUB | **Submittal** | 2027-08-03 → 2027-07-29 (-5d) | 2027-09-06 → 2027-09-02 (-4d) |  |  |  |  |
| EDM-E1070 | Detailed design: submittal (drawings, BOQ, data sheets) - Dammam | 2027-08-03 → 2027-07-29 (-5d) | 2027-09-06 → 2027-09-02 (-4d) | 25d → 26d | 329d → 324d |  | resources Contract cost (BOQ x payment milestones) [124950 SAR]; Progress weight (fair EPC distribution, SAR value) [67580 SAR] → Contract cost (BOQ x payment milestones) [124950 SAR]; Progress weight (fair EPC distribution, SAR value) [68200 SAR] |
| APR | **Approval** | 2027-09-07 → 2027-09-05 (-2d) | 2027-09-28 → 2027-09-26 (-2d) |  |  |  |  |
| EDM-E1080 | Detailed design: SAR review and approval - Dammam | 2027-09-07 → 2027-09-05 (-2d) | 2027-09-28 → 2027-09-26 (-2d) |  | 341d → 336d |  | resources Contract cost (BOQ x payment milestones) [127500 SAR]; Progress weight (fair EPC distribution, SAR value) [40300 SAR] → Contract cost (BOQ x payment milestones) [127500 SAR]; Progress weight (fair EPC distribution, SAR value) [39680 SAR] |
| IFC | **IFC and shop drawings** | 2027-09-07 → 2027-09-05 (-2d) | 2027-10-14 → 2027-10-12 (-2d) |  |  |  |  |
| SUB | **Submittal** | 2027-09-07 → 2027-09-05 (-2d) | 2027-09-22 → 2027-09-20 (-2d) |  |  |  |  |
| EDM-E1090 | IFC and shop drawings: submittal - Dammam | 2027-09-07 → 2027-09-05 (-2d) | 2027-09-22 → 2027-09-20 (-2d) |  | 329d → 324d |  |  |
| APR | **Approval** | 2027-09-26 → 2027-09-21 (-5d) | 2027-10-14 → 2027-10-12 (-2d) |  |  |  |  |
| EDM-E1100 | IFC and shop drawings: SAR approval and release - Dammam | 2027-09-26 → 2027-09-21 (-5d) | 2027-10-14 → 2027-10-12 (-2d) |  | 329d → 324d |  |  |
| HCS | **HCIS documentation (Stage 3 and 4)** | 2027-08-16 → 2027-08-12 (-4d) | 2027-10-14 → 2027-10-12 (-2d) |  |  |  |  |

| ID | Task | Start | Finish | Duration | Total float | Predecessors | Other |
| --- | --- | --- | --- | --- | --- | --- | --- |
| SUB | **Submittal** | 2027-08-16 → 2027-08-12 (-4d) | 2027-09-22 → 2027-09-20 (-2d) |  |  |  |  |
| EDM-E1110 | HCIS Stage 3 and 4 documents: preparation - Dammam | 2027-08-16 → 2027-08-12 (-4d) | 2027-09-22 → 2027-09-20 (-2d) |  | 329d → 324d | EDM-E1050 FS+9d, EDM-E1090 FF → EDM-E1050 FS+10d, EDM-E1090 FF |  |
| APR | **Approval** | 2027-09-26 → 2027-09-21 (-5d) | 2027-10-14 → 2027-10-12 (-2d) |  |  |  |  |
| EDM-E1120 | HCIS Stage 3 and 4 documents: SAR final review and HCIS submission - Dammam | 2027-09-26 → 2027-09-21 (-5d) | 2027-10-14 → 2027-10-12 (-2d) |  | 329d → 324d |  |  |
| ASB | **As-built and O&M documentation** | 2028-04-03 → 2028-03-30 (-4d) | 2028-06-06 → 2028-06-04 (-2d) |  |  |  |  |
| SUB | **Submittal** | 2028-04-03 → 2028-03-30 (-4d) | 2028-05-16 → 2028-05-14 (-2d) |  |  |  |  |
| EDM-E1130 | As-built and O&M documentation: submittal - Dammam | 2028-04-03 → 2028-03-30 (-4d) | 2028-05-16 → 2028-05-14 (-2d) |  | 329d → 324d |  |  |
| APR | **Approval** | 2028-05-17 → 2028-05-15 (-2d) | 2028-06-06 → 2028-06-04 (-2d) |  |  |  |  |
| EDM-E1140 | As-built and O&M documentation: SAR review and approval - Dammam | 2028-05-17 → 2028-05-15 (-2d) | 2028-06-06 → 2028-06-04 (-2d) |  | 329d → 324d |  |  |
| NQS | **Al Qassim (NSR)** | 2027-08-10 → 2027-08-04 (-6d) | 2028-08-20 → 2028-08-13 (-7d) |  |  |  |  |
| NQS-E1200 | MS2 Engineering submittal complete (10%) - Al Qassim | 2027-11-18 → 2027-11-11 (-7d) | 2027-11-18 → 2027-11-11 (-7d) |  | 291d → 289d |  |  |
| NQS-E1210 | MS3 Engineering approved by SAR (10%) - Al Qassim | 2027-12-09 → 2027-12-02 (-7d) | 2027-12-09 → 2027-12-02 (-7d) |  | 276d → 274d |  |  |
| SRV | **Site survey and as-found verification** | 2027-08-10 → 2027-08-04 (-6d) | 2027-09-09 → 2027-09-05 (-4d) |  |  |  |  |
| SUB | **Submittal** | 2027-08-10 → 2027-08-04 (-6d) | 2027-08-19 → 2027-08-15 (-4d) |  |  |  |  |
| NQS-E1010 | Survey: submittal of site survey and as-found report - Al Qassim | 2027-08-10 → 2027-08-04 (-6d) | 2027-08-19 → 2027-08-15 (-4d) |  | 276d → 274d | PRJ-A1060, PRJ-M1150 FS+146d → PRJ-A1060, PRJ-M1150 FS+142d |  |
| APR | **Approval** | 2027-08-22 → 2027-08-16 (-6d) | 2027-09-09 → 2027-09-05 (-4d) |  |  |  |  |
| NQS-E1020 | Survey: SAR approval of survey report - Al Qassim | 2027-08-22 → 2027-08-16 (-6d) | 2027-09-09 → 2027-09-05 (-4d) |  | 340d → 337d |  |  |
| CNC | **Concept design** | 2027-08-22 → 2027-08-16 (-6d) | 2027-09-26 → 2027-09-16 (-10d) |  |  |  |  |
| SUB | **Submittal** | 2027-08-22 → 2027-08-16 (-6d) | 2027-09-02 → 2027-08-26 (-7d) |  |  |  |  |
| NQS-E1030 | Concept design: submittal - Al Qassim | 2027-08-22 → 2027-08-16 (-6d) | 2027-09-02 → 2027-08-26 (-7d) | 10d → 9d | 276d → 274d |  | resources Contract cost (BOQ x payment milestones) [33309 SAR]; Progress weight (fair EPC distribution, SAR value) [15500 SAR] → Contract cost (BOQ x payment milestones) [33309 SAR]; Progress weight (fair EPC distribution, SAR value) [14260 SAR] |
| APR | **Approval** | 2027-09-05 → 2027-08-29 (-7d) | 2027-09-26 → 2027-09-16 (-10d) |  |  |  |  |
| NQS-E1040 | Concept design: SAR review and approval - Al Qassim | 2027-09-05 → 2027-08-29 (-7d) | 2027-09-26 → 2027-09-16 (-10d) |  | 330d → 328d |  | resources Contract cost (BOQ x payment milestones) [33989 SAR]; Progress weight (fair EPC distribution, SAR value) [22940 SAR] → Contract cost (BOQ x payment milestones) [33989 SAR]; Progress weight (fair EPC distribution, SAR value) [24180 SAR] |
| PRE | **Preliminary (schematic) design** | 2027-09-05 → 2027-08-29 (-7d) | 2027-10-18 → 2027-10-11 (-7d) |  |  |  |  |
| SUB | **Submittal** | 2027-09-05 → 2027-08-29 (-7d) | 2027-09-27 → 2027-09-19 (-8d) |  |  |  |  |
| NQS-E1050 | Preliminary design: submittal - Al Qassim | 2027-09-05 → 2027-08-29 (-7d) | 2027-09-27 → 2027-09-19 (-8d) |  | 276d → 274d |  |  |
| APR | **Approval** | 2027-09-28 → 2027-09-20 (-8d) | 2027-10-18 → 2027-10-11 (-7d) |  |  |  |  |
| NQS-E1060 | Preliminary design: SAR review and approval - Al Qassim | 2027-09-28 → 2027-09-20 (-8d) | 2027-10-18 → 2027-10-11 (-7d) |  | 314d → 312d |  |  |
| DET | **Detailed design** | 2027-09-28 → 2027-09-20 (-8d) | 2027-11-23 → 2027-11-15 (-8d) |  |  |  |  |
| SUB | **Submittal** | 2027-09-28 → 2027-09-20 (-8d) | 2027-11-02 → 2027-10-25 (-8d) |  |  |  |  |
| NQS-E1070 | Detailed design: submittal (drawings, BOQ, data sheets) - Al Qassim | 2027-09-28 → 2027-09-20 (-8d) | 2027-11-02 → 2027-10-25 (-8d) | 26d → 25d | 276d → 274d |  | resources Contract cost (BOQ x payment milestones) [133238 SAR]; Progress weight (fair EPC distribution, SAR value) [73160 SAR] → Contract cost (BOQ x payment milestones) [133238 SAR]; Progress weight (fair EPC distribution, SAR value) [71920 SAR] |
| APR | **Approval** | 2027-11-03 → 2027-10-26 (-8d) | 2027-11-23 → 2027-11-15 (-8d) |  |  |  |  |
| NQS-E1080 | Detailed design: SAR review and approval - Al Qassim | 2027-11-03 → 2027-10-26 (-8d) | 2027-11-23 → 2027-11-15 (-8d) |  | 288d → 287d |  | resources Contract cost (BOQ x payment milestones) [135957 SAR]; Progress weight (fair EPC distribution, SAR value) [42160 SAR] → Contract cost (BOQ x payment milestones) [135957 SAR]; Progress weight (fair EPC distribution, SAR value) [43400 SAR] |
| IFC | **IFC and shop drawings** | 2027-11-03 → 2027-10-26 (-8d) | 2027-12-09 → 2027-12-02 (-7d) |  |  |  |  |
| SUB | **Submittal** | 2027-11-03 → 2027-10-26 (-8d) | 2027-11-18 → 2027-11-11 (-7d) |  |  |  |  |
| NQS-E1090 | IFC and shop drawings: submittal - Al Qassim | 2027-11-03 → 2027-10-26 (-8d) | 2027-11-18 → 2027-11-11 (-7d) | 12d → 13d | 276d → 274d |  | resources Contract cost (BOQ x payment milestones) [66619 SAR]; Progress weight (fair EPC distribution, SAR value) [31000 SAR] → Contract cost (BOQ x payment milestones) [66619 SAR]; Progress weight (fair EPC distribution, SAR value) [32240 SAR] |
| APR | **Approval** | 2027-11-21 → 2027-11-14 (-7d) | 2027-12-09 → 2027-12-02 (-7d) |  |  |  |  |
| NQS-E1100 | IFC and shop drawings: SAR approval and release - Al Qassim | 2027-11-21 → 2027-11-14 (-7d) | 2027-12-09 → 2027-12-02 (-7d) |  | 276d → 274d |  | resources Contract cost (BOQ x payment milestones) [67978 SAR]; Progress weight (fair EPC distribution, SAR value) [38440 SAR] → Contract cost (BOQ x payment milestones) [67978 SAR]; Progress weight (fair EPC distribution, SAR value) [37200 SAR] |
| HCS | **HCIS documentation (Stage 3 and 4)** | 2027-10-12 → 2027-10-04 (-8d) | 2027-12-09 → 2027-12-02 (-7d) |  |  |  |  |
| SUB | **Submittal** | 2027-10-12 → 2027-10-04 (-8d) | 2027-11-18 → 2027-11-11 (-7d) |  |  |  |  |
| NQS-E1110 | HCIS Stage 3 and 4 documents: preparation - Al Qassim | 2027-10-12 → 2027-10-04 (-8d) | 2027-11-18 → 2027-11-11 (-7d) | 28d → 29d | 276d → 274d | NQS-E1050 FS+10d, NQS-E1090 FF → NQS-E1050 FS+9d, NQS-E1090 FF |  |
| APR | **Approval** | 2027-11-21 → 2027-11-14 (-7d) | 2027-12-09 → 2027-12-02 (-7d) |  |  |  |  |
| NQS-E1120 | HCIS Stage 3 and 4 documents: SAR final review and HCIS submission - Al Qassim | 2027-11-21 → 2027-11-14 (-7d) | 2027-12-09 → 2027-12-02 (-7d) |  | 276d → 274d |  |  |
| ASB | **As-built and O&M documentation** | 2028-06-21 → 2028-06-14 (-7d) | 2028-08-20 → 2028-08-13 (-7d) |  |  |  |  |
| SUB | **Submittal** | 2028-06-21 → 2028-06-14 (-7d) | 2028-07-30 → 2028-07-23 (-7d) |  |  |  |  |
| NQS-E1130 | As-built and O&M documentation: submittal - Al Qassim | 2028-06-21 → 2028-06-14 (-7d) | 2028-07-30 → 2028-07-23 (-7d) |  | 276d → 274d |  |  |
| APR | **Approval** | 2028-07-31 → 2028-07-24 (-7d) | 2028-08-20 → 2028-08-13 (-7d) |  |  |  |  |
| NQS-E1140 | As-built and O&M documentation: SAR review and approval - Al Qassim | 2028-07-31 → 2028-07-24 (-7d) | 2028-08-20 → 2028-08-13 (-7d) |  | 276d → 274d |  |  |
| EHF | **Hufuf (EWR)** | 2027-08-10 → 2027-08-04 (-6d) | 2028-07-26 → 2028-07-19 (-7d) |  |  |  |  |
| EHF-E1200 | MS2 Engineering submittal complete (10%) - Hufuf | 2027-11-18 → 2027-11-11 (-7d) | 2027-11-18 → 2027-11-11 (-7d) |  | 308d → 306d |  |  |
| EHF-E1210 | MS3 Engineering approved by SAR (10%) - Hufuf | 2027-12-09 → 2027-12-02 (-7d) | 2027-12-09 → 2027-12-02 (-7d) |  | 293d → 291d |  |  |
| SRV | **Site survey and as-found verification** | 2027-08-10 → 2027-08-04 (-6d) | 2027-09-09 → 2027-09-05 (-4d) |  |  |  |  |
| SUB | **Submittal** | 2027-08-10 → 2027-08-04 (-6d) | 2027-08-19 → 2027-08-15 (-4d) |  |  |  |  |
| EHF-E1010 | Survey: submittal of site survey and as-found report - Hufuf | 2027-08-10 → 2027-08-04 (-6d) | 2027-08-19 → 2027-08-15 (-4d) |  | 293d → 291d | PRJ-A1060, PRJ-M1150 FS+146d → PRJ-A1060, PRJ-M1150 FS+142d |  |
| APR | **Approval** | 2027-08-22 → 2027-08-16 (-6d) | 2027-09-09 → 2027-09-05 (-4d) |  |  |  |  |
| EHF-E1020 | Survey: SAR approval of survey report - Hufuf | 2027-08-22 → 2027-08-16 (-6d) | 2027-09-09 → 2027-09-05 (-4d) |  | 357d → 354d |  |  |
| CNC | **Concept design** | 2027-08-22 → 2027-08-16 (-6d) | 2027-09-26 → 2027-09-16 (-10d) |  |  |  |  |
| SUB | **Submittal** | 2027-08-22 → 2027-08-16 (-6d) | 2027-09-02 → 2027-08-26 (-7d) |  |  |  |  |
| EHF-E1030 | Concept design: submittal - Hufuf | 2027-08-22 → 2027-08-16 (-6d) | 2027-09-02 → 2027-08-26 (-7d) | 10d → 9d | 293d → 291d |  | resources Contract cost (BOQ x payment milestones) [27719 SAR]; Progress weight (fair EPC distribution, SAR value) [13020 SAR] → Contract cost (BOQ x payment milestones) [27719 SAR]; Progress weight (fair EPC distribution, SAR value) [11780 SAR] |
| APR | **Approval** | 2027-09-05 → 2027-08-29 (-7d) | 2027-09-26 → 2027-09-16 (-10d) |  |  |  |  |
| EHF-E1040 | Concept design: SAR review and approval - Hufuf | 2027-09-05 → 2027-08-29 (-7d) | 2027-09-26 → 2027-09-16 (-10d) |  | 347d → 345d |  | resources Contract cost (BOQ x payment milestones) [28285 SAR]; Progress weight (fair EPC distribution, SAR value) [19220 SAR] → Contract cost (BOQ x payment milestones) [28285 SAR]; Progress weight (fair EPC distribution, SAR value) [19840 SAR] |
| PRE | **Preliminary (schematic) design** | 2027-09-05 → 2027-08-29 (-7d) | 2027-10-18 → 2027-10-11 (-7d) |  |  |  |  |
| SUB | **Submittal** | 2027-09-05 → 2027-08-29 (-7d) | 2027-09-27 → 2027-09-19 (-8d) |  |  |  |  |
| EHF-E1050 | Preliminary design: submittal - Hufuf | 2027-09-05 → 2027-08-29 (-7d) | 2027-09-27 → 2027-09-19 (-8d) |  | 293d → 291d |  |  |
| APR | **Approval** | 2027-09-28 → 2027-09-20 (-8d) | 2027-10-18 → 2027-10-11 (-7d) |  |  |  |  |
| EHF-E1060 | Preliminary design: SAR review and approval - Hufuf | 2027-09-28 → 2027-09-20 (-8d) | 2027-10-18 → 2027-10-11 (-7d) |  | 331d → 329d |  |  |
| DET | **Detailed design** | 2027-09-28 → 2027-09-20 (-8d) | 2027-11-23 → 2027-11-15 (-8d) |  |  |  |  |
| SUB | **Submittal** | 2027-09-28 → 2027-09-20 (-8d) | 2027-11-02 → 2027-10-25 (-8d) |  |  |  |  |
| EHF-E1070 | Detailed design: submittal (drawings, BOQ, data sheets) - Hufuf | 2027-09-28 → 2027-09-20 (-8d) | 2027-11-02 → 2027-10-25 (-8d) | 26d → 25d | 293d → 291d |  | resources Contract cost (BOQ x payment milestones) [110877 SAR]; Progress weight (fair EPC distribution, SAR value) [60760 SAR] → Contract cost (BOQ x payment milestones) [110877 SAR]; Progress weight (fair EPC distribution, SAR value) [60140 SAR] |
| APR | **Approval** | 2027-11-03 → 2027-10-26 (-8d) | 2027-11-23 → 2027-11-15 (-8d) |  |  |  |  |
| EHF-E1080 | Detailed design: SAR review and approval - Hufuf | 2027-11-03 → 2027-10-26 (-8d) | 2027-11-23 → 2027-11-15 (-8d) |  | 305d → 304d |  | resources Contract cost (BOQ x payment milestones) [113140 SAR]; Progress weight (fair EPC distribution, SAR value) [35340 SAR] → Contract cost (BOQ x payment milestones) [113140 SAR]; Progress weight (fair EPC distribution, SAR value) [35960 SAR] |

| ID | Task | Start | Finish | Duration | Total float | Predecessors | Other |
| --- | --- | --- | --- | --- | --- | --- | --- |
| IFC | **IFC and shop drawings** | 2027-11-03 → 2027-10-26 (-8d) | 2027-12-09 → 2027-12-02 (-7d) |  |  |  |  |
| SUB | **Submittal** | 2027-11-03 → 2027-10-26 (-8d) | 2027-11-18 → 2027-11-11 (-7d) |  |  |  |  |
| EHF-E1090 | IFC and shop drawings: submittal - Hufuf | 2027-11-03 → 2027-10-26 (-8d) | 2027-11-18 → 2027-11-11 (-7d) | 12d → 13d | 293d → 291d |  | resources Contract cost (BOQ x payment milestones) [55439 SAR]; Progress weight (fair EPC distribution, SAR value) [25420 SAR] → Contract cost (BOQ x payment milestones) [55439 SAR]; Progress weight (fair EPC distribution, SAR value) [26660 SAR] |
| APR | **Approval** | 2027-11-21 → 2027-11-14 (-7d) | 2027-12-09 → 2027-12-02 (-7d) |  |  |  |  |
| EHF-E1100 | IFC and shop drawings: SAR approval and release - Hufuf | 2027-11-21 → 2027-11-14 (-7d) | 2027-12-09 → 2027-12-02 (-7d) |  | 293d → 291d |  | resources Contract cost (BOQ x payment milestones) [56570 SAR]; Progress weight (fair EPC distribution, SAR value) [32240 SAR] → Contract cost (BOQ x payment milestones) [56570 SAR]; Progress weight (fair EPC distribution, SAR value) [31000 SAR] |
| HCS | **HCIS documentation (Stage 3 and 4)** | 2027-10-12 → 2027-10-04 (-8d) | 2027-12-09 → 2027-12-02 (-7d) |  |  |  |  |
| SUB | **Submittal** | 2027-10-12 → 2027-10-04 (-8d) | 2027-11-18 → 2027-11-11 (-7d) |  |  |  |  |
| EHF-E1110 | HCIS Stage 3 and 4 documents: preparation - Hufuf | 2027-10-12 → 2027-10-04 (-8d) | 2027-11-18 → 2027-11-11 (-7d) | 28d → 29d | 293d → 291d | EHF-E1050 FS+10d, EHF-E1090 FF → EHF-E1050 FS+9d, EHF-E1090 FF |  |
| APR | **Approval** | 2027-11-21 → 2027-11-14 (-7d) | 2027-12-09 → 2027-12-02 (-7d) |  |  |  |  |
| EHF-E1120 | HCIS Stage 3 and 4 documents: SAR final review and HCIS submission - Hufuf | 2027-11-21 → 2027-11-14 (-7d) | 2027-12-09 → 2027-12-02 (-7d) |  | 293d → 291d |  |  |
| ASB | **As-built and O&M documentation** | 2028-05-30 → 2028-05-23 (-7d) | 2028-07-26 → 2028-07-19 (-7d) |  |  |  |  |
| SUB | **Submittal** | 2028-05-30 → 2028-05-23 (-7d) | 2028-07-05 → 2028-06-28 (-7d) |  |  |  |  |
| EHF-E1130 | As-built and O&M documentation: submittal - Hufuf | 2028-05-30 → 2028-05-23 (-7d) | 2028-07-05 → 2028-06-28 (-7d) |  | 293d → 291d |  |  |
| APR | **Approval** | 2028-07-06 → 2028-06-29 (-7d) | 2028-07-26 → 2028-07-19 (-7d) |  |  |  |  |
| EHF-E1140 | As-built and O&M documentation: SAR review and approval - Hufuf | 2028-07-06 → 2028-06-29 (-7d) | 2028-07-26 → 2028-07-19 (-7d) |  | 293d → 291d |  |  |
| NMJ | **Al Majma'ah (NSR)** | 2027-09-28 → 2027-09-20 (-8d) | 2028-10-08 → 2028-09-28 (-10d) |  |  |  |  |
| NMJ-E1200 | MS2 Engineering submittal complete (10%) - Al Majma'ah | 2028-01-06 → 2027-12-29 (-8d) | 2028-01-06 → 2027-12-29 (-8d) |  | 256d → 255d |  |  |
| NMJ-E1210 | MS3 Engineering approved by SAR (10%) - Al Majma'ah | 2028-01-27 → 2028-01-19 (-8d) | 2028-01-27 → 2028-01-19 (-8d) |  | 241d → 240d |  |  |
| SRV | **Site survey and as-found verification** | 2027-09-28 → 2027-09-20 (-8d) | 2027-10-28 → 2027-10-21 (-7d) |  |  |  |  |
| SUB | **Submittal** | 2027-09-28 → 2027-09-20 (-8d) | 2027-10-07 → 2027-09-30 (-7d) |  |  |  |  |
| NMJ-E1010 | Survey: submittal of site survey and as-found report - Al Majma'ah | 2027-09-28 → 2027-09-20 (-8d) | 2027-10-07 → 2027-09-30 (-7d) |  | 241d → 240d | PRJ-A1060, PRJ-M1150 FS+180d → PRJ-A1060, PRJ-M1150 FS+175d |  |
| APR | **Approval** | 2027-10-10 → 2027-10-03 (-7d) | 2027-10-28 → 2027-10-21 (-7d) |  |  |  |  |
| NMJ-E1020 | Survey: SAR approval of survey report - Al Majma'ah | 2027-10-10 → 2027-10-03 (-7d) | 2027-10-28 → 2027-10-21 (-7d) |  | 306d → 304d |  |  |
| CNC | **Concept design** | 2027-10-10 → 2027-10-03 (-7d) | 2027-11-11 → 2027-11-04 (-7d) |  |  |  |  |
| SUB | **Submittal** | 2027-10-10 → 2027-10-03 (-7d) | 2027-10-21 → 2027-10-14 (-7d) |  |  |  |  |
| NMJ-E1030 | Concept design: submittal - Al Majma'ah | 2027-10-10 → 2027-10-03 (-7d) | 2027-10-21 → 2027-10-14 (-7d) |  | 241d → 240d |  |  |
| APR | **Approval** | 2027-10-24 → 2027-10-17 (-7d) | 2027-11-11 → 2027-11-04 (-7d) |  |  |  |  |
| NMJ-E1040 | Concept design: SAR review and approval - Al Majma'ah | 2027-10-24 → 2027-10-17 (-7d) | 2027-11-11 → 2027-11-04 (-7d) |  | 296d → 294d |  |  |
| PRE | **Preliminary (schematic) design** | 2027-10-24 → 2027-10-17 (-7d) | 2027-12-05 → 2027-11-28 (-7d) |  |  |  |  |
| SUB | **Submittal** | 2027-10-24 → 2027-10-17 (-7d) | 2027-11-14 → 2027-11-07 (-7d) |  |  |  |  |
| NMJ-E1050 | Preliminary design: submittal - Al Majma'ah | 2027-10-24 → 2027-10-17 (-7d) | 2027-11-14 → 2027-11-07 (-7d) |  | 241d → 240d |  |  |
| APR | **Approval** | 2027-11-15 → 2027-11-08 (-7d) | 2027-12-05 → 2027-11-28 (-7d) |  |  |  |  |
| NMJ-E1060 | Preliminary design: SAR review and approval - Al Majma'ah | 2027-11-15 → 2027-11-08 (-7d) | 2027-12-05 → 2027-11-28 (-7d) |  | 280d → 278d |  |  |
| DET | **Detailed design** | 2027-11-15 → 2027-11-08 (-7d) | 2028-01-10 → 2028-01-03 (-7d) |  |  |  |  |
| SUB | **Submittal** | 2027-11-15 → 2027-11-08 (-7d) | 2027-12-20 → 2027-12-13 (-7d) |  |  |  |  |
| NMJ-E1070 | Detailed design: submittal (drawings, BOQ, data sheets) - Al Majma'ah | 2027-11-15 → 2027-11-08 (-7d) | 2027-12-20 → 2027-12-13 (-7d) |  | 241d → 240d |  |  |
| APR | **Approval** | 2027-12-21 → 2027-12-14 (-7d) | 2028-01-10 → 2028-01-03 (-7d) |  |  |  |  |
| NMJ-E1080 | Detailed design: SAR review and approval - Al Majma'ah | 2027-12-21 → 2027-12-14 (-7d) | 2028-01-10 → 2028-01-03 (-7d) |  | 254d → 252d |  |  |
| IFC | **IFC and shop drawings** | 2027-12-21 → 2027-12-14 (-7d) | 2028-01-27 → 2028-01-19 (-8d) |  |  |  |  |
| SUB | **Submittal** | 2027-12-21 → 2027-12-14 (-7d) | 2028-01-06 → 2027-12-29 (-8d) |  |  |  |  |
| NMJ-E1090 | IFC and shop drawings: submittal - Al Majma'ah | 2027-12-21 → 2027-12-14 (-7d) | 2028-01-06 → 2027-12-29 (-8d) | 13d → 12d | 241d → 240d |  | resources Contract cost (BOQ x payment milestones) [66619 SAR]; Progress weight (fair EPC distribution, SAR value) [32240 SAR] → Contract cost (BOQ x payment milestones) [66619 SAR]; Progress weight (fair EPC distribution, SAR value) [31000 SAR] |
| APR | **Approval** | 2028-01-09 → 2027-12-30 (-10d) | 2028-01-27 → 2028-01-19 (-8d) |  |  |  |  |
| NMJ-E1100 | IFC and shop drawings: SAR approval and release - Al Majma'ah | 2028-01-09 → 2027-12-30 (-10d) | 2028-01-27 → 2028-01-19 (-8d) |  | 241d → 240d |  | resources Contract cost (BOQ x payment milestones) [67978 SAR]; Progress weight (fair EPC distribution, SAR value) [37200 SAR] → Contract cost (BOQ x payment milestones) [67978 SAR]; Progress weight (fair EPC distribution, SAR value) [38440 SAR] |
| HCS | **HCIS documentation (Stage 3 and 4)** | 2027-11-29 → 2027-11-22 (-7d) | 2028-01-27 → 2028-01-19 (-8d) |  |  |  |  |
| SUB | **Submittal** | 2027-11-29 → 2027-11-22 (-7d) | 2028-01-06 → 2027-12-29 (-8d) |  |  |  |  |
| NMJ-E1110 | HCIS Stage 3 and 4 documents: preparation - Al Majma'ah | 2027-11-29 → 2027-11-22 (-7d) | 2028-01-06 → 2027-12-29 (-8d) | 29d → 28d | 241d → 240d |  |  |
| APR | **Approval** | 2028-01-09 → 2027-12-30 (-10d) | 2028-01-27 → 2028-01-19 (-8d) |  |  |  |  |
| NMJ-E1120 | HCIS Stage 3 and 4 documents: SAR final review and HCIS submission - Al Majma'ah | 2028-01-09 → 2027-12-30 (-10d) | 2028-01-27 → 2028-01-19 (-8d) |  | 241d → 240d |  |  |
| ASB | **As-built and O&M documentation** | 2028-08-09 → 2028-08-01 (-8d) | 2028-10-08 → 2028-09-28 (-10d) |  |  |  |  |
| SUB | **Submittal** | 2028-08-09 → 2028-08-01 (-8d) | 2028-09-17 → 2028-09-07 (-10d) |  |  |  |  |
| NMJ-E1130 | As-built and O&M documentation: submittal - Al Majma'ah | 2028-08-09 → 2028-08-01 (-8d) | 2028-09-17 → 2028-09-07 (-10d) |  | 241d → 240d |  |  |
| APR | **Approval** | 2028-09-18 → 2028-09-10 (-8d) | 2028-10-08 → 2028-09-28 (-10d) |  |  |  |  |
| NMJ-E1140 | As-built and O&M documentation: SAR review and approval - Al Majma'ah | 2028-09-18 → 2028-09-10 (-8d) | 2028-10-08 → 2028-09-28 (-10d) |  | 241d → 240d |  |  |
| HKA | **KAEC (HHR)** | 2028-01-25 → 2028-01-16 (-9d) | 2029-04-05 → 2029-03-27 (-9d) |  |  |  |  |
| HKA-E1200 | MS2 Engineering submittal complete (10%) - KAEC | 2028-04-26 → 2028-04-17 (-9d) | 2028-04-26 → 2028-04-17 (-9d) |  |  |  |  |
| HKA-E1210 | MS3 Engineering approved by SAR (10%) - KAEC | 2028-05-24 → 2028-05-15 (-9d) | 2028-05-24 → 2028-05-15 (-9d) |  |  |  |  |
| SRV | **Site survey and as-found verification** | 2028-01-25 → 2028-01-16 (-9d) | 2028-03-13 → 2028-03-02 (-11d) |  |  |  |  |
| SUB | **Submittal** | 2028-01-25 → 2028-01-16 (-9d) | 2028-02-14 → 2028-02-03 (-11d) |  |  |  |  |
| HKA-E1010 | Survey: submittal of site survey and as-found report - KAEC | 2028-01-25 → 2028-01-16 (-9d) | 2028-02-14 → 2028-02-03 (-11d) |  |  | PRJ-A1060, PRJ-M1150 FS+265d → PRJ-A1060, PRJ-M1150 FS+258d |  |
| APR | **Approval** | 2028-02-15 → 2028-02-06 (-9d) | 2028-03-13 → 2028-03-02 (-11d) |  |  |  |  |
| HKA-E1020 | Survey: SAR approval of survey report - KAEC | 2028-02-15 → 2028-02-06 (-9d) | 2028-03-13 → 2028-03-02 (-11d) |  |  |  |  |
| CNC | **Concept design** | 2028-02-15 → 2028-02-06 (-9d) | 2028-03-22 → 2028-03-13 (-9d) |  |  |  |  |
| SUB | **Submittal** | 2028-02-15 → 2028-02-06 (-9d) | 2028-03-01 → 2028-02-14 (-16d) |  |  |  |  |
| HKA-E1030 | Concept design: submittal - KAEC | 2028-02-15 → 2028-02-06 (-9d) | 2028-03-01 → 2028-02-14 (-16d) |  |  |  |  |
| APR | **Approval** | 2028-03-02 → 2028-02-15 (-16d) | 2028-03-22 → 2028-03-13 (-9d) |  |  |  |  |
| HKA-E1040 | Concept design: SAR review and approval - KAEC | 2028-03-02 → 2028-02-15 (-16d) | 2028-03-22 → 2028-03-13 (-9d) |  |  |  |  |
| PRE | **Preliminary (schematic) design** | 2028-03-02 → 2028-02-15 (-16d) | 2028-04-09 → 2028-03-29 (-11d) |  |  |  |  |
| SUB | **Submittal** | 2028-03-02 → 2028-02-15 (-16d) | 2028-03-19 → 2028-03-08 (-11d) |  |  |  |  |
| HKA-E1050 | Preliminary design: submittal - KAEC | 2028-03-02 → 2028-02-15 (-16d) | 2028-03-19 → 2028-03-08 (-11d) |  |  |  |  |
| APR | **Approval** | 2028-03-20 → 2028-03-09 (-11d) | 2028-04-09 → 2028-03-29 (-11d) |  |  |  |  |

| ID | Task | Start | Finish | Total float | Predecessors |
| --- | --- | --- | --- | --- | --- |
| HKA-E1060 | Preliminary design: SAR review and approval - KAEC | 2028-03-20 → 2028-03-09 (-11d) | 2028-04-09 → 2028-03-29 (-11d) |  |  |
| DET | **Detailed design** | 2028-03-20 → 2028-03-09 (-11d) | 2028-05-11 → 2028-04-25 (-16d) |  |  |
| SUB | **Submittal** | 2028-03-20 → 2028-03-09 (-11d) | 2028-04-13 → 2028-04-04 (-9d) |  |  |
| HKA-E1070 | Detailed design: submittal (drawings, BOQ, data sheets) - KAEC | 2028-03-20 → 2028-03-09 (-11d) | 2028-04-13 → 2028-04-04 (-9d) |  |  |
| APR | **Approval** | 2028-04-16 → 2028-04-05 (-11d) | 2028-05-11 → 2028-04-25 (-16d) |  |  |
| HKA-E1080 | Detailed design: SAR review and approval - KAEC | 2028-04-16 → 2028-04-05 (-11d) | 2028-05-11 → 2028-04-25 (-16d) |  |  |
| IFC | **IFC and shop drawings** | 2028-04-16 → 2028-04-05 (-11d) | 2028-05-24 → 2028-05-15 (-9d) |  |  |
| SUB | **Submittal** | 2028-04-16 → 2028-04-05 (-11d) | 2028-04-26 → 2028-04-17 (-9d) |  |  |
| HKA-E1090 | IFC and shop drawings: submittal - KAEC | 2028-04-16 → 2028-04-05 (-11d) | 2028-04-26 → 2028-04-17 (-9d) |  |  |
| APR | **Approval** | 2028-04-27 → 2028-04-18 (-9d) | 2028-05-24 → 2028-05-15 (-9d) |  |  |
| HKA-E1100 | IFC and shop drawings: SAR approval and release - KAEC | 2028-04-27 → 2028-04-18 (-9d) | 2028-05-24 → 2028-05-15 (-9d) |  |  |
| HCS | **HCIS documentation (Stage 3 and 4)** | 2028-03-29 → 2028-03-20 (-9d) | 2028-05-24 → 2028-05-15 (-9d) |  |  |
| SUB | **Submittal** | 2028-03-29 → 2028-03-20 (-9d) | 2028-04-26 → 2028-04-17 (-9d) |  |  |
| HKA-E1110 | HCIS Stage 3 and 4 documents: preparation - KAEC | 2028-03-29 → 2028-03-20 (-9d) | 2028-04-26 → 2028-04-17 (-9d) |  |  |
| APR | **Approval** | 2028-04-27 → 2028-04-18 (-9d) | 2028-05-24 → 2028-05-15 (-9d) |  |  |
| HKA-E1120 | HCIS Stage 3 and 4 documents: SAR final review and HCIS submission - KAEC | 2028-04-27 → 2028-04-18 (-9d) | 2028-05-24 → 2028-05-15 (-9d) |  |  |
| ASB | **As-built and O&M documentation** | 2029-01-18 → 2029-01-09 (-9d) | 2029-04-05 → 2029-03-27 (-9d) |  |  |
| SUB | **Submittal** | 2029-01-18 → 2029-01-09 (-9d) | 2029-03-15 → 2029-03-06 (-9d) |  |  |
| HKA-E1130 | As-built and O&M documentation: submittal - KAEC | 2029-01-18 → 2029-01-09 (-9d) | 2029-03-15 → 2029-03-06 (-9d) |  |  |
| APR | **Approval** | 2029-03-18 → 2029-03-07 (-11d) | 2029-04-05 → 2029-03-27 (-9d) |  |  |
| HKA-E1140 | As-built and O&M documentation: SAR review and approval - KAEC | 2029-03-18 → 2029-03-07 (-11d) | 2029-04-05 → 2029-03-27 (-9d) |  |  |
| HMD | **Madinah (HHR)** | 2028-01-25 → 2028-01-16 (-9d) | 2029-04-11 → 2029-04-02 (-9d) |  |  |
| HMD-E1200 | MS2 Engineering submittal complete (10%) - Madinah | 2028-04-26 → 2028-04-17 (-9d) | 2028-04-26 → 2028-04-17 (-9d) |  |  |
| HMD-E1210 | MS3 Engineering approved by SAR (10%) - Madinah | 2028-05-24 → 2028-05-15 (-9d) | 2028-05-24 → 2028-05-15 (-9d) |  |  |
| SRV | **Site survey and as-found verification** | 2028-01-25 → 2028-01-16 (-9d) | 2028-03-14 → 2028-03-05 (-9d) |  |  |
| SUB | **Submittal** | 2028-01-25 → 2028-01-16 (-9d) | 2028-02-15 → 2028-02-06 (-9d) |  |  |
| HMD-E1010 | Survey: submittal of site survey and as-found report - Madinah | 2028-01-25 → 2028-01-16 (-9d) | 2028-02-15 → 2028-02-06 (-9d) |  | PRJ-A1060, PRJ-M1150 FS+265d → PRJ-A1060, PRJ-M1150 FS+258d |
| APR | **Approval** | 2028-02-16 → 2028-02-07 (-9d) | 2028-03-14 → 2028-03-05 (-9d) |  |  |
| HMD-E1020 | Survey: SAR approval of survey report - Madinah | 2028-02-16 → 2028-02-07 (-9d) | 2028-03-14 → 2028-03-05 (-9d) |  |  |
| CNC | **Concept design** | 2028-02-16 → 2028-02-07 (-9d) | 2028-03-23 → 2028-03-14 (-9d) |  |  |
| SUB | **Submittal** | 2028-02-16 → 2028-02-07 (-9d) | 2028-03-02 → 2028-02-15 (-16d) |  |  |
| HMD-E1030 | Concept design: submittal - Madinah | 2028-02-16 → 2028-02-07 (-9d) | 2028-03-02 → 2028-02-15 (-16d) |  |  |
| APR | **Approval** | 2028-03-05 → 2028-02-16 (-18d) | 2028-03-23 → 2028-03-14 (-9d) |  |  |
| HMD-E1040 | Concept design: SAR review and approval - Madinah | 2028-03-05 → 2028-02-16 (-18d) | 2028-03-23 → 2028-03-14 (-9d) |  |  |
| PRE | **Preliminary (schematic) design** | 2028-03-05 → 2028-02-16 (-18d) | 2028-04-10 → 2028-03-30 (-11d) |  |  |
| SUB | **Submittal** | 2028-03-05 → 2028-02-16 (-18d) | 2028-03-20 → 2028-03-09 (-11d) |  |  |
| HMD-E1050 | Preliminary design: submittal - Madinah | 2028-03-05 → 2028-02-16 (-18d) | 2028-03-20 → 2028-03-09 (-11d) |  |  |
| APR | **Approval** | 2028-03-21 → 2028-03-12 (-9d) | 2028-04-10 → 2028-03-30 (-11d) |  |  |
| HMD-E1060 | Preliminary design: SAR review and approval - Madinah | 2028-03-21 → 2028-03-12 (-9d) | 2028-04-10 → 2028-03-30 (-11d) |  |  |
| DET | **Detailed design** | 2028-03-21 → 2028-03-12 (-9d) | 2028-05-11 → 2028-04-25 (-16d) |  |  |
| SUB | **Submittal** | 2028-03-21 → 2028-03-12 (-9d) | 2028-04-13 → 2028-04-04 (-9d) |  |  |
| HMD-E1070 | Detailed design: submittal (drawings, BOQ, data sheets) - Madinah | 2028-03-21 → 2028-03-12 (-9d) | 2028-04-13 → 2028-04-04 (-9d) |  |  |
| APR | **Approval** | 2028-04-16 → 2028-04-05 (-11d) | 2028-05-11 → 2028-04-25 (-16d) |  |  |
| HMD-E1080 | Detailed design: SAR review and approval - Madinah | 2028-04-16 → 2028-04-05 (-11d) | 2028-05-11 → 2028-04-25 (-16d) |  |  |
| IFC | **IFC and shop drawings** | 2028-04-16 → 2028-04-05 (-11d) | 2028-05-24 → 2028-05-15 (-9d) |  |  |
| SUB | **Submittal** | 2028-04-16 → 2028-04-05 (-11d) | 2028-04-26 → 2028-04-17 (-9d) |  |  |
| HMD-E1090 | IFC and shop drawings: submittal - Madinah | 2028-04-16 → 2028-04-05 (-11d) | 2028-04-26 → 2028-04-17 (-9d) |  |  |
| APR | **Approval** | 2028-04-27 → 2028-04-18 (-9d) | 2028-05-24 → 2028-05-15 (-9d) |  |  |
| HMD-E1100 | IFC and shop drawings: SAR approval and release - Madinah | 2028-04-27 → 2028-04-18 (-9d) | 2028-05-24 → 2028-05-15 (-9d) |  |  |
| HCS | **HCIS documentation (Stage 3 and 4)** | 2028-03-30 → 2028-03-21 (-9d) | 2028-05-24 → 2028-05-15 (-9d) |  |  |
| SUB | **Submittal** | 2028-03-30 → 2028-03-21 (-9d) | 2028-04-26 → 2028-04-17 (-9d) |  |  |
| HMD-E1110 | HCIS Stage 3 and 4 documents: preparation - Madinah | 2028-03-30 → 2028-03-21 (-9d) | 2028-04-26 → 2028-04-17 (-9d) |  |  |
| APR | **Approval** | 2028-04-27 → 2028-04-18 (-9d) | 2028-05-24 → 2028-05-15 (-9d) |  |  |
| HMD-E1120 | HCIS Stage 3 and 4 documents: SAR final review and HCIS submission - Madinah | 2028-04-27 → 2028-04-18 (-9d) | 2028-05-24 → 2028-05-15 (-9d) |  |  |
| ASB | **As-built and O&M documentation** | 2029-01-23 → 2029-01-14 (-9d) | 2029-04-11 → 2029-04-02 (-9d) |  |  |
| SUB | **Submittal** | 2029-01-23 → 2029-01-14 (-9d) | 2029-03-21 → 2029-03-12 (-9d) |  |  |
| HMD-E1130 | As-built and O&M documentation: submittal - Madinah | 2029-01-23 → 2029-01-14 (-9d) | 2029-03-21 → 2029-03-12 (-9d) |  |  |
| APR | **Approval** | 2029-03-22 → 2029-03-13 (-9d) | 2029-04-11 → 2029-04-02 (-9d) |  |  |
| HMD-E1140 | As-built and O&M documentation: SAR review and approval - Madinah | 2029-03-22 → 2029-03-13 (-9d) | 2029-04-11 → 2029-04-02 (-9d) |  |  |
| EAB | **Abqaiq (EWR)** | 2028-03-20 → 2028-03-08 (-12d) | 2029-01-31 → 2029-01-18 (-13d) |  |  |
| EAB-E1200 | MS2 Engineering submittal complete (10%) - Abqaiq | 2028-06-28 → 2028-06-15 (-13d) | 2028-06-28 → 2028-06-15 (-13d) | 173d → 175d |  |
| EAB-E1210 | MS3 Engineering approved by SAR (10%) - Abqaiq | 2028-07-19 → 2028-07-06 (-13d) | 2028-07-19 → 2028-07-06 (-13d) | 158d → 160d |  |
| SRV | **Site survey and as-found verification** | 2028-03-20 → 2028-03-08 (-12d) | 2028-04-19 → 2028-04-09 (-10d) |  |  |
| SUB | **Submittal** | 2028-03-20 → 2028-03-08 (-12d) | 2028-03-29 → 2028-03-19 (-10d) |  |  |
| EAB-E1010 | Survey: submittal of site survey and as-found report - Abqaiq | 2028-03-20 → 2028-03-08 (-12d) | 2028-03-29 → 2028-03-19 (-10d) | 158d → 160d | PRJ-A1060, PRJ-M1150 FS+299d → PRJ-A1060, PRJ-M1150 FS+291d |
| APR | **Approval** | 2028-03-30 → 2028-03-20 (-10d) | 2028-04-19 → 2028-04-09 (-10d) |  |  |
| EAB-E1020 | Survey: SAR approval of survey report - Abqaiq | 2028-03-30 → 2028-03-20 (-10d) | 2028-04-19 → 2028-04-09 (-10d) | 218d → 219d |  |
| CNC | **Concept design** | 2028-03-30 → 2028-03-20 (-10d) | 2028-05-09 → 2028-04-20 (-19d) |  |  |
| SUB | **Submittal** | 2028-03-30 → 2028-03-20 (-10d) | 2028-04-11 → 2028-03-30 (-12d) |  |  |
| EAB-E1030 | Concept design: submittal - Abqaiq | 2028-03-30 → 2028-03-20 (-10d) | 2028-04-11 → 2028-03-30 (-12d) | 158d → 160d |  |

| ID | Task | Start | Finish | Duration | Total float | Predecessors | Other |
| --- | --- | --- | --- | --- | --- | --- | --- |
| APR | **Approval** | 2028-04-12 → 2028-04-02 (-10d) | 2028-05-09 → 2028-04-20 (-19d) |  |  |  |  |
| EAB-E1040 | Concept design: SAR review and approval - Abqaiq | 2028-04-12 → 2028-04-02 (-10d) | 2028-05-09 → 2028-04-20 (-19d) |  | 209d → 210d |  |  |
| PRE | **Preliminary (schematic) design** | 2028-04-12 → 2028-04-02 (-10d) | 2028-05-30 → 2028-05-18 (-12d) |  |  |  |  |
| SUB | **Submittal** | 2028-04-12 → 2028-04-02 (-10d) | 2028-05-09 → 2028-04-20 (-19d) |  |  |  |  |
| EAB-E1050 | Preliminary design: submittal - Abqaiq | 2028-04-12 → 2028-04-02 (-10d) | 2028-05-09 → 2028-04-20 (-19d) |  | 158d → 160d |  |  |
| APR | **Approval** | 2028-05-10 → 2028-04-23 (-17d) | 2028-05-30 → 2028-05-18 (-12d) |  |  |  |  |
| EAB-E1060 | Preliminary design: SAR review and approval - Abqaiq | 2028-05-10 → 2028-04-23 (-17d) | 2028-05-30 → 2028-05-18 (-12d) |  | 194d → 195d |  |  |
| DET | **Detailed design** | 2028-05-10 → 2028-04-23 (-17d) | 2028-07-03 → 2028-06-21 (-12d) |  |  |  |  |
| SUB | **Submittal** | 2028-05-10 → 2028-04-23 (-17d) | 2028-06-12 → 2028-05-31 (-12d) |  |  |  |  |
| EAB-E1070 | Detailed design: submittal (drawings, BOQ, data sheets) - Abqaiq | 2028-05-10 → 2028-04-23 (-17d) | 2028-06-12 → 2028-05-31 (-12d) |  | 158d → 160d |  |  |
| APR | **Approval** | 2028-06-13 → 2028-06-01 (-12d) | 2028-07-03 → 2028-06-21 (-12d) |  |  |  |  |
| EAB-E1080 | Detailed design: SAR review and approval - Abqaiq | 2028-06-13 → 2028-06-01 (-12d) | 2028-07-03 → 2028-06-21 (-12d) |  | 170d → 171d |  |  |
| IFC | **IFC and shop drawings** | 2028-06-13 → 2028-06-01 (-12d) | 2028-07-19 → 2028-07-06 (-13d) |  |  |  |  |
| SUB | **Submittal** | 2028-06-13 → 2028-06-01 (-12d) | 2028-06-28 → 2028-06-15 (-13d) |  |  |  |  |
| EAB-E1090 | IFC and shop drawings: submittal - Abqaiq | 2028-06-13 → 2028-06-01 (-12d) | 2028-06-28 → 2028-06-15 (-13d) | 12d → 11d | 158d → 160d |  | resources Contract cost (BOQ x payment milestones) [39311 SAR]; Progress weight (fair EPC distribution, SAR value) [17980 SAR] → Contract cost (BOQ x payment milestones) [39311 SAR]; Progress weight (fair EPC distribution, SAR value) [17360 SAR] |
| APR | **Approval** | 2028-06-29 → 2028-06-18 (-11d) | 2028-07-19 → 2028-07-06 (-13d) |  |  |  |  |
| EAB-E1100 | IFC and shop drawings: SAR approval and release - Abqaiq | 2028-06-29 → 2028-06-18 (-11d) | 2028-07-19 → 2028-07-06 (-13d) |  | 158d → 160d |  | resources Contract cost (BOQ x payment milestones) [40114 SAR]; Progress weight (fair EPC distribution, SAR value) [22940 SAR] → Contract cost (BOQ x payment milestones) [40114 SAR]; Progress weight (fair EPC distribution, SAR value) [23560 SAR] |
| HCS | **HCIS documentation (Stage 3 and 4)** | 2028-05-23 → 2028-05-11 (-12d) | 2028-07-19 → 2028-07-06 (-13d) |  |  |  |  |
| SUB | **Submittal** | 2028-05-23 → 2028-05-11 (-12d) | 2028-06-28 → 2028-06-15 (-13d) |  |  |  |  |
| EAB-E1110 | HCIS Stage 3 and 4 documents: preparation - Abqaiq | 2028-05-23 → 2028-05-11 (-12d) | 2028-06-28 → 2028-06-15 (-13d) | 27d → 26d | 158d → 160d |  |  |
| APR | **Approval** | 2028-06-29 → 2028-06-18 (-11d) | 2028-07-19 → 2028-07-06 (-13d) |  |  |  |  |
| EAB-E1120 | HCIS Stage 3 and 4 documents: SAR final review and HCIS submission - Abqaiq | 2028-06-29 → 2028-06-18 (-11d) | 2028-07-19 → 2028-07-06 (-13d) |  | 158d → 160d |  |  |
| ASB | **As-built and O&M documentation** | 2028-12-06 → 2028-11-23 (-13d) | 2029-01-31 → 2029-01-18 (-13d) |  |  |  |  |
| SUB | **Submittal** | 2028-12-06 → 2028-11-23 (-13d) | 2029-01-10 → 2028-12-28 (-13d) |  |  |  |  |
| EAB-E1130 | As-built and O&M documentation: submittal - Abqaiq | 2028-12-06 → 2028-11-23 (-13d) | 2029-01-10 → 2028-12-28 (-13d) |  | 158d → 160d |  |  |
| APR | **Approval** | 2029-01-11 → 2028-12-31 (-11d) | 2029-01-31 → 2029-01-18 (-13d) |  |  |  |  |
| EAB-E1140 | As-built and O&M documentation: SAR review and approval - Abqaiq | 2029-01-11 → 2028-12-31 (-11d) | 2029-01-31 → 2029-01-18 (-13d) |  | 158d → 160d |  |  |
| NHL | **Hail (NSR)** | 2028-04-12 → 2028-04-02 (-10d) | 2029-04-16 → 2029-04-05 (-11d) |  |  |  |  |
| NHL-E1200 | MS2 Engineering submittal complete (10%) - Hail | 2028-07-20 → 2028-07-11 (-9d) | 2028-07-20 → 2028-07-11 (-9d) |  |  |  |  |
| NHL-E1210 | MS3 Engineering approved by SAR (10%) - Hail | 2028-08-10 → 2028-08-01 (-9d) | 2028-08-10 → 2028-08-01 (-9d) |  |  |  |  |
| SRV | **Site survey and as-found verification** | 2028-04-12 → 2028-04-02 (-10d) | 2028-05-21 → 2028-05-09 (-12d) |  |  |  |  |
| SUB | **Submittal** | 2028-04-12 → 2028-04-02 (-10d) | 2028-04-23 → 2028-04-11 (-12d) |  |  |  |  |
| NHL-E1010 | Survey: submittal of site survey and as-found report - Hail | 2028-04-12 → 2028-04-02 (-10d) | 2028-04-23 → 2028-04-11 (-12d) |  |  | PRJ-A1060, PRJ-M1150 FS+316d → PRJ-A1060, PRJ-M1150 FS+308d |  |
| APR | **Approval** | 2028-04-24 → 2028-04-12 (-12d) | 2028-05-21 → 2028-05-09 (-12d) |  |  |  |  |
| NHL-E1020 | Survey: SAR approval of survey report - Hail | 2028-04-24 → 2028-04-12 (-12d) | 2028-05-21 → 2028-05-09 (-12d) |  | 170d → 171d |  |  |
| CNC | **Concept design** | 2028-04-24 → 2028-04-12 (-12d) | 2028-06-01 → 2028-05-22 (-10d) |  |  |  |  |
| SUB | **Submittal** | 2028-04-24 → 2028-04-12 (-12d) | 2028-05-11 → 2028-04-24 (-17d) |  |  |  |  |
| NHL-E1030 | Concept design: submittal - Hail | 2028-04-24 → 2028-04-12 (-12d) | 2028-05-11 → 2028-04-24 (-17d) |  |  |  |  |
| APR | **Approval** | 2028-05-14 → 2028-04-25 (-19d) | 2028-06-01 → 2028-05-22 (-10d) |  |  |  |  |
| NHL-E1040 | Concept design: SAR review and approval - Hail | 2028-05-14 → 2028-04-25 (-19d) | 2028-06-01 → 2028-05-22 (-10d) |  | 161d → 162d |  |  |
| PRE | **Preliminary (schematic) design** | 2028-05-14 → 2028-04-25 (-19d) | 2028-06-22 → 2028-06-12 (-10d) |  |  |  |  |
| SUB | **Submittal** | 2028-05-14 → 2028-04-25 (-19d) | 2028-06-01 → 2028-05-22 (-10d) |  |  |  |  |
| NHL-E1050 | Preliminary design: submittal - Hail | 2028-05-14 → 2028-04-25 (-19d) | 2028-06-01 → 2028-05-22 (-10d) |  |  |  |  |
| APR | **Approval** | 2028-06-04 → 2028-05-23 (-12d) | 2028-06-22 → 2028-06-12 (-10d) |  |  |  |  |
| NHL-E1060 | Preliminary design: SAR review and approval - Hail | 2028-06-04 → 2028-05-23 (-12d) | 2028-06-22 → 2028-06-12 (-10d) |  | 146d → 147d |  |  |
| DET | **Detailed design** | 2028-06-04 → 2028-05-23 (-12d) | 2028-07-26 → 2028-07-16 (-10d) |  |  |  |  |
| SUB | **Submittal** | 2028-06-04 → 2028-05-23 (-12d) | 2028-07-05 → 2028-06-25 (-10d) |  |  |  |  |
| NHL-E1070 | Detailed design: submittal (drawings, BOQ, data sheets) - Hail | 2028-06-04 → 2028-05-23 (-12d) | 2028-07-05 → 2028-06-25 (-10d) |  |  |  |  |
| APR | **Approval** | 2028-07-06 → 2028-06-26 (-10d) | 2028-07-26 → 2028-07-16 (-10d) |  |  |  |  |
| NHL-E1080 | Detailed design: SAR review and approval - Hail | 2028-07-06 → 2028-06-26 (-10d) | 2028-07-26 → 2028-07-16 (-10d) |  | 122d → 123d |  |  |
| IFC | **IFC and shop drawings** | 2028-07-06 → 2028-06-26 (-10d) | 2028-08-10 → 2028-08-01 (-9d) |  |  |  |  |
| SUB | **Submittal** | 2028-07-06 → 2028-06-26 (-10d) | 2028-07-20 → 2028-07-11 (-9d) |  |  |  |  |
| NHL-E1090 | IFC and shop drawings: submittal - Hail | 2028-07-06 → 2028-06-26 (-10d) | 2028-07-20 → 2028-07-11 (-9d) | 11d → 12d |  |  | resources Contract cost (BOQ x payment milestones) [66619 SAR]; Progress weight (fair EPC distribution, SAR value) [29140 SAR] → Contract cost (BOQ x payment milestones) [66619 SAR]; Progress weight (fair EPC distribution, SAR value) [31000 SAR] |
| APR | **Approval** | 2028-07-23 → 2028-07-12 (-11d) | 2028-08-10 → 2028-08-01 (-9d) |  |  |  |  |
| NHL-E1100 | IFC and shop drawings: SAR approval and release - Hail | 2028-07-23 → 2028-07-12 (-11d) | 2028-08-10 → 2028-08-01 (-9d) |  |  |  | resources Contract cost (BOQ x payment milestones) [67978 SAR]; Progress weight (fair EPC distribution, SAR value) [39680 SAR] → Contract cost (BOQ x payment milestones) [67978 SAR]; Progress weight (fair EPC distribution, SAR value) [38440 SAR] |
| HCS | **HCIS documentation (Stage 3 and 4)** | 2028-06-15 → 2028-06-05 (-10d) | 2028-08-10 → 2028-08-01 (-9d) |  |  |  |  |
| SUB | **Submittal** | 2028-06-15 → 2028-06-05 (-10d) | 2028-07-20 → 2028-07-11 (-9d) |  |  |  |  |
| NHL-E1110 | HCIS Stage 3 and 4 documents: preparation - Hail | 2028-06-15 → 2028-06-05 (-10d) | 2028-07-20 → 2028-07-11 (-9d) | 26d → 27d |  |  |  |
| APR | **Approval** | 2028-07-23 → 2028-07-12 (-11d) | 2028-08-10 → 2028-08-01 (-9d) |  |  |  |  |
| NHL-E1120 | HCIS Stage 3 and 4 documents: SAR final review and HCIS submission - Hail | 2028-07-23 → 2028-07-12 (-11d) | 2028-08-10 → 2028-08-01 (-9d) |  |  |  | resources Contract cost (BOQ x payment milestones) [16995 SAR]; Progress weight (fair EPC distribution, SAR value) [8680 SAR] → Contract cost (BOQ x payment milestones) [16995 SAR]; Progress weight (fair EPC distribution, SAR value) [8060 SAR] |
| ASB | **As-built and O&M documentation** | 2029-02-07 → 2029-01-29 (-9d) | 2029-04-16 → 2029-04-05 (-11d) |  |  |  |  |
| SUB | **Submittal** | 2029-02-07 → 2029-01-29 (-9d) | 2029-03-26 → 2029-03-15 (-11d) |  |  |  |  |
| NHL-E1130 | As-built and O&M documentation: submittal - Hail | 2029-02-07 → 2029-01-29 (-9d) | 2029-03-26 → 2029-03-15 (-11d) |  |  |  |  |
| APR | **Approval** | 2029-03-27 → 2029-03-18 (-9d) | 2029-04-16 → 2029-04-05 (-11d) |  |  |  |  |
| NHL-E1140 | As-built and O&M documentation: SAR review and approval - Hail | 2029-03-27 → 2029-03-18 (-9d) | 2029-04-16 → 2029-04-05 (-11d) |  |  |  |  |
| NJF | **Al Jouf (NSR)** | 2028-06-29 → 2028-06-18 (-11d) | 2029-07-09 → 2029-06-28 (-11d) |  |  |  |  |
| NJF-E1200 | MS2 Engineering submittal complete (10%) - Al Jouf | 2028-10-05 → 2028-09-26 (-9d) | 2028-10-05 → 2028-09-26 (-9d) |  |  |  |  |
| NJF-E1210 | MS3 Engineering approved by SAR (10%) - Al Jouf | 2028-10-26 → 2028-10-17 (-9d) | 2028-10-26 → 2028-10-17 (-9d) |  |  |  |  |
| SRV | **Site survey and as-found verification** | 2028-06-29 → 2028-06-18 (-11d) | 2028-07-31 → 2028-07-18 (-13d) |  |  |  |  |
| SUB | **Submittal** | 2028-06-29 → 2028-06-18 (-11d) | 2028-07-10 → 2028-06-27 (-13d) |  |  |  |  |

| ID | Task | Start | Finish | Duration | Total float | Predecessors | Other |
| --- | --- | --- | --- | --- | --- | --- | --- |
| NJF-E1010 | Survey: submittal of site survey and as-found report - Al Jouf | 2028-06-29 → 2028-06-18 (-11d) | 2028-07-10 → 2028-06-27 (-13d) |  |  | PRJ-A1060, PRJ-M1150 FS+367d → PRJ-A1060, PRJ-M1150 FS+358d |  |
| APR | **Approval** | 2028-07-11 → 2028-06-28 (-13d) | 2028-07-31 → 2028-07-18 (-13d) |  |  |  |  |
| NJF-E1020 | Survey: SAR approval of survey report - Al Jouf | 2028-07-11 → 2028-06-28 (-13d) | 2028-07-31 → 2028-07-18 (-13d) |  | 119d → 121d |  |  |
| CNC | **Concept design** | 2028-07-11 → 2028-06-28 (-13d) | 2028-08-13 → 2028-08-01 (-12d) |  |  |  |  |
| SUB | **Submittal** | 2028-07-11 → 2028-06-28 (-13d) | 2028-07-23 → 2028-07-11 (-12d) |  |  |  |  |
| NJF-E1030 | Concept design: submittal - Al Jouf | 2028-07-11 → 2028-06-28 (-13d) | 2028-07-23 → 2028-07-11 (-12d) | 9d → 10d |  |  | resources Contract cost (BOQ x payment milestones) [33544 SAR]; Progress weight (fair EPC distribution, SAR value) [14260 SAR] → Contract cost (BOQ x payment milestones) [33544 SAR]; Progress weight (fair EPC distribution, SAR value) [15500 SAR] |
| APR | **Approval** | 2028-07-24 → 2028-07-12 (-12d) | 2028-08-13 → 2028-08-01 (-12d) |  |  |  |  |
| NJF-E1040 | Concept design: SAR review and approval - Al Jouf | 2028-07-24 → 2028-07-12 (-12d) | 2028-08-13 → 2028-08-01 (-12d) |  | 110d → 111d |  | resources Contract cost (BOQ x payment milestones) [34228 SAR]; Progress weight (fair EPC distribution, SAR value) [24180 SAR] → Contract cost (BOQ x payment milestones) [34228 SAR]; Progress weight (fair EPC distribution, SAR value) [22940 SAR] |
| PRE | **Preliminary (schematic) design** | 2028-07-24 → 2028-07-12 (-12d) | 2028-09-04 → 2028-08-23 (-12d) |  |  |  |  |
| SUB | **Submittal** | 2028-07-24 → 2028-07-12 (-12d) | 2028-08-14 → 2028-08-02 (-12d) |  |  |  |  |
| NJF-E1050 | Preliminary design: submittal - Al Jouf | 2028-07-24 → 2028-07-12 (-12d) | 2028-08-14 → 2028-08-02 (-12d) |  |  |  |  |
| APR | **Approval** | 2028-08-15 → 2028-08-03 (-12d) | 2028-09-04 → 2028-08-23 (-12d) |  |  |  |  |
| NJF-E1060 | Preliminary design: SAR review and approval - Al Jouf | 2028-08-15 → 2028-08-03 (-12d) | 2028-09-04 → 2028-08-23 (-12d) |  | 94d → 95d |  |  |
| DET | **Detailed design** | 2028-08-15 → 2028-08-03 (-12d) | 2028-10-09 → 2028-09-28 (-11d) |  |  |  |  |
| SUB | **Submittal** | 2028-08-15 → 2028-08-03 (-12d) | 2028-09-18 → 2028-09-07 (-11d) |  |  |  |  |
| NJF-E1070 | Detailed design: submittal (drawings, BOQ, data sheets) - Al Jouf | 2028-08-15 → 2028-08-03 (-12d) | 2028-09-18 → 2028-09-07 (-11d) | 25d → 26d |  |  | resources Contract cost (BOQ x payment milestones) [134176 SAR]; Progress weight (fair EPC distribution, SAR value) [72540 SAR] → Contract cost (BOQ x payment milestones) [134176 SAR]; Progress weight (fair EPC distribution, SAR value) [73780 SAR] |
| APR | **Approval** | 2028-09-19 → 2028-09-10 (-9d) | 2028-10-09 → 2028-09-28 (-11d) |  |  |  |  |
| NJF-E1080 | Detailed design: SAR review and approval - Al Jouf | 2028-09-19 → 2028-09-10 (-9d) | 2028-10-09 → 2028-09-28 (-11d) |  |  |  | resources Contract cost (BOQ x payment milestones) [136914 SAR]; Progress weight (fair EPC distribution, SAR value) [43400 SAR] → Contract cost (BOQ x payment milestones) [136914 SAR]; Progress weight (fair EPC distribution, SAR value) [42160 SAR] |
| IFC | **IFC and shop drawings** | 2028-09-19 → 2028-09-10 (-9d) | 2028-10-26 → 2028-10-17 (-9d) |  |  |  |  |
| SUB | **Submittal** | 2028-09-19 → 2028-09-10 (-9d) | 2028-10-05 → 2028-09-26 (-9d) |  |  |  |  |
| NJF-E1090 | IFC and shop drawings: submittal - Al Jouf | 2028-09-19 → 2028-09-10 (-9d) | 2028-10-05 → 2028-09-26 (-9d) |  |  |  |  |
| APR | **Approval** | 2028-10-08 → 2028-09-27 (-11d) | 2028-10-26 → 2028-10-17 (-9d) |  |  |  |  |
| NJF-E1100 | IFC and shop drawings: SAR approval and release - Al Jouf | 2028-10-08 → 2028-09-27 (-11d) | 2028-10-26 → 2028-10-17 (-9d) |  |  |  |  |
| HCS | **HCIS documentation (Stage 3 and 4)** | 2028-08-28 → 2028-08-17 (-11d) | 2028-10-26 → 2028-10-17 (-9d) |  |  |  |  |
| SUB | **Submittal** | 2028-08-28 → 2028-08-17 (-11d) | 2028-10-05 → 2028-09-26 (-9d) |  |  |  |  |
| NJF-E1110 | HCIS Stage 3 and 4 documents: preparation - Al Jouf | 2028-08-28 → 2028-08-17 (-11d) | 2028-10-05 → 2028-09-26 (-9d) |  |  | NJF-E1050 FS+9d, NJF-E1090 FF → NJF-E1050 FS+10d, NJF-E1090 FF |  |
| APR | **Approval** | 2028-10-08 → 2028-09-27 (-11d) | 2028-10-26 → 2028-10-17 (-9d) |  |  |  |  |
| NJF-E1120 | HCIS Stage 3 and 4 documents: SAR final review and HCIS submission - Al Jouf | 2028-10-08 → 2028-09-27 (-11d) | 2028-10-26 → 2028-10-17 (-9d) |  |  |  |  |
| ASB | **As-built and O&M documentation** | 2029-05-10 → 2029-05-01 (-9d) | 2029-07-09 → 2029-06-28 (-11d) |  |  |  |  |
| SUB | **Submittal** | 2029-05-10 → 2029-05-01 (-9d) | 2029-06-18 → 2029-06-07 (-11d) |  |  |  |  |
| NJF-E1130 | As-built and O&M documentation: submittal - Al Jouf | 2029-05-10 → 2029-05-01 (-9d) | 2029-06-18 → 2029-06-07 (-11d) |  |  |  |  |
| APR | **Approval** | 2029-06-19 → 2029-06-10 (-9d) | 2029-07-09 → 2029-06-28 (-11d) |  |  |  |  |
| NJF-E1140 | As-built and O&M documentation: SAR review and approval - Al Jouf | 2029-06-19 → 2029-06-10 (-9d) | 2029-07-09 → 2029-06-28 (-11d) |  |  |  |  |
| NQR | **Al Qurayyat (NSR)** | 2028-08-16 → 2028-08-02 (-14d) | 2029-08-27 → 2029-08-13 (-14d) |  |  |  |  |
| NQR-E1200 | MS2 Engineering submittal complete (10%) - Al Qurayyat | 2028-11-23 → 2028-11-09 (-14d) | 2028-11-23 → 2028-11-09 (-14d) |  | 36d → 39d |  |  |
| NQR-E1210 | MS3 Engineering approved by SAR (10%) - Al Qurayyat | 2028-12-14 → 2028-11-30 (-14d) | 2028-12-14 → 2028-11-30 (-14d) |  | 21d → 24d |  |  |
| SRV | **Site survey and as-found verification** | 2028-08-16 → 2028-08-02 (-14d) | 2028-09-17 → 2028-09-03 (-14d) |  |  |  |  |
| SUB | **Submittal** | 2028-08-16 → 2028-08-02 (-14d) | 2028-08-27 → 2028-08-13 (-14d) |  |  |  |  |
| NQR-E1010 | Survey: submittal of site survey and as-found report - Al Qurayyat | 2028-08-16 → 2028-08-02 (-14d) | 2028-08-27 → 2028-08-13 (-14d) |  | 21d → 24d | PRJ-A1060, PRJ-M1150 FS+401d → PRJ-A1060, PRJ-M1150 FS+391d |  |
| APR | **Approval** | 2028-08-28 → 2028-08-14 (-14d) | 2028-09-17 → 2028-09-03 (-14d) |  |  |  |  |
| NQR-E1020 | Survey: SAR approval of survey report - Al Qurayyat | 2028-08-28 → 2028-08-14 (-14d) | 2028-09-17 → 2028-09-03 (-14d) |  | 85d → 88d |  |  |
| CNC | **Concept design** | 2028-08-28 → 2028-08-14 (-14d) | 2028-10-01 → 2028-09-17 (-14d) |  |  |  |  |
| SUB | **Submittal** | 2028-08-28 → 2028-08-14 (-14d) | 2028-09-10 → 2028-08-27 (-14d) |  |  |  |  |
| NQR-E1030 | Concept design: submittal - Al Qurayyat | 2028-08-28 → 2028-08-14 (-14d) | 2028-09-10 → 2028-08-27 (-14d) |  | 21d → 24d |  |  |
| APR | **Approval** | 2028-09-11 → 2028-08-28 (-14d) | 2028-10-01 → 2028-09-17 (-14d) |  |  |  |  |
| NQR-E1040 | Concept design: SAR review and approval - Al Qurayyat | 2028-09-11 → 2028-08-28 (-14d) | 2028-10-01 → 2028-09-17 (-14d) |  | 75d → 78d |  |  |
| PRE | **Preliminary (schematic) design** | 2028-09-11 → 2028-08-28 (-14d) | 2028-10-23 → 2028-10-09 (-14d) |  |  |  |  |
| SUB | **Submittal** | 2028-09-11 → 2028-08-28 (-14d) | 2028-10-02 → 2028-09-18 (-14d) |  |  |  |  |
| NQR-E1050 | Preliminary design: submittal - Al Qurayyat | 2028-09-11 → 2028-08-28 (-14d) | 2028-10-02 → 2028-09-18 (-14d) |  | 21d → 24d |  |  |
| APR | **Approval** | 2028-10-03 → 2028-09-19 (-14d) | 2028-10-23 → 2028-10-09 (-14d) |  |  |  |  |
| NQR-E1060 | Preliminary design: SAR review and approval - Al Qurayyat | 2028-10-03 → 2028-09-19 (-14d) | 2028-10-23 → 2028-10-09 (-14d) |  | 59d → 62d |  |  |
| DET | **Detailed design** | 2028-10-03 → 2028-09-19 (-14d) | 2028-11-28 → 2028-11-14 (-14d) |  |  |  |  |
| SUB | **Submittal** | 2028-10-03 → 2028-09-19 (-14d) | 2028-11-07 → 2028-10-24 (-14d) |  |  |  |  |
| NQR-E1070 | Detailed design: submittal (drawings, BOQ, data sheets) - Al Qurayyat | 2028-10-03 → 2028-09-19 (-14d) | 2028-11-07 → 2028-10-24 (-14d) |  | 21d → 24d |  |  |
| APR | **Approval** | 2028-11-08 → 2028-10-25 (-14d) | 2028-11-28 → 2028-11-14 (-14d) |  |  |  |  |
| NQR-E1080 | Detailed design: SAR review and approval - Al Qurayyat | 2028-11-08 → 2028-10-25 (-14d) | 2028-11-28 → 2028-11-14 (-14d) |  | 33d → 36d |  |  |
| IFC | **IFC and shop drawings** | 2028-11-08 → 2028-10-25 (-14d) | 2028-12-14 → 2028-11-30 (-14d) |  |  |  |  |
| SUB | **Submittal** | 2028-11-08 → 2028-10-25 (-14d) | 2028-11-23 → 2028-11-09 (-14d) |  |  |  |  |
| NQR-E1090 | IFC and shop drawings: submittal - Al Qurayyat | 2028-11-08 → 2028-10-25 (-14d) | 2028-11-23 → 2028-11-09 (-14d) |  | 21d → 24d |  |  |
| APR | **Approval** | 2028-11-26 → 2028-11-12 (-14d) | 2028-12-14 → 2028-11-30 (-14d) |  |  |  |  |
| NQR-E1100 | IFC and shop drawings: SAR approval and release - Al Qurayyat | 2028-11-26 → 2028-11-12 (-14d) | 2028-12-14 → 2028-11-30 (-14d) |  | 21d → 24d |  |  |
| HCS | **HCIS documentation (Stage 3 and 4)** | 2028-10-17 → 2028-10-03 (-14d) | 2028-12-14 → 2028-11-30 (-14d) |  |  |  |  |
| SUB | **Submittal** | 2028-10-17 → 2028-10-03 (-14d) | 2028-11-23 → 2028-11-09 (-14d) |  |  |  |  |
| NQR-E1110 | HCIS Stage 3 and 4 documents: preparation - Al Qurayyat | 2028-10-17 → 2028-10-03 (-14d) | 2028-11-23 → 2028-11-09 (-14d) |  | 21d → 24d |  |  |
| APR | **Approval** | 2028-11-26 → 2028-11-12 (-14d) | 2028-12-14 → 2028-11-30 (-14d) |  |  |  |  |
| NQR-E1120 | HCIS Stage 3 and 4 documents: SAR final review and HCIS submission - Al Qurayyat | 2028-11-26 → 2028-11-12 (-14d) | 2028-12-14 → 2028-11-30 (-14d) |  | 21d → 24d |  |  |
| ASB | **As-built and O&M documentation** | 2029-06-28 → 2029-06-14 (-14d) | 2029-08-27 → 2029-08-13 (-14d) |  |  |  |  |
| SUB | **Submittal** | 2029-06-28 → 2029-06-14 (-14d) | 2029-08-06 → 2029-07-23 (-14d) |  |  |  |  |
| NQR-E1130 | As-built and O&M documentation: submittal - Al Qurayyat | 2029-06-28 → 2029-06-14 (-14d) | 2029-08-06 → 2029-07-23 (-14d) |  | 21d → 24d |  |  |
| APR | **Approval** | 2029-08-07 → 2029-07-24 (-14d) | 2029-08-27 → 2029-08-13 (-14d) |  |  |  |  |

| ID | Task | Start | Finish | Total float | Other |
| --- | --- | --- | --- | --- | --- |
| NQR-E1140 | As-built and O&M documentation: SAR review and approval - Al Qurayyat | 2029-08-07 → 2029-07-24 (-14d) | 2029-08-27 → 2029-08-13 (-14d) | 21d → 24d |  |
| PRO | **Procurement** |  | 2029-04-19 → 2029-04-05 (-14d) |  |  |
| HMK-P1010 | Manufacture CCTV cameras and analytics - Makkah |  |  | 329d → 322d | resources Contract cost (BOQ x payment milestones) [473780 SAR]; Progress weight (fair EPC distribution, SAR value) [727880 SAR] → Contract cost (BOQ x payment milestones) [473780 SAR]; Progress weight (fair EPC distribution, SAR value) [728500 SAR] |
| HJD | **Jeddah (HHR)** | 2027-07-01 → 2027-06-27 (-4d) | 2027-12-30 → 2027-12-26 (-4d) |  |  |
| HJD-P1100 | MS4 Material delivered (20%) - Jeddah | 2027-12-30 → 2027-12-26 (-4d) | 2027-12-30 → 2027-12-26 (-4d) | 308d → 305d |  |
| CCT | **CCTV system** | 2027-07-01 → 2027-06-27 (-4d) | 2027-10-21 → 2027-10-17 (-4d) |  |  |
| HJD-P1010 | Manufacture CCTV cameras and analytics - Jeddah | 2027-07-01 → 2027-06-27 (-4d) | 2027-10-21 → 2027-10-17 (-4d) | 308d → 305d |  |
| VMS | **Video management and video wall** | 2027-07-01 → 2027-06-27 (-4d) | 2027-10-21 → 2027-10-17 (-4d) |  |  |
| HJD-P1020 | Manufacture video management servers, storage and video wall - Jeddah | 2027-07-01 → 2027-06-27 (-4d) | 2027-10-21 → 2027-10-17 (-4d) | 308d → 305d |  |
| ACC | **Access control and intercom** | 2027-07-01 → 2027-06-27 (-4d) | 2027-10-21 → 2027-10-17 (-4d) |  |  |
| HJD-P1030 | Manufacture access control and intercom equipment - Jeddah | 2027-07-01 → 2027-06-27 (-4d) | 2027-10-21 → 2027-10-17 (-4d) | 308d → 305d |  |
| UPN | **UPS, network and cabinets** | 2027-07-01 → 2027-06-27 (-4d) | 2027-10-21 → 2027-10-17 (-4d) |  |  |
| HJD-P1040 | Manufacture UPS, network switches and field cabinets - Jeddah | 2027-07-01 → 2027-06-27 (-4d) | 2027-10-21 → 2027-10-17 (-4d) | 308d → 305d |  |
| LOG | **FAT and logistics** | 2027-10-24 → 2027-10-18 (-6d) | 2027-12-30 → 2027-12-26 (-4d) |  |  |
| HJD-P1050 | Factory acceptance test at vendor premises - Jeddah | 2027-10-24 → 2027-10-18 (-6d) | 2027-11-04 → 2027-10-31 (-4d) | 308d → 305d |  |
| HJD-P1060 | Shipping and customs clearance - Jeddah | 2027-11-07 → 2027-11-01 (-6d) | 2027-12-23 → 2027-12-19 (-4d) | 308d → 305d |  |
| HJD-P1070 | Delivery to station and receiving inspection - Jeddah | 2027-12-26 → 2027-12-20 (-6d) | 2027-12-30 → 2027-12-26 (-4d) | 308d → 305d |  |
| EDM | **Dammam (EWR)** | 2027-10-17 → 2027-10-13 (-4d) | 2028-02-01 → 2028-01-30 (-2d) |  |  |
| EDM-P1100 | MS4 Material delivered (20%) - Dammam | 2028-02-01 → 2028-01-30 (-2d) | 2028-02-01 → 2028-01-30 (-2d) | 329d → 324d |  |
| CCT | **CCTV system** | 2027-10-17 → 2027-10-13 (-4d) | 2027-12-14 → 2027-12-12 (-2d) |  |  |
| EDM-P1010 | Manufacture CCTV cameras and analytics - Dammam | 2027-10-17 → 2027-10-13 (-4d) | 2027-12-14 → 2027-12-12 (-2d) | 329d → 324d |  |
| VMS | **Video management and video wall** | 2027-10-17 → 2027-10-13 (-4d) | 2027-12-14 → 2027-12-12 (-2d) |  |  |
| EDM-P1020 | Manufacture video management servers, storage and video wall - Dammam | 2027-10-17 → 2027-10-13 (-4d) | 2027-12-14 → 2027-12-12 (-2d) | 329d → 324d |  |
| ACC | **Access control and intercom** | 2027-10-17 → 2027-10-13 (-4d) | 2027-12-14 → 2027-12-12 (-2d) |  |  |
| EDM-P1030 | Manufacture access control and intercom equipment - Dammam | 2027-10-17 → 2027-10-13 (-4d) | 2027-12-14 → 2027-12-12 (-2d) | 329d → 324d |  |
| UPN | **UPS, network and cabinets** | 2027-10-17 → 2027-10-13 (-4d) | 2027-12-14 → 2027-12-12 (-2d) |  |  |
| EDM-P1040 | Manufacture UPS, network switches and field cabinets - Dammam | 2027-10-17 → 2027-10-13 (-4d) | 2027-12-14 → 2027-12-12 (-2d) | 329d → 324d |  |
| LOG | **FAT and logistics** | 2027-12-15 → 2027-12-13 (-2d) | 2028-02-01 → 2028-01-30 (-2d) |  |  |
| EDM-P1050 | Factory acceptance test at vendor premises - Dammam | 2027-12-15 → 2027-12-13 (-2d) | 2027-12-28 → 2027-12-26 (-2d) | 329d → 324d |  |
| EDM-P1060 | Shipping and customs clearance - Dammam | 2027-12-29 → 2027-12-27 (-2d) | 2028-01-25 → 2028-01-23 (-2d) | 329d → 324d |  |
| EDM-P1070 | Delivery to station and receiving inspection - Dammam | 2028-01-26 → 2028-01-24 (-2d) | 2028-02-01 → 2028-01-30 (-2d) | 329d → 324d |  |
| NQS | **Al Qassim (NSR)** | 2027-12-12 → 2027-12-05 (-7d) | 2028-04-12 → 2028-04-05 (-7d) |  |  |
| NQS-P1100 | MS4 Material delivered (20%) - Al Qassim | 2028-04-12 → 2028-04-05 (-7d) | 2028-04-12 → 2028-04-05 (-7d) | 276d → 274d |  |
| CCT | **CCTV system** | 2027-12-12 → 2027-12-05 (-7d) | 2028-02-14 → 2028-02-07 (-7d) |  |  |
| NQS-P1010 | Manufacture CCTV cameras and analytics - Al Qassim | 2027-12-12 → 2027-12-05 (-7d) | 2028-02-14 → 2028-02-07 (-7d) | 276d → 274d |  |
| VMS | **Video management and video wall** | 2027-12-12 → 2027-12-05 (-7d) | 2028-02-14 → 2028-02-07 (-7d) |  |  |
| NQS-P1020 | Manufacture video management servers, storage and video wall - Al Qassim | 2027-12-12 → 2027-12-05 (-7d) | 2028-02-14 → 2028-02-07 (-7d) | 276d → 274d |  |
| ACC | **Access control and intercom** | 2027-12-12 → 2027-12-05 (-7d) | 2028-02-14 → 2028-02-07 (-7d) |  |  |
| NQS-P1030 | Manufacture access control and intercom equipment - Al Qassim | 2027-12-12 → 2027-12-05 (-7d) | 2028-02-14 → 2028-02-07 (-7d) | 276d → 274d |  |
| UPN | **UPS, network and cabinets** | 2027-12-12 → 2027-12-05 (-7d) | 2028-02-14 → 2028-02-07 (-7d) |  |  |
| NQS-P1040 | Manufacture UPS, network switches and field cabinets - Al Qassim | 2027-12-12 → 2027-12-05 (-7d) | 2028-02-14 → 2028-02-07 (-7d) | 276d → 274d |  |
| LOG | **FAT and logistics** | 2028-02-15 → 2028-02-08 (-7d) | 2028-04-12 → 2028-04-05 (-7d) |  |  |
| NQS-P1050 | Factory acceptance test at vendor premises - Al Qassim | 2028-02-15 → 2028-02-08 (-7d) | 2028-03-06 → 2028-02-28 (-7d) | 276d → 274d |  |
| NQS-P1060 | Shipping and customs clearance - Al Qassim | 2028-03-07 → 2028-02-29 (-7d) | 2028-04-05 → 2028-03-29 (-7d) | 276d → 274d |  |
| NQS-P1070 | Delivery to station and receiving inspection - Al Qassim | 2028-04-06 → 2028-03-30 (-7d) | 2028-04-12 → 2028-04-05 (-7d) | 276d → 274d |  |
| EHF | **Hufuf (EWR)** | 2027-12-12 → 2027-12-05 (-7d) | 2028-04-02 → 2028-03-26 (-7d) |  |  |
| EHF-P1100 | MS4 Material delivered (20%) - Hufuf | 2028-04-02 → 2028-03-26 (-7d) | 2028-04-02 → 2028-03-26 (-7d) | 293d → 291d |  |
| CCT | **CCTV system** | 2027-12-12 → 2027-12-05 (-7d) | 2028-02-06 → 2028-01-30 (-7d) |  |  |
| EHF-P1010 | Manufacture CCTV cameras and analytics - Hufuf | 2027-12-12 → 2027-12-05 (-7d) | 2028-02-06 → 2028-01-30 (-7d) | 293d → 291d |  |
| VMS | **Video management and video wall** | 2027-12-12 → 2027-12-05 (-7d) | 2028-02-06 → 2028-01-30 (-7d) |  |  |
| EHF-P1020 | Manufacture video management servers, storage and video wall - Hufuf | 2027-12-12 → 2027-12-05 (-7d) | 2028-02-06 → 2028-01-30 (-7d) | 293d → 291d |  |
| ACC | **Access control and intercom** | 2027-12-12 → 2027-12-05 (-7d) | 2028-02-06 → 2028-01-30 (-7d) |  |  |
| EHF-P1030 | Manufacture access control and intercom equipment - Hufuf | 2027-12-12 → 2027-12-05 (-7d) | 2028-02-06 → 2028-01-30 (-7d) | 293d → 291d |  |
| UPN | **UPS, network and cabinets** | 2027-12-12 → 2027-12-05 (-7d) | 2028-02-06 → 2028-01-30 (-7d) |  |  |
| EHF-P1040 | Manufacture UPS, network switches and field cabinets - Hufuf | 2027-12-12 → 2027-12-05 (-7d) | 2028-02-06 → 2028-01-30 (-7d) | 293d → 291d |  |
| LOG | **FAT and logistics** | 2028-02-07 → 2028-01-31 (-7d) | 2028-04-02 → 2028-03-26 (-7d) |  |  |
| EHF-P1050 | Factory acceptance test at vendor premises - Hufuf | 2028-02-07 → 2028-01-31 (-7d) | 2028-02-27 → 2028-02-13 (-14d) | 293d → 291d |  |
| EHF-P1060 | Shipping and customs clearance - Hufuf | 2028-02-28 → 2028-02-14 (-14d) | 2028-03-26 → 2028-03-19 (-7d) | 293d → 291d |  |
| EHF-P1070 | Delivery to station and receiving inspection - Hufuf | 2028-03-27 → 2028-03-20 (-7d) | 2028-04-02 → 2028-03-26 (-7d) | 293d → 291d |  |
| NMJ | **Al Majma'ah (NSR)** | 2028-01-30 → 2028-01-20 (-10d) | 2028-06-07 → 2028-05-30 (-8d) |  |  |
| NMJ-P1100 | MS4 Material delivered (20%) - Al Majma'ah | 2028-06-07 → 2028-05-30 (-8d) | 2028-06-07 → 2028-05-30 (-8d) | 241d → 240d |  |
| CCT | **CCTV system** | 2028-01-30 → 2028-01-20 (-10d) | 2028-04-10 → 2028-04-02 (-8d) |  |  |
| NMJ-P1010 | Manufacture CCTV cameras and analytics - Al Majma'ah | 2028-01-30 → 2028-01-20 (-10d) | 2028-04-10 → 2028-04-02 (-8d) | 241d → 240d |  |
| VMS | **Video management and video wall** | 2028-01-30 → 2028-01-20 (-10d) | 2028-04-10 → 2028-04-02 (-8d) |  |  |
| NMJ-P1020 | Manufacture video management servers, storage and video wall - Al Majma'ah | 2028-01-30 → 2028-01-20 (-10d) | 2028-04-10 → 2028-04-02 (-8d) | 241d → 240d |  |
| ACC | **Access control and intercom** | 2028-01-30 → 2028-01-20 (-10d) | 2028-04-10 → 2028-04-02 (-8d) |  |  |
| NMJ-P1030 | Manufacture access control and intercom equipment - Al Majma'ah | 2028-01-30 → 2028-01-20 (-10d) | 2028-04-10 → 2028-04-02 (-8d) | 241d → 240d |  |
| UPN | **UPS, network and cabinets** | 2028-01-30 → 2028-01-20 (-10d) | 2028-04-10 → 2028-04-02 (-8d) |  |  |
| NMJ-P1040 | Manufacture UPS, network switches and field cabinets - Al Majma'ah | 2028-01-30 → 2028-01-20 (-10d) | 2028-04-10 → 2028-04-02 (-8d) | 241d → 240d |  |
| LOG | **FAT and logistics** | 2028-04-11 → 2028-04-03 (-8d) | 2028-06-07 → 2028-05-30 (-8d) |  |  |

| ID | Task | Start | Finish | Total float | Other |
| --- | --- | --- | --- | --- | --- |
| NMJ-P1050 | Factory acceptance test at vendor premises - Al Majma'ah | 2028-04-11 → 2028-04-03 (-8d) | 2028-04-24 → 2028-04-16 (-8d) | 241d → 240d |  |
| NMJ-P1060 | Shipping and customs clearance - Al Majma'ah | 2028-04-25 → 2028-04-17 (-8d) | 2028-05-31 → 2028-05-23 (-8d) | 241d → 240d |  |
| NMJ-P1070 | Delivery to station and receiving inspection - Al Majma'ah | 2028-06-01 → 2028-05-24 (-8d) | 2028-06-07 → 2028-05-30 (-8d) | 241d → 240d |  |
| HKA | **KAEC (HHR)** | 2028-05-25 → 2028-05-16 (-9d) | 2028-10-15 → 2028-10-04 (-11d) |  |  |
| HKA-P1100 | MS4 Material delivered (20%) - KAEC | 2028-10-15 → 2028-10-04 (-11d) | 2028-10-15 → 2028-10-04 (-11d) |  |  |
| CCT | **CCTV system** | 2028-05-25 → 2028-05-16 (-9d) | 2028-08-16 → 2028-08-07 (-9d) |  |  |
| HKA-P1010 | Manufacture CCTV cameras and analytics - KAEC | 2028-05-25 → 2028-05-16 (-9d) | 2028-08-16 → 2028-08-07 (-9d) |  |  |
| VMS | **Video management and video wall** | 2028-05-25 → 2028-05-16 (-9d) | 2028-08-16 → 2028-08-07 (-9d) |  |  |
| HKA-P1020 | Manufacture video management servers, storage and video wall - KAEC | 2028-05-25 → 2028-05-16 (-9d) | 2028-08-16 → 2028-08-07 (-9d) |  |  |
| ACC | **Access control and intercom** | 2028-05-25 → 2028-05-16 (-9d) | 2028-08-16 → 2028-08-07 (-9d) |  |  |
| HKA-P1030 | Manufacture access control and intercom equipment - KAEC | 2028-05-25 → 2028-05-16 (-9d) | 2028-08-16 → 2028-08-07 (-9d) |  |  |
| UPN | **UPS, network and cabinets** | 2028-05-25 → 2028-05-16 (-9d) | 2028-08-16 → 2028-08-07 (-9d) |  |  |
| HKA-P1040 | Manufacture UPS, network switches and field cabinets - KAEC | 2028-05-25 → 2028-05-16 (-9d) | 2028-08-16 → 2028-08-07 (-9d) |  | resources Contract cost (BOQ x payment milestones) [447818 SAR]; Progress weight (fair EPC distribution, SAR value) [687580 SAR] → Contract cost (BOQ x payment milestones) [447818 SAR]; Progress weight (fair EPC distribution, SAR value) [688200 SAR] |
| LOG | **FAT and logistics** | 2028-08-17 → 2028-08-08 (-9d) | 2028-10-15 → 2028-10-04 (-11d) |  |  |
| HKA-P1050 | Factory acceptance test at vendor premises - KAEC | 2028-08-17 → 2028-08-08 (-9d) | 2028-08-30 → 2028-08-21 (-9d) |  |  |
| HKA-P1060 | Shipping and customs clearance - KAEC | 2028-08-31 → 2028-08-22 (-9d) | 2028-10-08 → 2028-09-27 (-11d) |  |  |
| HKA-P1070 | Delivery to station and receiving inspection - KAEC | 2028-10-09 → 2028-09-28 (-11d) | 2028-10-15 → 2028-10-04 (-11d) |  |  |
| HMD | **Madinah (HHR)** | 2028-05-25 → 2028-05-16 (-9d) | 2028-10-12 → 2028-10-03 (-9d) |  |  |
| HMD-P1100 | MS4 Material delivered (20%) - Madinah | 2028-10-12 → 2028-10-03 (-9d) | 2028-10-12 → 2028-10-03 (-9d) |  |  |
| CCT | **CCTV system** | 2028-05-25 → 2028-05-16 (-9d) | 2028-08-15 → 2028-08-06 (-9d) |  |  |
| HMD-P1010 | Manufacture CCTV cameras and analytics - Madinah | 2028-05-25 → 2028-05-16 (-9d) | 2028-08-15 → 2028-08-06 (-9d) |  |  |
| VMS | **Video management and video wall** | 2028-05-25 → 2028-05-16 (-9d) | 2028-08-15 → 2028-08-06 (-9d) |  |  |
| HMD-P1020 | Manufacture video management servers, storage and video wall - Madinah | 2028-05-25 → 2028-05-16 (-9d) | 2028-08-15 → 2028-08-06 (-9d) |  |  |
| ACC | **Access control and intercom** | 2028-05-25 → 2028-05-16 (-9d) | 2028-08-15 → 2028-08-06 (-9d) |  |  |
| HMD-P1030 | Manufacture access control and intercom equipment - Madinah | 2028-05-25 → 2028-05-16 (-9d) | 2028-08-15 → 2028-08-06 (-9d) |  |  |
| UPN | **UPS, network and cabinets** | 2028-05-25 → 2028-05-16 (-9d) | 2028-08-15 → 2028-08-06 (-9d) |  |  |
| HMD-P1040 | Manufacture UPS, network switches and field cabinets - Madinah | 2028-05-25 → 2028-05-16 (-9d) | 2028-08-15 → 2028-08-06 (-9d) |  |  |
| LOG | **FAT and logistics** | 2028-08-16 → 2028-08-07 (-9d) | 2028-10-12 → 2028-10-03 (-9d) |  |  |
| HMD-P1050 | Factory acceptance test at vendor premises - Madinah | 2028-08-16 → 2028-08-07 (-9d) | 2028-08-29 → 2028-08-20 (-9d) |  |  |
| HMD-P1060 | Shipping and customs clearance - Madinah | 2028-08-30 → 2028-08-21 (-9d) | 2028-10-05 → 2028-09-26 (-9d) |  |  |
| HMD-P1070 | Delivery to station and receiving inspection - Madinah | 2028-10-08 → 2028-09-27 (-11d) | 2028-10-12 → 2028-10-03 (-9d) |  |  |
| EAB | **Abqaiq (EWR)** | 2028-07-20 → 2028-07-09 (-11d) | 2028-10-30 → 2028-10-17 (-13d) |  |  |
| EAB-P1100 | MS4 Material delivered (20%) - Abqaiq | 2028-10-30 → 2028-10-17 (-13d) | 2028-10-30 → 2028-10-17 (-13d) | 158d → 160d |  |
| CCT | **CCTV system** | 2028-07-20 → 2028-07-09 (-11d) | 2028-09-12 → 2028-08-30 (-13d) |  |  |
| EAB-P1010 | Manufacture CCTV cameras and analytics - Abqaiq | 2028-07-20 → 2028-07-09 (-11d) | 2028-09-12 → 2028-08-30 (-13d) | 158d → 160d |  |
| VMS | **Video management and video wall** | 2028-07-20 → 2028-07-09 (-11d) | 2028-09-12 → 2028-08-30 (-13d) |  |  |
| EAB-P1020 | Manufacture video management servers, storage and video wall - Abqaiq | 2028-07-20 → 2028-07-09 (-11d) | 2028-09-12 → 2028-08-30 (-13d) | 158d → 160d |  |
| ACC | **Access control and intercom** | 2028-07-20 → 2028-07-09 (-11d) | 2028-09-12 → 2028-08-30 (-13d) |  |  |
| EAB-P1030 | Manufacture access control and intercom equipment - Abqaiq | 2028-07-20 → 2028-07-09 (-11d) | 2028-09-12 → 2028-08-30 (-13d) | 158d → 160d |  |
| UPN | **UPS, network and cabinets** | 2028-07-20 → 2028-07-09 (-11d) | 2028-09-12 → 2028-08-30 (-13d) |  |  |
| EAB-P1040 | Manufacture UPS, network switches and field cabinets - Abqaiq | 2028-07-20 → 2028-07-09 (-11d) | 2028-09-12 → 2028-08-30 (-13d) | 158d → 160d |  |
| LOG | **FAT and logistics** | 2028-09-13 → 2028-08-31 (-13d) | 2028-10-30 → 2028-10-17 (-13d) |  |  |
| EAB-P1050 | Factory acceptance test at vendor premises - Abqaiq | 2028-09-13 → 2028-08-31 (-13d) | 2028-09-26 → 2028-09-13 (-13d) | 158d → 160d |  |
| EAB-P1060 | Shipping and customs clearance - Abqaiq | 2028-09-27 → 2028-09-14 (-13d) | 2028-10-23 → 2028-10-10 (-13d) | 158d → 160d |  |
| EAB-P1070 | Delivery to station and receiving inspection - Abqaiq | 2028-10-24 → 2028-10-11 (-13d) | 2028-10-30 → 2028-10-17 (-13d) | 158d → 160d |  |
| NHL | **Hail (NSR)** | 2028-08-13 → 2028-08-02 (-11d) | 2028-12-06 → 2028-11-27 (-9d) |  |  |
| NHL-P1100 | MS4 Material delivered (20%) - Hail | 2028-12-06 → 2028-11-27 (-9d) | 2028-12-06 → 2028-11-27 (-9d) |  |  |
| CCT | **CCTV system** | 2028-08-13 → 2028-08-02 (-11d) | 2028-10-16 → 2028-10-05 (-11d) |  |  |
| NHL-P1010 | Manufacture CCTV cameras and analytics - Hail | 2028-08-13 → 2028-08-02 (-11d) | 2028-10-16 → 2028-10-05 (-11d) |  |  |
| VMS | **Video management and video wall** | 2028-08-13 → 2028-08-02 (-11d) | 2028-10-16 → 2028-10-05 (-11d) |  |  |
| NHL-P1020 | Manufacture video management servers, storage and video wall - Hail | 2028-08-13 → 2028-08-02 (-11d) | 2028-10-16 → 2028-10-05 (-11d) |  |  |
| ACC | **Access control and intercom** | 2028-08-13 → 2028-08-02 (-11d) | 2028-10-16 → 2028-10-05 (-11d) |  |  |
| NHL-P1030 | Manufacture access control and intercom equipment - Hail | 2028-08-13 → 2028-08-02 (-11d) | 2028-10-16 → 2028-10-05 (-11d) |  |  |
| UPN | **UPS, network and cabinets** | 2028-08-13 → 2028-08-02 (-11d) | 2028-10-16 → 2028-10-05 (-11d) |  |  |
| NHL-P1040 | Manufacture UPS, network switches and field cabinets - Hail | 2028-08-13 → 2028-08-02 (-11d) | 2028-10-16 → 2028-10-05 (-11d) |  |  |
| LOG | **FAT and logistics** | 2028-10-17 → 2028-10-08 (-9d) | 2028-12-06 → 2028-11-27 (-9d) |  |  |
| NHL-P1050 | Factory acceptance test at vendor premises - Hail | 2028-10-17 → 2028-10-08 (-9d) | 2028-10-30 → 2028-10-19 (-11d) |  |  |
| NHL-P1060 | Shipping and customs clearance - Hail | 2028-10-31 → 2028-10-22 (-9d) | 2028-11-29 → 2028-11-20 (-9d) |  |  |
| NHL-P1070 | Delivery to station and receiving inspection - Hail | 2028-11-30 → 2028-11-21 (-9d) | 2028-12-06 → 2028-11-27 (-9d) |  |  |
| NJF | **Al Jouf (NSR)** | 2028-10-29 → 2028-10-18 (-11d) | 2029-03-01 → 2029-02-19 (-10d) |  |  |
| NJF-P1100 | MS4 Material delivered (20%) - Al Jouf | 2029-03-01 → 2029-02-19 (-10d) | 2029-03-01 → 2029-02-19 (-10d) |  |  |
| CCT | **CCTV system** | 2028-10-29 → 2028-10-18 (-11d) | 2029-01-01 → 2028-12-21 (-11d) |  |  |
| NJF-P1010 | Manufacture CCTV cameras and analytics - Al Jouf | 2028-10-29 → 2028-10-18 (-11d) | 2029-01-01 → 2028-12-21 (-11d) |  |  |
| VMS | **Video management and video wall** | 2028-10-29 → 2028-10-18 (-11d) | 2029-01-01 → 2028-12-21 (-11d) |  |  |
| NJF-P1020 | Manufacture video management servers, storage and video wall - Al Jouf | 2028-10-29 → 2028-10-18 (-11d) | 2029-01-01 → 2028-12-21 (-11d) |  |  |
| ACC | **Access control and intercom** | 2028-10-29 → 2028-10-18 (-11d) | 2029-01-01 → 2028-12-21 (-11d) |  |  |
| NJF-P1030 | Manufacture access control and intercom equipment - Al Jouf | 2028-10-29 → 2028-10-18 (-11d) | 2029-01-01 → 2028-12-21 (-11d) |  |  |
| UPN | **UPS, network and cabinets** | 2028-10-29 → 2028-10-18 (-11d) | 2029-01-01 → 2028-12-21 (-11d) |  |  |
| NJF-P1040 | Manufacture UPS, network switches and field cabinets - Al Jouf | 2028-10-29 → 2028-10-18 (-11d) | 2029-01-01 → 2028-12-21 (-11d) |  |  |
| LOG | **FAT and logistics** | 2029-01-02 → 2028-12-24 (-9d) | 2029-03-01 → 2029-02-19 (-10d) |  |  |

| ID | Task | Start | Finish | Total float |
| --- | --- | --- | --- | --- |
| NJF-P1050 | Factory acceptance test at vendor premises - Al Jouf | 2029-01-02 → 2028-12-24 (-9d) | 2029-01-15 → 2029-01-04 (-11d) |  |
| NJF-P1060 | Shipping and customs clearance - Al Jouf | 2029-01-16 → 2029-01-07 (-9d) | 2029-02-21 → 2029-02-05 (-16d) |  |
| NJF-P1070 | Delivery to station and receiving inspection - Al Jouf | 2029-02-25 → 2029-02-06 (-19d) | 2029-03-01 → 2029-02-19 (-10d) |  |
| NQR | **Al Qurayyat (NSR)** | 2028-12-17 → 2028-12-03 (-14d) | 2029-04-19 → 2029-04-05 (-14d) |  |
| NQR-P1100 | MS4 Material delivered (20%) - Al Qurayyat | 2029-04-19 → 2029-04-05 (-14d) | 2029-04-19 → 2029-04-05 (-14d) | 21d → 24d |
| CCT | **CCTV system** | 2028-12-17 → 2028-12-03 (-14d) | 2029-02-27 → 2029-02-05 (-22d) |  |
| NQR-P1010 | Manufacture CCTV cameras and analytics - Al Qurayyat | 2028-12-17 → 2028-12-03 (-14d) | 2029-02-27 → 2029-02-05 (-22d) | 21d → 24d |
| VMS | **Video management and video wall** | 2028-12-17 → 2028-12-03 (-14d) | 2029-02-27 → 2029-02-05 (-22d) |  |
| NQR-P1020 | Manufacture video management servers, storage and video wall - Al Qurayyat | 2028-12-17 → 2028-12-03 (-14d) | 2029-02-27 → 2029-02-05 (-22d) | 21d → 24d |
| ACC | **Access control and intercom** | 2028-12-17 → 2028-12-03 (-14d) | 2029-02-27 → 2029-02-05 (-22d) |  |
| NQR-P1030 | Manufacture access control and intercom equipment - Al Qurayyat | 2028-12-17 → 2028-12-03 (-14d) | 2029-02-27 → 2029-02-05 (-22d) | 21d → 24d |
| UPN | **UPS, network and cabinets** | 2028-12-17 → 2028-12-03 (-14d) | 2029-02-27 → 2029-02-05 (-22d) |  |
| NQR-P1040 | Manufacture UPS, network switches and field cabinets - Al Qurayyat | 2028-12-17 → 2028-12-03 (-14d) | 2029-02-27 → 2029-02-05 (-22d) | 21d → 24d |
| LOG | **FAT and logistics** | 2029-02-28 → 2029-02-06 (-22d) | 2029-04-19 → 2029-04-05 (-14d) |  |
| NQR-P1050 | Factory acceptance test at vendor premises - Al Qurayyat | 2029-02-28 → 2029-02-06 (-22d) | 2029-03-13 → 2029-02-27 (-14d) | 21d → 24d |
| NQR-P1060 | Shipping and customs clearance - Al Qurayyat | 2029-03-14 → 2029-02-28 (-14d) | 2029-04-12 → 2029-03-29 (-14d) | 21d → 24d |
| NQR-P1070 | Delivery to station and receiving inspection - Al Qurayyat | 2029-04-15 → 2029-04-01 (-14d) | 2029-04-19 → 2029-04-05 (-14d) | 21d → 24d |
| CON | **Construction** |  | 2029-06-27 → 2029-06-13 (-14d) |  |
| HJD | **Jeddah (HHR)** | 2027-07-01 → 2027-06-27 (-4d) | 2028-04-11 → 2028-04-05 (-6d) |  |
| HJD-C2100 | MS5 Installation complete (20%) - Jeddah | 2028-04-11 → 2028-04-05 (-6d) | 2028-04-11 → 2028-04-05 (-6d) | 308d → 305d |
| ENA | **Enabling works** | 2027-07-01 → 2027-06-27 (-4d) | 2027-07-21 → 2027-07-15 (-6d) |  |
| HJD-X1010 | Enabling works: site preparation, setting out, temporary works and utilities clearance - Jeddah | 2027-07-01 → 2027-06-27 (-4d) | 2027-07-07 → 2027-07-01 (-6d) | 398d → 395d |
| HJD-X1020 | Enabling works: cable routes, duct-bank and cabinet plinth preparation - Jeddah | 2027-07-08 → 2027-07-04 (-4d) | 2027-07-21 → 2027-07-15 (-6d) | 398d → 395d |
| CIV | **Civil works** | 2027-07-22 → 2027-07-18 (-4d) | 2027-10-19 → 2027-10-13 (-6d) |  |
| HJD-C1010 | Civil: platform trenches and duct banks - Jeddah | 2027-07-22 → 2027-07-18 (-4d) | 2027-09-21 → 2027-09-15 (-6d) | 398d → 395d |
| HJD-C1020 | Civil: camera and ALPR pole foundations and poles - Jeddah | 2027-08-31 → 2027-08-25 (-6d) | 2027-10-19 → 2027-10-13 (-6d) | 401d → 398d |
| INS | **Installation** | 2028-01-02 → 2027-12-27 (-6d) | 2028-04-11 → 2028-04-05 (-6d) |  |
| HJD-C2010 | Install UPS, network switches and field cabinets - Jeddah | 2028-01-02 → 2027-12-27 (-6d) | 2028-01-27 → 2028-01-23 (-4d) | 308d → 305d |
| HJD-C2020 | Cabling and termination (power, fibre, data) - Jeddah | 2028-01-11 → 2028-01-05 (-6d) | 2028-03-05 → 2028-02-28 (-6d) | 308d → 305d |
| HJD-C2040 | Install video management, video wall and control-room equipment - Jeddah | 2028-01-30 → 2028-01-24 (-6d) | 2028-03-08 → 2028-03-02 (-6d) | 332d → 329d |
| HJD-C2050 | Install access control and intercom - Jeddah | 2028-02-08 → 2028-02-02 (-6d) | 2028-03-13 → 2028-03-07 (-6d) | 329d → 326d |
| HJD-C2030 | Install and aim CCTV cameras - Jeddah | 2028-03-06 → 2028-02-29 (-6d) | 2028-04-11 → 2028-04-05 (-6d) | 308d → 305d |
| EDM | **Dammam (EWR)** | 2027-10-17 → 2027-10-13 (-4d) | 2028-04-02 → 2028-03-29 (-4d) |  |
| EDM-C2100 | MS5 Installation complete (20%) - Dammam | 2028-04-02 → 2028-03-29 (-4d) | 2028-04-02 → 2028-03-29 (-4d) | 329d → 324d |
| ENA | **Enabling works** | 2027-10-17 → 2027-10-13 (-4d) | 2027-11-04 → 2027-11-02 (-2d) |  |
| EDM-X1010 | Enabling works: site preparation, setting out, temporary works and utilities clearance - Dammam | 2027-10-17 → 2027-10-13 (-4d) | 2027-10-21 → 2027-10-19 (-2d) | 337d → 332d |
| EDM-X1020 | Enabling works: cable routes, duct-bank and cabinet plinth preparation - Dammam | 2027-10-24 → 2027-10-20 (-4d) | 2027-11-04 → 2027-11-02 (-2d) | 337d → 332d |
| CIV | **Civil works** | 2027-11-07 → 2027-11-03 (-4d) | 2028-02-29 → 2028-02-27 (-2d) |  |
| EDM-C1010 | Civil: platform trenches and duct banks - Dammam | 2027-11-07 → 2027-11-03 (-4d) | 2028-01-20 → 2028-01-18 (-2d) | 337d → 332d |
| EDM-C1020 | Civil: camera and ALPR pole foundations and poles - Dammam | 2027-12-26 → 2027-12-22 (-4d) | 2028-02-29 → 2028-02-27 (-2d) | 337d → 332d |
| INS | **Installation** | 2028-02-02 → 2028-01-31 (-2d) | 2028-04-02 → 2028-03-29 (-4d) |  |
| EDM-C2010 | Install UPS, network switches and field cabinets - Dammam | 2028-02-02 → 2028-01-31 (-2d) | 2028-02-16 → 2028-02-14 (-2d) | 329d → 324d |
| EDM-C2020 | Cabling and termination (power, fibre, data) - Dammam | 2028-02-08 → 2028-02-06 (-2d) | 2028-03-12 → 2028-03-08 (-4d) | 329d → 324d |
| EDM-C2040 | Install video management, video wall and control-room equipment - Dammam | 2028-02-17 → 2028-02-15 (-2d) | 2028-03-13 → 2028-03-09 (-4d) | 343d → 338d |
| EDM-C2050 | Install access control and intercom - Dammam | 2028-03-01 → 2028-02-28 (-2d) | 2028-03-15 → 2028-03-13 (-2d) | 341d → 336d |
| EDM-C2030 | Install and aim CCTV cameras - Dammam | 2028-03-13 → 2028-03-09 (-4d) | 2028-04-02 → 2028-03-29 (-4d) | 329d → 324d |
| NQS | **Al Qassim (NSR)** | 2027-12-12 → 2027-12-05 (-7d) | 2028-06-20 → 2028-06-13 (-7d) |  |
| NQS-C2100 | MS5 Installation complete (20%) - Al Qassim | 2028-06-20 → 2028-06-13 (-7d) | 2028-06-20 → 2028-06-13 (-7d) | 276d → 274d |
| ENA | **Enabling works** | 2027-12-12 → 2027-12-05 (-7d) | 2027-12-30 → 2027-12-23 (-7d) |  |
| NQS-X1010 | Enabling works: site preparation, setting out, temporary works and utilities clearance - Al Qassim | 2027-12-12 → 2027-12-05 (-7d) | 2027-12-16 → 2027-12-09 (-7d) | 289d → 287d |
| NQS-X1020 | Enabling works: cable routes, duct-bank and cabinet plinth preparation - Al Qassim | 2027-12-19 → 2027-12-12 (-7d) | 2027-12-30 → 2027-12-23 (-7d) | 289d → 287d |
| CIV | **Civil works** | 2028-01-02 → 2027-12-26 (-7d) | 2028-05-08 → 2028-04-24 (-14d) |  |
| NQS-C1010 | Civil: platform trenches and duct banks - Al Qassim | 2028-01-02 → 2027-12-26 (-7d) | 2028-03-27 → 2028-03-20 (-7d) | 289d → 287d |
| NQS-C1020 | Civil: camera and ALPR pole foundations and poles - Al Qassim | 2028-02-29 → 2028-02-15 (-14d) | 2028-05-08 → 2028-04-24 (-14d) | 289d → 287d |
| INS | **Installation** | 2028-04-13 → 2028-04-06 (-7d) | 2028-06-20 → 2028-06-13 (-7d) |  |
| NQS-C2010 | Install UPS, network switches and field cabinets - Al Qassim | 2028-04-13 → 2028-04-06 (-7d) | 2028-05-08 → 2028-04-24 (-14d) | 276d → 274d |
| NQS-C2020 | Cabling and termination (power, fibre, data) - Al Qassim | 2028-04-19 → 2028-04-12 (-7d) | 2028-05-25 → 2028-05-18 (-7d) | 276d → 274d |
| NQS-C2040 | Install video management, video wall and control-room equipment - Al Qassim | 2028-05-09 → 2028-04-25 (-14d) | 2028-05-29 → 2028-05-22 (-7d) | 292d → 290d |
| NQS-C2050 | Install access control and intercom - Al Qassim | 2028-05-15 → 2028-05-08 (-7d) | 2028-05-31 → 2028-05-24 (-7d) | 290d → 288d |
| NQS-C2030 | Install and aim CCTV cameras - Al Qassim | 2028-05-28 → 2028-05-21 (-7d) | 2028-06-20 → 2028-06-13 (-7d) | 276d → 274d |
| EHF | **Hufuf (EWR)** | 2027-12-12 → 2027-12-05 (-7d) | 2028-05-29 → 2028-05-22 (-7d) |  |
| EHF-C2100 | MS5 Installation complete (20%) - Hufuf | 2028-05-29 → 2028-05-22 (-7d) | 2028-05-29 → 2028-05-22 (-7d) | 293d → 291d |
| ENA | **Enabling works** | 2027-12-12 → 2027-12-05 (-7d) | 2027-12-30 → 2027-12-23 (-7d) |  |
| EHF-X1010 | Enabling works: site preparation, setting out, temporary works and utilities clearance - Hufuf | 2027-12-12 → 2027-12-05 (-7d) | 2027-12-16 → 2027-12-09 (-7d) | 301d → 299d |
| EHF-X1020 | Enabling works: cable routes, duct-bank and cabinet plinth preparation - Hufuf | 2027-12-19 → 2027-12-12 (-7d) | 2027-12-30 → 2027-12-23 (-7d) | 301d → 299d |
| CIV | **Civil works** | 2028-01-02 → 2027-12-26 (-7d) | 2028-04-20 → 2028-04-13 (-7d) |  |
| EHF-C1010 | Civil: platform trenches and duct banks - Hufuf | 2028-01-02 → 2027-12-26 (-7d) | 2028-03-21 → 2028-03-14 (-7d) | 301d → 299d |
| EHF-C1020 | Civil: camera and ALPR pole foundations and poles - Hufuf | 2028-02-17 → 2028-02-10 (-7d) | 2028-04-20 → 2028-04-13 (-7d) | 301d → 299d |
| INS | **Installation** | 2028-04-03 → 2028-03-27 (-7d) | 2028-05-29 → 2028-05-22 (-7d) |  |
| EHF-C2010 | Install UPS, network switches and field cabinets - Hufuf | 2028-04-03 → 2028-03-27 (-7d) | 2028-04-17 → 2028-04-10 (-7d) | 293d → 291d |

| ID | Task | Start | Finish | Total float |
| --- | --- | --- | --- | --- |
| EHF-C2020 | Cabling and termination (power, fibre, data) - Hufuf | 2028-04-09 → 2028-04-02 (-7d) | 2028-05-09 → 2028-04-25 (-14d) | 293d → 291d |
| EHF-C2040 | Install video management, video wall and control-room equipment - Hufuf | 2028-04-18 → 2028-04-11 (-7d) | 2028-05-10 → 2028-04-26 (-14d) | 306d → 304d |
| EHF-C2050 | Install access control and intercom - Hufuf | 2028-04-24 → 2028-04-17 (-7d) | 2028-05-15 → 2028-05-08 (-7d) | 303d → 301d |
| EHF-C2030 | Install and aim CCTV cameras - Hufuf | 2028-05-10 → 2028-04-26 (-14d) | 2028-05-29 → 2028-05-22 (-7d) | 293d → 291d |
| NMJ | **Al Majma'ah (NSR)** | 2028-01-30 → 2028-01-20 (-10d) | 2028-08-08 → 2028-07-31 (-8d) |  |
| NMJ-C2100 | MS5 Installation complete (20%) - Al Majma'ah | 2028-08-08 → 2028-07-31 (-8d) | 2028-08-08 → 2028-07-31 (-8d) | 241d → 240d |
| ENA | **Enabling works** | 2028-01-30 → 2028-01-20 (-10d) | 2028-02-17 → 2028-02-09 (-8d) |  |
| NMJ-X1010 | Enabling works: site preparation, setting out, temporary works and utilities clearance - Al Majma'ah | 2028-01-30 → 2028-01-20 (-10d) | 2028-02-03 → 2028-01-26 (-8d) | 254d → 253d |
| NMJ-X1020 | Enabling works: cable routes, duct-bank and cabinet plinth preparation - Al Majma'ah | 2028-02-06 → 2028-01-27 (-10d) | 2028-02-17 → 2028-02-09 (-8d) | 254d → 253d |
| CIV | **Civil works** | 2028-02-27 → 2028-02-10 (-17d) | 2028-06-26 → 2028-06-18 (-8d) |  |
| NMJ-C1010 | Civil: platform trenches and duct banks - Al Majma'ah | 2028-02-27 → 2028-02-10 (-17d) | 2028-05-22 → 2028-05-14 (-8d) | 254d → 253d |
| NMJ-C1020 | Civil: camera and ALPR pole foundations and poles - Al Majma'ah | 2028-04-18 → 2028-04-10 (-8d) | 2028-06-26 → 2028-06-18 (-8d) | 254d → 253d |
| INS | **Installation** | 2028-06-08 → 2028-05-31 (-8d) | 2028-08-08 → 2028-07-31 (-8d) |  |
| NMJ-C2010 | Install UPS, network switches and field cabinets - Al Majma'ah | 2028-06-08 → 2028-05-31 (-8d) | 2028-06-26 → 2028-06-18 (-8d) | 241d → 240d |
| NMJ-C2020 | Cabling and termination (power, fibre, data) - Al Majma'ah | 2028-06-14 → 2028-06-06 (-8d) | 2028-07-13 → 2028-07-05 (-8d) | 241d → 240d |
| NMJ-C2040 | Install video management, video wall and control-room equipment - Al Majma'ah | 2028-06-27 → 2028-06-19 (-8d) | 2028-07-17 → 2028-07-09 (-8d) | 257d → 256d |
| NMJ-C2050 | Install access control and intercom - Al Majma'ah | 2028-07-03 → 2028-06-25 (-8d) | 2028-07-19 → 2028-07-11 (-8d) | 255d → 254d |
| NMJ-C2030 | Install and aim CCTV cameras - Al Majma'ah | 2028-07-16 → 2028-07-06 (-10d) | 2028-08-08 → 2028-07-31 (-8d) | 241d → 240d |
| HKA | **KAEC (HHR)** | 2028-05-25 → 2028-05-16 (-9d) | 2029-01-17 → 2029-01-08 (-9d) |  |
| HKA-C2100 | MS5 Installation complete (20%) - KAEC | 2029-01-17 → 2029-01-08 (-9d) | 2029-01-17 → 2029-01-08 (-9d) |  |
| ENA | **Enabling works** | 2028-05-25 → 2028-05-16 (-9d) | 2028-06-14 → 2028-06-05 (-9d) |  |
| HKA-X1010 | Enabling works: site preparation, setting out, temporary works and utilities clearance - KAEC | 2028-05-25 → 2028-05-16 (-9d) | 2028-05-31 → 2028-05-22 (-9d) |  |
| HKA-X1020 | Enabling works: cable routes, duct-bank and cabinet plinth preparation - KAEC | 2028-06-01 → 2028-05-23 (-9d) | 2028-06-14 → 2028-06-05 (-9d) |  |
| CIV | **Civil works** | 2028-06-15 → 2028-06-06 (-9d) | 2028-08-03 → 2028-07-25 (-9d) |  |
| HKA-C1010 | Civil: platform trenches and duct banks - KAEC | 2028-06-15 → 2028-06-06 (-9d) | 2028-07-19 → 2028-07-10 (-9d) |  |
| HKA-C1020 | Civil: camera and ALPR pole foundations and poles - KAEC | 2028-07-09 → 2028-06-28 (-11d) | 2028-08-03 → 2028-07-25 (-9d) |  |
| INS | **Installation** | 2028-10-16 → 2028-10-05 (-11d) | 2029-01-17 → 2029-01-08 (-9d) |  |
| HKA-C2010 | Install UPS, network switches and field cabinets - KAEC | 2028-10-16 → 2028-10-05 (-11d) | 2028-11-12 → 2028-11-01 (-11d) |  |
| HKA-C2020 | Cabling and termination (power, fibre, data) - KAEC | 2028-10-25 → 2028-10-16 (-9d) | 2028-12-11 → 2028-11-30 (-11d) |  |
| HKA-C2040 | Install video management, video wall and control-room equipment - KAEC | 2028-11-13 → 2028-11-02 (-11d) | 2028-12-13 → 2028-12-04 (-9d) |  |
| HKA-C2050 | Install access control and intercom - KAEC | 2028-11-22 → 2028-11-13 (-9d) | 2028-12-19 → 2028-12-10 (-9d) |  |
| HKA-C2030 | Install and aim CCTV cameras - KAEC | 2028-12-12 → 2028-12-03 (-9d) | 2029-01-17 → 2029-01-08 (-9d) |  |
| HMD | **Madinah (HHR)** | 2028-05-25 → 2028-05-16 (-9d) | 2029-01-22 → 2029-01-11 (-11d) |  |
| HMD-C2100 | MS5 Installation complete (20%) - Madinah | 2029-01-22 → 2029-01-11 (-11d) | 2029-01-22 → 2029-01-11 (-11d) |  |
| ENA | **Enabling works** | 2028-05-25 → 2028-05-16 (-9d) | 2028-06-14 → 2028-06-05 (-9d) |  |
| HMD-X1010 | Enabling works: site preparation, setting out, temporary works and utilities clearance - Madinah | 2028-05-25 → 2028-05-16 (-9d) | 2028-05-31 → 2028-05-22 (-9d) |  |
| HMD-X1020 | Enabling works: cable routes, duct-bank and cabinet plinth preparation - Madinah | 2028-06-01 → 2028-05-23 (-9d) | 2028-06-14 → 2028-06-05 (-9d) |  |
| CIV | **Civil works** | 2028-06-15 → 2028-06-06 (-9d) | 2028-08-15 → 2028-08-06 (-9d) |  |
| HMD-C1010 | Civil: platform trenches and duct banks - Madinah | 2028-06-15 → 2028-06-06 (-9d) | 2028-07-27 → 2028-07-18 (-9d) |  |
| HMD-C1020 | Civil: camera and ALPR pole foundations and poles - Madinah | 2028-07-13 → 2028-07-04 (-9d) | 2028-08-15 → 2028-08-06 (-9d) |  |
| INS | **Installation** | 2028-10-15 → 2028-10-04 (-11d) | 2029-01-22 → 2029-01-11 (-11d) |  |
| HMD-C2010 | Install UPS, network switches and field cabinets - Madinah | 2028-10-15 → 2028-10-04 (-11d) | 2028-11-13 → 2028-11-02 (-11d) |  |
| HMD-C2020 | Cabling and termination (power, fibre, data) - Madinah | 2028-10-24 → 2028-10-15 (-9d) | 2028-12-12 → 2028-12-03 (-9d) |  |
| HMD-C2040 | Install video management, video wall and control-room equipment - Madinah | 2028-11-14 → 2028-11-05 (-9d) | 2028-12-18 → 2028-12-07 (-11d) |  |
| HMD-C2050 | Install access control and intercom - Madinah | 2028-11-23 → 2028-11-14 (-9d) | 2028-12-24 → 2028-12-13 (-11d) |  |
| HMD-C2030 | Install and aim CCTV cameras - Madinah | 2028-12-13 → 2028-12-04 (-9d) | 2029-01-22 → 2029-01-11 (-11d) |  |
| EAB | **Abqaiq (EWR)** | 2028-07-20 → 2028-07-09 (-11d) | 2028-12-05 → 2028-11-22 (-13d) |  |
| EAB-C2100 | MS5 Installation complete (20%) - Abqaiq | 2028-12-05 → 2028-11-22 (-13d) | 2028-12-05 → 2028-11-22 (-13d) | 158d → 160d |
| ENA | **Enabling works** | 2028-07-20 → 2028-07-09 (-11d) | 2028-08-09 → 2028-07-27 (-13d) |  |
| EAB-X1010 | Enabling works: site preparation, setting out, temporary works and utilities clearance - Abqaiq | 2028-07-20 → 2028-07-09 (-11d) | 2028-07-26 → 2028-07-13 (-13d) | 181d → 183d |
| EAB-X1020 | Enabling works: cable routes, duct-bank and cabinet plinth preparation - Abqaiq | 2028-07-27 → 2028-07-16 (-11d) | 2028-08-09 → 2028-07-27 (-13d) | 181d → 183d |
| CIV | **Civil works** | 2028-08-10 → 2028-07-30 (-11d) | 2028-10-19 → 2028-10-08 (-11d) |  |
| EAB-C1010 | Civil: platform trenches and duct banks - Abqaiq | 2028-08-10 → 2028-07-30 (-11d) | 2028-09-28 → 2028-09-17 (-11d) | 181d → 183d |
| EAB-C1020 | Civil: camera and ALPR pole foundations and poles - Abqaiq | 2028-09-12 → 2028-08-30 (-13d) | 2028-10-19 → 2028-10-08 (-11d) | 181d → 183d |
| INS | **Installation** | 2028-10-31 → 2028-10-18 (-13d) | 2028-12-05 → 2028-11-22 (-13d) |  |
| EAB-C2010 | Install UPS, network switches and field cabinets - Abqaiq | 2028-10-31 → 2028-10-18 (-13d) | 2028-11-09 → 2028-10-29 (-11d) | 158d → 160d |
| EAB-C2020 | Cabling and termination (power, fibre, data) - Abqaiq | 2028-11-05 → 2028-10-23 (-13d) | 2028-11-21 → 2028-11-08 (-13d) | 158d → 160d |
| EAB-C2040 | Install video management, video wall and control-room equipment - Abqaiq | 2028-11-12 → 2028-10-30 (-13d) | 2028-11-22 → 2028-11-09 (-13d) | 167d → 169d |
| EAB-C2050 | Install access control and intercom - Abqaiq | 2028-11-15 → 2028-11-02 (-13d) | 2028-11-26 → 2028-11-13 (-13d) | 165d → 167d |
| EAB-C2030 | Install and aim CCTV cameras - Abqaiq | 2028-11-22 → 2028-11-09 (-13d) | 2028-12-05 → 2028-11-22 (-13d) | 158d → 160d |
| NHL | **Hail (NSR)** | 2028-08-13 → 2028-08-02 (-11d) | 2029-02-06 → 2029-01-28 (-9d) |  |
| NHL-C2100 | MS5 Installation complete (20%) - Hail | 2029-02-06 → 2029-01-28 (-9d) | 2029-02-06 → 2029-01-28 (-9d) |  |
| ENA | **Enabling works** | 2028-08-13 → 2028-08-02 (-11d) | 2028-08-31 → 2028-08-22 (-9d) |  |
| NHL-X1010 | Enabling works: site preparation, setting out, temporary works and utilities clearance - Hail | 2028-08-13 → 2028-08-02 (-11d) | 2028-08-17 → 2028-08-08 (-9d) |  |
| NHL-X1020 | Enabling works: cable routes, duct-bank and cabinet plinth preparation - Hail | 2028-08-20 → 2028-08-09 (-11d) | 2028-08-31 → 2028-08-22 (-9d) |  |
| CIV | **Civil works** | 2028-09-03 → 2028-08-23 (-11d) | 2028-12-25 → 2028-12-14 (-11d) |  |
| NHL-C1010 | Civil: platform trenches and duct banks - Hail | 2028-09-03 → 2028-08-23 (-11d) | 2028-11-20 → 2028-11-09 (-11d) |  |
| NHL-C1020 | Civil: camera and ALPR pole foundations and poles - Hail | 2028-10-24 → 2028-10-15 (-9d) | 2028-12-25 → 2028-12-14 (-11d) |  |
| INS | **Installation** | 2028-12-07 → 2028-11-28 (-9d) | 2029-02-06 → 2029-01-28 (-9d) |  |
| NHL-C2010 | Install UPS, network switches and field cabinets - Hail | 2028-12-07 → 2028-11-28 (-9d) | 2028-12-25 → 2028-12-14 (-11d) |  |

| ID | Task | Start | Finish | Duration | Total float |
| --- | --- | --- | --- | --- | --- |
| NHL-C2020 | Cabling and termination (power, fibre, data) - Hail | 2028-12-13 → 2028-12-04 (-9d) | 2029-01-11 → 2029-01-02 (-9d) |  |  |
| NHL-C2040 | Install video management, video wall and control-room equipment - Hail | 2028-12-26 → 2028-12-17 (-9d) | 2029-01-15 → 2029-01-04 (-11d) |  |  |
| NHL-C2050 | Install access control and intercom - Hail | 2029-01-01 → 2028-12-21 (-11d) | 2029-01-17 → 2029-01-08 (-9d) |  |  |
| NHL-C2030 | Install and aim CCTV cameras - Hail | 2029-01-14 → 2029-01-03 (-11d) | 2029-02-06 → 2029-01-28 (-9d) |  |  |
| NJF | **Al Jouf (NSR)** | 2028-10-29 → 2028-10-18 (-11d) | 2029-05-09 → 2029-04-30 (-9d) |  |  |
| NJF-C2100 | MS5 Installation complete (20%) - Al Jouf | 2029-05-09 → 2029-04-30 (-9d) | 2029-05-09 → 2029-04-30 (-9d) |  |  |
| ENA | **Enabling works** | 2028-10-29 → 2028-10-18 (-11d) | 2028-11-16 → 2028-11-07 (-9d) |  |  |
| NJF-X1010 | Enabling works: site preparation, setting out, temporary works and utilities clearance - Al Jouf | 2028-10-29 → 2028-10-18 (-11d) | 2028-11-02 → 2028-10-24 (-9d) |  |  |
| NJF-X1020 | Enabling works: cable routes, duct-bank and cabinet plinth preparation - Al Jouf | 2028-11-05 → 2028-10-25 (-11d) | 2028-11-16 → 2028-11-07 (-9d) |  |  |
| CIV | **Civil works** | 2028-11-19 → 2028-11-08 (-11d) | 2029-03-20 → 2029-03-11 (-9d) |  |  |
| NJF-C1010 | Civil: platform trenches and duct banks - Al Jouf | 2028-11-19 → 2028-11-08 (-11d) | 2029-02-05 → 2029-01-25 (-11d) |  |  |
| NJF-C1020 | Civil: camera and ALPR pole foundations and poles - Al Jouf | 2029-01-09 → 2028-12-31 (-9d) | 2029-03-20 → 2029-03-11 (-9d) |  |  |
| INS | **Installation** | 2029-03-04 → 2029-02-20 (-12d) | 2029-05-09 → 2029-04-30 (-9d) |  |  |
| NJF-C2010 | Install UPS, network switches and field cabinets - Al Jouf | 2029-03-04 → 2029-02-20 (-12d) | 2029-03-20 → 2029-03-11 (-9d) |  |  |
| NJF-C2020 | Cabling and termination (power, fibre, data) - Al Jouf | 2029-03-08 → 2029-02-27 (-9d) | 2029-04-08 → 2029-03-28 (-11d) |  |  |
| NJF-C2040 | Install video management, video wall and control-room equipment - Al Jouf | 2029-03-21 → 2029-03-12 (-9d) | 2029-04-10 → 2029-04-01 (-9d) |  |  |
| NJF-C2050 | Install access control and intercom - Al Jouf | 2029-03-27 → 2029-03-18 (-9d) | 2029-04-12 → 2029-04-03 (-9d) |  |  |
| NJF-C2030 | Install and aim CCTV cameras - Al Jouf | 2029-04-09 → 2029-03-29 (-11d) | 2029-05-09 → 2029-04-30 (-9d) |  |  |
| NQR | **Al Qurayyat (NSR)** | 2028-12-17 → 2028-12-03 (-14d) | 2029-06-27 → 2029-06-13 (-14d) |  |  |
| NQR-C2100 | MS5 Installation complete (20%) - Al Qurayyat | 2029-06-27 → 2029-06-13 (-14d) | 2029-06-27 → 2029-06-13 (-14d) |  | 21d → 24d |
| ENA | **Enabling works** | 2028-12-17 → 2028-12-03 (-14d) | 2029-01-04 → 2028-12-21 (-14d) |  |  |
| NQR-X1010 | Enabling works: site preparation, setting out, temporary works and utilities clearance - Al Qurayyat | 2028-12-17 → 2028-12-03 (-14d) | 2028-12-21 → 2028-12-07 (-14d) |  | 34d → 37d |
| NQR-X1020 | Enabling works: cable routes, duct-bank and cabinet plinth preparation - Al Qurayyat | 2028-12-24 → 2028-12-10 (-14d) | 2029-01-04 → 2028-12-21 (-14d) |  | 34d → 37d |
| CIV | **Civil works** | 2029-01-07 → 2028-12-24 (-14d) | 2029-05-15 → 2029-05-01 (-14d) |  |  |
| NQR-C1010 | Civil: platform trenches and duct banks - Al Qurayyat | 2029-01-07 → 2028-12-24 (-14d) | 2029-04-03 → 2029-03-20 (-14d) |  | 34d → 37d |
| NQR-C1020 | Civil: camera and ALPR pole foundations and poles - Al Qurayyat | 2029-03-07 → 2029-02-20 (-15d) | 2029-05-15 → 2029-05-01 (-14d) |  | 34d → 37d |
| INS | **Installation** | 2029-04-29 → 2029-04-08 (-21d) | 2029-06-27 → 2029-06-13 (-14d) |  |  |
| NQR-C2010 | Install UPS, network switches and field cabinets - Al Qurayyat | 2029-04-29 → 2029-04-08 (-21d) | 2029-05-15 → 2029-05-01 (-14d) |  | 21d → 24d |
| NQR-C2020 | Cabling and termination (power, fibre, data) - Al Qurayyat | 2029-05-03 → 2029-04-12 (-21d) | 2029-06-03 → 2029-05-20 (-14d) |  | 21d → 24d |
| NQR-C2040 | Install video management, video wall and control-room equipment - Al Qurayyat | 2029-05-16 → 2029-05-02 (-14d) | 2029-06-05 → 2029-05-22 (-14d) |  | 37d → 40d |
| NQR-C2050 | Install access control and intercom - Al Qurayyat | 2029-05-22 → 2029-05-08 (-14d) | 2029-06-07 → 2029-05-24 (-14d) |  | 35d → 38d |
| NQR-C2030 | Install and aim CCTV cameras - Al Qurayyat | 2029-06-04 → 2029-05-21 (-14d) | 2029-06-27 → 2029-06-13 (-14d) |  | 21d → 24d |
| COM | **Commissioning and Handover** |  | 2029-09-17 → 2029-09-12 (-5d) |  |  |
| NRY | **Riyadh (Thumamah) (NSR)** |  | 2028-01-24 → 2028-02-02 (+9d) |  |  |
| NRY-T3100 | MS7 Station accepted - final acceptance and handover (10%) - Riyadh (Thumamah) | 2028-01-24 → 2028-02-02 (+9d) | 2028-01-24 → 2028-02-02 (+9d) |  | 430d → 423d |
| TOA | **Trial operation and acceptance** |  | 2028-01-24 → 2028-02-02 (+9d) |  |  |
| NRY-T3010 | Taking-over application, SAR review and handover - Riyadh (Thumamah) |  | 2028-01-24 → 2028-02-02 (+9d) | 15d → 22d | 430d → 423d |
| HMK | **Makkah (HHR)** |  | 2028-06-27 → 2028-07-06 (+9d) |  |  |
| HMK-T3100 | MS7 Station accepted - final acceptance and handover (10%) - Makkah | 2028-06-27 → 2028-07-06 (+9d) | 2028-06-27 → 2028-07-06 (+9d) |  | 329d → 322d |
| TOA | **Trial operation and acceptance** |  | 2028-06-27 → 2028-07-06 (+9d) |  |  |
| HMK-T3010 | Taking-over application, SAR review and handover - Makkah |  | 2028-06-27 → 2028-07-06 (+9d) | 15d → 22d | 329d → 322d |
| ERY | **Riyadh (Malaz) (EWR)** |  | 2028-01-05 → 2028-01-16 (+11d) |  |  |
| ERY-T3100 | MS7 Station accepted - final acceptance and handover (10%) - Riyadh (Malaz) | 2028-01-05 → 2028-01-16 (+11d) | 2028-01-05 → 2028-01-16 (+11d) |  | 443d → 436d |
| TOA | **Trial operation and acceptance** |  | 2028-01-05 → 2028-01-16 (+11d) |  |  |
| ERY-T3010 | Taking-over application, SAR review and handover - Riyadh (Malaz) |  | 2028-01-05 → 2028-01-16 (+11d) | 15d → 22d | 443d → 436d |
| HJD | **Jeddah (HHR)** | 2028-04-12 → 2028-04-06 (-6d) | 2028-07-26 → 2028-07-31 (+5d) |  |  |
| HJD-T1100 | MS6 SAT complete (10%) - Jeddah | 2028-05-24 → 2028-05-18 (-6d) | 2028-05-24 → 2028-05-18 (-6d) |  | 338d → 335d |
| HJD-T3100 | MS7 Station accepted - final acceptance and handover (10%) - Jeddah | 2028-07-26 → 2028-07-31 (+5d) | 2028-07-26 → 2028-07-31 (+5d) |  | 308d → 305d |
| TST | **Testing and commissioning** | 2028-04-12 → 2028-04-06 (-6d) | 2028-05-24 → 2028-05-18 (-6d) |  |  |
| HJD-T1010 | Pre-commissioning and loop checks - Jeddah | 2028-04-12 → 2028-04-06 (-6d) | 2028-04-25 → 2028-04-19 (-6d) |  | 308d → 305d |
| HJD-T1020 | Site acceptance test (SAT) and commissioning - Jeddah | 2028-04-26 → 2028-04-20 (-6d) | 2028-05-24 → 2028-05-18 (-6d) |  | 308d → 305d |
| TRN | **Training** | 2028-05-25 → 2028-05-21 (-4d) | 2028-06-07 → 2028-06-01 (-6d) |  |  |
| HJD-T2010 | Operator and maintenance training - Jeddah | 2028-05-25 → 2028-05-21 (-4d) | 2028-06-07 → 2028-06-01 (-6d) |  | 328d → 325d |
| TOA | **Trial operation and acceptance** | 2028-05-25 → 2028-05-21 (-4d) | 2028-07-26 → 2028-07-31 (+5d) |  |  |
| HJD-T2020 | Trial operation (maximum 45 days) - Jeddah | 2028-05-25 → 2028-05-21 (-4d) | 2028-07-05 → 2028-06-29 (-6d) |  | 308d → 305d |
| HJD-T3010 | Taking-over application, SAR review and handover - Jeddah | 2028-07-06 → 2028-07-02 (-4d) | 2028-07-26 → 2028-07-31 (+5d) | 15d → 22d | 308d → 305d |
| EDM | **Dammam (EWR)** | 2028-04-03 → 2028-03-30 (-4d) | 2028-06-27 → 2028-07-04 (+7d) |  |  |
| EDM-T1100 | MS6 SAT complete (10%) - Dammam | 2028-04-18 → 2028-04-16 (-2d) | 2028-04-18 → 2028-04-16 (-2d) |  | 359d → 354d |
| EDM-T3100 | MS7 Station accepted - final acceptance and handover (10%) - Dammam | 2028-06-27 → 2028-07-04 (+7d) | 2028-06-27 → 2028-07-04 (+7d) |  | 329d → 324d |
| TST | **Testing and commissioning** | 2028-04-03 → 2028-03-30 (-4d) | 2028-04-18 → 2028-04-16 (-2d) |  |  |
| EDM-T1010 | Pre-commissioning and loop checks - Dammam | 2028-04-03 → 2028-03-30 (-4d) | 2028-04-09 → 2028-04-05 (-4d) |  | 329d → 324d |
| EDM-T1020 | Site acceptance test (SAT) and commissioning - Dammam | 2028-04-10 → 2028-04-06 (-4d) | 2028-04-18 → 2028-04-16 (-2d) |  | 329d → 324d |
| TRN | **Training** | 2028-04-19 → 2028-04-17 (-2d) | 2028-05-09 → 2028-05-07 (-2d) |  |  |
| EDM-T2010 | Operator and maintenance training - Dammam | 2028-04-19 → 2028-04-17 (-2d) | 2028-05-09 → 2028-05-07 (-2d) |  | 349d → 344d |
| TOA | **Trial operation and acceptance** | 2028-04-19 → 2028-04-17 (-2d) | 2028-06-27 → 2028-07-04 (+7d) |  |  |
| EDM-T2020 | Trial operation (maximum 45 days) - Dammam | 2028-04-19 → 2028-04-17 (-2d) | 2028-06-06 → 2028-06-04 (-2d) |  | 329d → 324d |
| EDM-T3010 | Taking-over application, SAR review and handover - Dammam | 2028-06-07 → 2028-06-05 (-2d) | 2028-06-27 → 2028-07-04 (+7d) | 15d → 22d | 329d → 324d |
| NQS | **Al Qassim (NSR)** | 2028-06-21 → 2028-06-14 (-7d) | 2028-09-10 → 2028-09-12 (+2d) |  |  |
| NQS-T1100 | MS6 SAT complete (10%) - Al Qassim | 2028-07-09 → 2028-07-02 (-7d) | 2028-07-09 → 2028-07-02 (-7d) |  | 306d → 304d |
| NQS-T3100 | MS7 Station accepted - final acceptance and handover (10%) - Al Qassim | 2028-09-10 → 2028-09-12 (+2d) | 2028-09-10 → 2028-09-12 (+2d) |  | 276d → 274d |

| ID | Task | Start | Finish | Duration | Total float |
| --- | --- | --- | --- | --- | --- |
| TST | **Testing and commissioning** | 2028-06-21 → 2028-06-14 (-7d) | 2028-07-09 → 2028-07-02 (-7d) |  |  |
| NQS-T1010 | Pre-commissioning and loop checks - Al Qassim | 2028-06-21 → 2028-06-14 (-7d) | 2028-06-27 → 2028-06-20 (-7d) |  | 276d → 274d |
| NQS-T1020 | Site acceptance test (SAT) and commissioning - Al Qassim | 2028-06-28 → 2028-06-21 (-7d) | 2028-07-09 → 2028-07-02 (-7d) |  | 276d → 274d |
| TRN | **Training** | 2028-07-10 → 2028-07-03 (-7d) | 2028-07-23 → 2028-07-16 (-7d) |  |  |
| NQS-T2010 | Operator and maintenance training - Al Qassim | 2028-07-10 → 2028-07-03 (-7d) | 2028-07-23 → 2028-07-16 (-7d) |  | 296d → 294d |
| TOA | **Trial operation and acceptance** | 2028-07-10 → 2028-07-03 (-7d) | 2028-09-10 → 2028-09-12 (+2d) |  |  |
| NQS-T2020 | Trial operation (maximum 45 days) - Al Qassim | 2028-07-10 → 2028-07-03 (-7d) | 2028-08-20 → 2028-08-13 (-7d) |  | 276d → 274d |
| NQS-T3010 | Taking-over application, SAR review and handover - Al Qassim | 2028-08-21 → 2028-08-14 (-7d) | 2028-09-10 → 2028-09-12 (+2d) | 15d → 22d | 276d → 274d |
| EHF | **Hufuf (EWR)** | 2028-05-30 → 2028-05-23 (-7d) | 2028-08-16 → 2028-08-20 (+4d) |  |  |
| EHF-T1100 | MS6 SAT complete (10%) - Hufuf | 2028-06-14 → 2028-06-07 (-7d) | 2028-06-14 → 2028-06-07 (-7d) |  | 323d → 321d |
| EHF-T3100 | MS7 Station accepted - final acceptance and handover (10%) - Hufuf | 2028-08-16 → 2028-08-20 (+4d) | 2028-08-16 → 2028-08-20 (+4d) |  | 293d → 291d |
| TST | **Testing and commissioning** | 2028-05-30 → 2028-05-23 (-7d) | 2028-06-14 → 2028-06-07 (-7d) |  |  |
| EHF-T1010 | Pre-commissioning and loop checks - Hufuf | 2028-05-30 → 2028-05-23 (-7d) | 2028-06-05 → 2028-05-29 (-7d) |  | 293d → 291d |
| EHF-T1020 | Site acceptance test (SAT) and commissioning - Hufuf | 2028-06-06 → 2028-05-30 (-7d) | 2028-06-14 → 2028-06-07 (-7d) |  | 293d → 291d |
| TRN | **Training** | 2028-06-15 → 2028-06-08 (-7d) | 2028-06-28 → 2028-06-21 (-7d) |  |  |
| EHF-T2010 | Operator and maintenance training - Hufuf | 2028-06-15 → 2028-06-08 (-7d) | 2028-06-28 → 2028-06-21 (-7d) |  | 313d → 311d |
| TOA | **Trial operation and acceptance** | 2028-06-15 → 2028-06-08 (-7d) | 2028-08-16 → 2028-08-20 (+4d) |  |  |
| EHF-T2020 | Trial operation (maximum 45 days) - Hufuf | 2028-06-15 → 2028-06-08 (-7d) | 2028-07-26 → 2028-07-19 (-7d) |  | 293d → 291d |
| EHF-T3010 | Taking-over application, SAR review and handover - Hufuf | 2028-07-27 → 2028-07-20 (-7d) | 2028-08-16 → 2028-08-20 (+4d) | 15d → 22d | 293d → 291d |
| NMJ | **Al Majma'ah (NSR)** | 2028-08-09 → 2028-08-01 (-8d) | 2028-10-29 → 2028-10-30 (+1d) |  |  |
| NMJ-T1100 | MS6 SAT complete (10%) - Al Majma'ah | 2028-08-27 → 2028-08-17 (-10d) | 2028-08-27 → 2028-08-17 (-10d) |  | 271d → 270d |
| NMJ-T3100 | MS7 Station accepted - final acceptance and handover (10%) - Al Majma'ah | 2028-10-29 → 2028-10-30 (+1d) | 2028-10-29 → 2028-10-30 (+1d) |  | 241d → 240d |
| TST | **Testing and commissioning** | 2028-08-09 → 2028-08-01 (-8d) | 2028-08-27 → 2028-08-17 (-10d) |  |  |
| NMJ-T1010 | Pre-commissioning and loop checks - Al Majma'ah | 2028-08-09 → 2028-08-01 (-8d) | 2028-08-15 → 2028-08-07 (-8d) |  | 241d → 240d |
| NMJ-T1020 | Site acceptance test (SAT) and commissioning - Al Majma'ah | 2028-08-16 → 2028-08-08 (-8d) | 2028-08-27 → 2028-08-17 (-10d) |  | 241d → 240d |
| TRN | **Training** | 2028-08-28 → 2028-08-20 (-8d) | 2028-09-10 → 2028-08-31 (-10d) |  |  |
| NMJ-T2010 | Operator and maintenance training - Al Majma'ah | 2028-08-28 → 2028-08-20 (-8d) | 2028-09-10 → 2028-08-31 (-10d) |  | 261d → 260d |
| TOA | **Trial operation and acceptance** | 2028-08-28 → 2028-08-20 (-8d) | 2028-10-29 → 2028-10-30 (+1d) |  |  |
| NMJ-T2020 | Trial operation (maximum 45 days) - Al Majma'ah | 2028-08-28 → 2028-08-20 (-8d) | 2028-10-08 → 2028-09-28 (-10d) |  | 241d → 240d |
| NMJ-T3010 | Taking-over application, SAR review and handover - Al Majma'ah | 2028-10-09 → 2028-10-01 (-8d) | 2028-10-29 → 2028-10-30 (+1d) | 15d → 22d | 241d → 240d |
| HKA | **KAEC (HHR)** | 2029-01-18 → 2029-01-09 (-9d) |  |  |  |
| HKA-T1100 | MS6 SAT complete (10%) - KAEC | 2029-02-21 → 2029-02-05 (-16d) | 2029-02-21 → 2029-02-05 (-16d) |  |  |
| TST | **Testing and commissioning** | 2029-01-18 → 2029-01-09 (-9d) | 2029-02-21 → 2029-02-05 (-16d) |  |  |
| HKA-T1010 | Pre-commissioning and loop checks - KAEC | 2029-01-18 → 2029-01-09 (-9d) | 2029-01-29 → 2029-01-18 (-11d) |  |  |
| HKA-T1020 | Site acceptance test (SAT) and commissioning - KAEC | 2029-01-30 → 2029-01-21 (-9d) | 2029-02-21 → 2029-02-05 (-16d) |  |  |
| TRN | **Training** | 2029-02-25 → 2029-02-06 (-19d) | 2029-03-08 → 2029-02-27 (-9d) |  |  |
| HKA-T2010 | Operator and maintenance training - KAEC | 2029-02-25 → 2029-02-06 (-19d) | 2029-03-08 → 2029-02-27 (-9d) |  |  |
| TOA | **Trial operation and acceptance** | 2029-02-25 → 2029-02-06 (-19d) |  |  |  |
| HKA-T2020 | Trial operation (maximum 45 days) - KAEC | 2029-02-25 → 2029-02-06 (-19d) | 2029-04-05 → 2029-03-27 (-9d) |  |  |
| HKA-T3010 | Taking-over application, SAR review and handover - KAEC | 2029-04-08 → 2029-03-28 (-11d) |  | 15d → 22d |  |
| HMD | **Madinah (HHR)** | 2029-01-23 → 2029-01-14 (-9d) |  |  |  |
| HMD-T1100 | MS6 SAT complete (10%) - Madinah | 2029-02-28 → 2029-02-18 (-10d) | 2029-02-28 → 2029-02-18 (-10d) |  |  |
| TST | **Testing and commissioning** | 2029-01-23 → 2029-01-14 (-9d) | 2029-02-28 → 2029-02-18 (-10d) |  |  |
| HMD-T1010 | Pre-commissioning and loop checks - Madinah | 2029-01-23 → 2029-01-14 (-9d) | 2029-02-01 → 2029-01-23 (-9d) |  |  |
| HMD-T1020 | Site acceptance test (SAT) and commissioning - Madinah | 2029-02-04 → 2029-01-24 (-11d) | 2029-02-28 → 2029-02-18 (-10d) |  |  |
| TRN | **Training** | 2029-03-01 → 2029-02-19 (-10d) | 2029-03-14 → 2029-03-05 (-9d) |  |  |
| HMD-T2010 | Operator and maintenance training - Madinah | 2029-03-01 → 2029-02-19 (-10d) | 2029-03-14 → 2029-03-05 (-9d) |  |  |
| TOA | **Trial operation and acceptance** | 2029-03-01 → 2029-02-19 (-10d) |  |  |  |
| HMD-T2020 | Trial operation (maximum 45 days) - Madinah | 2029-03-01 → 2029-02-19 (-10d) | 2029-04-11 → 2029-04-02 (-9d) |  |  |
| HMD-T3010 | Taking-over application, SAR review and handover - Madinah | 2029-04-12 → 2029-04-03 (-9d) |  | 15d → 22d |  |
| EAB | **Abqaiq (EWR)** | 2028-12-06 → 2028-11-23 (-13d) | 2029-03-01 → 2029-02-27 (-2d) |  |  |
| EAB-T1100 | MS6 SAT complete (10%) - Abqaiq | 2028-12-20 → 2028-12-07 (-13d) | 2028-12-20 → 2028-12-07 (-13d) |  | 188d → 190d |
| EAB-T3100 | MS7 Station accepted - final acceptance and handover (10%) - Abqaiq | 2029-03-01 → 2029-02-27 (-2d) | 2029-03-01 → 2029-02-27 (-2d) |  | 158d → 160d |
| TST | **Testing and commissioning** | 2028-12-06 → 2028-11-23 (-13d) | 2028-12-20 → 2028-12-07 (-13d) |  |  |
| EAB-T1010 | Pre-commissioning and loop checks - Abqaiq | 2028-12-06 → 2028-11-23 (-13d) | 2028-12-11 → 2028-11-28 (-13d) |  | 158d → 160d |
| EAB-T1020 | Site acceptance test (SAT) and commissioning - Abqaiq | 2028-12-12 → 2028-11-29 (-13d) | 2028-12-20 → 2028-12-07 (-13d) |  | 158d → 160d |
| TRN | **Training** | 2028-12-21 → 2028-12-10 (-11d) | 2029-01-03 → 2028-12-21 (-13d) |  |  |
| EAB-T2010 | Operator and maintenance training - Abqaiq | 2028-12-21 → 2028-12-10 (-11d) | 2029-01-03 → 2028-12-21 (-13d) |  | 178d → 180d |
| TOA | **Trial operation and acceptance** | 2028-12-21 → 2028-12-10 (-11d) | 2029-03-01 → 2029-02-27 (-2d) |  |  |
| EAB-T2020 | Trial operation (maximum 45 days) - Abqaiq | 2028-12-21 → 2028-12-10 (-11d) | 2029-01-31 → 2029-01-18 (-13d) |  | 158d → 160d |
| EAB-T3010 | Taking-over application, SAR review and handover - Abqaiq | 2029-02-01 → 2029-01-21 (-11d) | 2029-03-01 → 2029-02-27 (-2d) | 15d → 22d | 158d → 160d |
| NHL | **Hail (NSR)** | 2029-02-07 → 2029-01-29 (-9d) |  |  |  |
| NHL-T1100 | MS6 SAT complete (10%) - Hail | 2029-03-05 → 2029-02-21 (-12d) | 2029-03-05 → 2029-02-21 (-12d) |  |  |
| TST | **Testing and commissioning** | 2029-02-07 → 2029-01-29 (-9d) | 2029-03-05 → 2029-02-21 (-12d) |  |  |
| NHL-T1010 | Pre-commissioning and loop checks - Hail | 2029-02-07 → 2029-01-29 (-9d) | 2029-02-20 → 2029-02-04 (-16d) |  |  |
| NHL-T1020 | Site acceptance test (SAT) and commissioning - Hail | 2029-02-21 → 2029-02-05 (-16d) | 2029-03-05 → 2029-02-21 (-12d) |  |  |
| TRN | **Training** | 2029-03-06 → 2029-02-25 (-9d) | 2029-03-19 → 2029-03-08 (-11d) |  |  |
| NHL-T2010 | Operator and maintenance training - Hail | 2029-03-06 → 2029-02-25 (-9d) | 2029-03-19 → 2029-03-08 (-11d) |  |  |
| TOA | **Trial operation and acceptance** | 2029-03-06 → 2029-02-25 (-9d) |  |  |  |
| NHL-T2020 | Trial operation (maximum 45 days) - Hail | 2029-03-06 → 2029-02-25 (-9d) | 2029-04-16 → 2029-04-05 (-11d) |  |  |

| ID | Task | Start | Finish | Duration | Total float |
| --- | --- | --- | --- | --- | --- |
| NHL-T3010 | Taking-over application, SAR review and handover - Hail | 2029-04-17 → 2029-04-08 (-9d) |  | 15d → 22d |  |
| NJF | **Al Jouf (NSR)** | 2029-05-10 → 2029-05-01 (-9d) |  |  |  |
| NJF-T1100 | MS6 SAT complete (10%) - Al Jouf | 2029-05-28 → 2029-05-17 (-11d) | 2029-05-28 → 2029-05-17 (-11d) |  |  |
| TST | **Testing and commissioning** | 2029-05-10 → 2029-05-01 (-9d) | 2029-05-28 → 2029-05-17 (-11d) |  |  |
| NJF-T1010 | Pre-commissioning and loop checks - Al Jouf | 2029-05-10 → 2029-05-01 (-9d) | 2029-05-16 → 2029-05-07 (-9d) |  |  |
| NJF-T1020 | Site acceptance test (SAT) and commissioning - Al Jouf | 2029-05-17 → 2029-05-08 (-9d) | 2029-05-28 → 2029-05-17 (-11d) |  |  |
| TRN | **Training** | 2029-05-29 → 2029-05-20 (-9d) | 2029-06-11 → 2029-05-31 (-11d) |  |  |
| NJF-T2010 | Operator and maintenance training - Al Jouf | 2029-05-29 → 2029-05-20 (-9d) | 2029-06-11 → 2029-05-31 (-11d) |  |  |
| TOA | **Trial operation and acceptance** | 2029-05-29 → 2029-05-20 (-9d) |  |  |  |
| NJF-T2020 | Trial operation (maximum 45 days) - Al Jouf | 2029-05-29 → 2029-05-20 (-9d) | 2029-07-09 → 2029-06-28 (-11d) |  |  |
| NJF-T3010 | Taking-over application, SAR review and handover - Al Jouf | 2029-07-10 → 2029-07-01 (-9d) |  | 15d → 22d |  |
| NQR | **Al Qurayyat (NSR)** | 2029-06-28 → 2029-06-14 (-14d) | 2029-09-17 → 2029-09-12 (-5d) |  |  |
| NQR-T1100 | MS6 SAT complete (10%) - Al Qurayyat | 2029-07-16 → 2029-07-02 (-14d) | 2029-07-16 → 2029-07-02 (-14d) |  | 51d → 54d |
| NQR-T3100 | MS7 Station accepted - final acceptance and handover (10%) - Al Qurayyat | 2029-09-17 → 2029-09-12 (-5d) | 2029-09-17 → 2029-09-12 (-5d) |  | 21d → 24d |
| TST | **Testing and commissioning** | 2029-06-28 → 2029-06-14 (-14d) | 2029-07-16 → 2029-07-02 (-14d) |  |  |
| NQR-T1010 | Pre-commissioning and loop checks - Al Qurayyat | 2029-06-28 → 2029-06-14 (-14d) | 2029-07-04 → 2029-06-20 (-14d) |  | 21d → 24d |
| NQR-T1020 | Site acceptance test (SAT) and commissioning - Al Qurayyat | 2029-07-05 → 2029-06-21 (-14d) | 2029-07-16 → 2029-07-02 (-14d) |  | 21d → 24d |
| TRN | **Training** | 2029-07-17 → 2029-07-03 (-14d) | 2029-07-30 → 2029-07-16 (-14d) |  |  |
| NQR-T2010 | Operator and maintenance training - Al Qurayyat | 2029-07-17 → 2029-07-03 (-14d) | 2029-07-30 → 2029-07-16 (-14d) |  | 41d → 44d |
| TOA | **Trial operation and acceptance** | 2029-07-17 → 2029-07-03 (-14d) | 2029-09-17 → 2029-09-12 (-5d) |  |  |
| NQR-T2020 | Trial operation (maximum 45 days) - Al Qurayyat | 2029-07-17 → 2029-07-03 (-14d) | 2029-08-27 → 2029-08-13 (-14d) |  | 21d → 24d |
| NQR-T3010 | Taking-over application, SAR review and handover - Al Qurayyat | 2029-08-28 → 2029-08-14 (-14d) | 2029-09-17 → 2029-09-12 (-5d) | 15d → 22d | 21d → 24d |
